# Proyecto TSL-2627 TuSuper en Línea

Schedule from MS Project, 2026-10-05 to 2027-02-12, 6 hours a day, costs in €.

## Calendars

- Estándar: Mon-Fri 09:00-15:00; Sat-Sun off. Exceptions (off unless hours are given): 2026-10-12 (Día de la Constitución Española), 2026-12-06 (Día de la Constitución Española), 2026-12-08 (Inmaculada Concepción), 2026-12-24 to 2027-01-01 (Cierre de la consultora (NOR-20)), 2027-01-06 (Epifanía del Señor).

## Resources

| Resource | Rate |
| --- | --- |
| Jefe de proyecto - 2026 | 60 |
| Arquitecto de software - 2026 | 55 |
| Técncio de sistemas - 2026 | 50 |
| Analista Funcional - 2026 | 45 |
| Diseñador UX - 2026 | 40 |
| Técnico de Calidad - 2026 | 37 |
| Desarrollador - 2026 | 35 |
| Desarrollador Junior - 2026 | 22 |
| Jefe de proyecto - 2027 | 61.8 |
| Arquitecto de software - 2027 | 56.65 |
| Técncio de sistemas - 2027 | 51.5 |
| Analista Funcional - 2027 | 46.34 |
| Diseñador UX - 2027 | 41.2 |
| Técnico de Calidad - 2027 | 38.11 |
| Desarrollador - 2027 | 36.05 |
| Desarrollador Junior - 2027 | 22.66 |

## Schedule

| ID | WBS | Task | Type | Duration | Start | Finish | Predecessors | Total slack | Free slack | Constraint | Resources | Work | Cost | Text3 |
| --- | --- | --- | --- | --- | --- | --- | --- | --- | --- | --- | --- | --- | --- | --- |
| 1 | 1 | **TSL-2627 TuSuper en Línea** |  | 84d? | 2026-10-05 | 2027-02-12 |  | 0d |  |  |  | 264h | 11,070 |  |
| 2 | 1.1 | **Dirección del Proyecto** |  | 84d? | 2026-10-05 | 2027-02-12 |  | 0d |  |  |  | 60h | 3,600 |  |
| 3 | 1.1.1 | **Planificación y gestión de la planificación** |  | 2d? | 2026-10-05 | 2026-10-06 |  | 24d |  |  |  |  |  |  |
| 4 | 1.1.1.1 | Comienzo del Proyecto | milestone | 0d | 2026-10-05 | 2026-10-05 |  | 24d | 0d |  |  |  |  |  |
| 5 | 1.1.1.2 | Elaboración del Plan de Dirección del Proyecto, Alcance, EDT y Cronograma |  | 1d? | 2026-10-05 | 2026-10-05 | 4 | 24d | 0d |  |  |  |  | APR; SOL |
| 6 | 1.1.1.3 | Tramitación y negociación de la aceptación del calendario y alcance por el cliente |  | 1d | 2026-10-06 | 2026-10-06 | 5 | 24d | 22d |  |  |  |  | ACE-LB |
| 7 | 1.1.2 | **Dirección y seguimiento del Sprint 1** |  | 10d | 2026-11-09 | 2026-11-20 |  | 2d |  |  |  | 60h | 3,600 |  |
| 8 | 1.1.2.1 | Inicio del Sprint 1 | milestone | 0d | 2026-11-09 | 2026-11-09 | 6 | 2d | 0d | start no earlier than 2026-11-09 |  |  |  |  |
| 9 | 1.1.2.2 | Dirección y seguimiento del Sprint 1 |  | 10d | 2026-11-09 | 2026-11-20 | 8, 6 | 2d | 0d |  | Jefe de proyecto - 2026 | 60h | 3,600 | SPR; ISV |
| 10 | 1.1.3 | **Dirección y seguimiento del Sprint 2** |  | 10d | 2026-11-23 | 2026-12-04 |  | 2d |  |  |  |  |  |  |
| 11 | 1.1.3.1 | Dirección y seguimiento del Sprint 2 |  | 10d | 2026-11-23 | 2026-12-04 | 9 | 2d | 0d |  |  |  |  | SPR; ISV |
| 12 | 1.1.4 | **Dirección y seguimiento del Sprint 3** |  | 9d | 2026-12-07 | 2026-12-18 |  | 2d |  |  |  |  |  |  |
| 13 | 1.1.4.1 | Dirección y seguimiento del Sprint 3 |  | 9d | 2026-12-07 | 2026-12-18 | 11 | 2d | 0d |  |  |  |  | SPR; ISV |
| 14 | 1.1.5 | **Dirección y seguimiento del Sprint 4** |  | 7d | 2026-12-21 | 2027-01-08 |  | 2d |  |  |  |  |  |  |
| 15 | 1.1.5.1 | Dirección y seguimiento del Sprint 4 |  | 7d | 2026-12-21 | 2027-01-08 | 13 | 2d | 0d |  |  |  |  | SPR; ISV |
| 16 | 1.1.6 | **Dirección y seguimiento del Sprint 5** |  | 10d | 2027-01-11 | 2027-01-22 |  | 2d |  |  |  |  |  |  |
| 17 | 1.1.6.1 | Dirección y seguimiento del Sprint 5 |  | 10d | 2027-01-11 | 2027-01-22 | 15 | 2d | 0d |  |  |  |  | SPR; ISV |
| 18 | 1.1.7 | **Dirección y seguimiento del Sprint 6** |  | 10d | 2027-01-25 | 2027-02-05 |  | 2d |  |  |  |  |  |  |
| 19 | 1.1.7.1 | Dirección y seguimiento del Sprint 6 |  | 10d | 2027-01-25 | 2027-02-05 | 17 | 2d | 0d |  |  |  |  | SPR; ISV |
| 20 | 1.1.8 | **Traspaso al servicio de mantenimiento completado** |  | 1d | 2027-02-08 | 2027-02-08 |  | 3d |  |  |  |  |  |  |
| 21 | 1.1.8.1 | Traspaso al servicio de mantenimiento completado |  | 1d | 2027-02-08 | 2027-02-08 | 19 | 3d |  |  |  |  |  |  |
| 22 | 1.1.9 | **Cierre del proyecto aprobado y completado** |  | 4d? | 2027-02-08 | 2027-02-12 |  | 0d |  |  |  |  |  |  |
| 23 | 1.1.9.1 | Elaboración del Informe de Cierre y Lecciones Aprendidas |  | 1d | 2027-02-08 | 2027-02-08 | 19, 21 | 2d | 0d |  |  |  |  | CPR |
| 24 | 1.1.9.2 | Cierre del proyecto aprobado y completado |  | 1d? | 2027-02-09 | 2027-02-09 | 23 | 2d |  |  |  |  |  | CPR |
| 25 | 1.1.9.3 | Cierre del proyecto | milestone | 0d | 2027-02-12 | 2027-02-12 | 24 | 0d |  | start no earlier than 2027-02-12 |  |  |  |  |

| ID | WBS | Task | Duration | Start | Finish | Predecessors | Total slack | Free slack | Resources | Work | Cost | Text1 |
| --- | --- | --- | --- | --- | --- | --- | --- | --- | --- | --- | --- | --- |
| 26 | 1.2 | **Plataforma de compra en línea · ENT-01** | 28d? | 2026-10-05 | 2026-11-12 |  | 56d |  |  | 204h | 7,470 |  |
| 27 | 1.2.1 | **Planificación** | 3d? | 2026-11-09 | 2026-11-11 |  | 56d |  |  | 24h | 1,080 |  |
| 28 | 1.2.1.1 | **Especificación funcional común y criterios de aceptación acordados (EP-01)** | 1d | 2026-11-09 | 2026-11-09 |  | 56d | 0d |  | 12h | 510 |  |
| 29 | 1.2.1.1.1 | Especificación funcional común y criterios de aceptación acordados (EP-01) | 1d | 2026-11-09 | 2026-11-09 | 8 | 57d | 0d | Analista Funcional - 2026; Diseñador UX - 2026 | 12h | 510 | EP-01 |
| 30 | 1.2.1.2 | **Sistema de diseño e interfaz común preparados (EP-02)** | 1d? | 2026-11-10 | 2026-11-10 |  | 56d | 0d |  | 12h | 570 |  |
| 31 | 1.2.1.2.1 | Sistema de diseño e interfaz común preparados (EP-02) | 1d? | 2026-11-10 | 2026-11-10 | 29 | 57d | 0d | Arquitecto de software - 2026; Diseñador UX - 2026 | 12h | 570 | EP-02 |
| 32 | 1.2.1.3 | **Arquitectura técnica de la plataforma diseñada (EP-03)** | 1d? | 2026-11-11 | 2026-11-11 |  | 56d | 0d |  |  |  |  |
| 33 | 1.2.1.3.1 | Arquitectura técnica de la plataforma diseñada (EP-03) | 1d? | 2026-11-11 | 2026-11-11 | 31 | 57d |  |  |  |  | EP-03 |
| 34 | 1.2.2 | **Sprint 1 · 09-20/11/2026** | 3d? | 2026-11-10 | 2026-11-12 |  | 56d |  |  | 30h | 1,320 |  |
| 35 | 1.2.2.1 | **RF-01 y RF-03 especificados y diseñados (E)** | 1d? | 2026-11-11 | 2026-11-11 |  | 56d | 0d |  | 12h | 510 |  |
| 36 | 1.2.2.1.1 | RF-01 y RF-03 especificados y diseñados | 1d? | 2026-11-11 | 2026-11-11 | 28, 30 | 57d |  | Analista Funcional - 2026; Diseñador UX - 2026 | 12h | 510 | RF-01;RF-03 |
| 37 | 1.2.2.2 | **RF-06 especificado y diseñado (E)** | 1d? | 2026-11-10 | 2026-11-10 |  | 58d |  |  | 12h | 510 |  |
| 38 | 1.2.2.2.1 | RF-06 especificado y diseñado | 1d? | 2026-11-10 | 2026-11-10 | 28 | 58d |  | Analista Funcional - 2026; Diseñador UX - 2026 | 12h | 510 | RF-06 |
| 39 | 1.2.2.3 | **Entornos de desarrollo y CI/CD operativos (EP-03)** | 1d? | 2026-11-12 | 2026-11-12 |  | 56d |  |  | 6h | 300 |  |
| 40 | 1.2.2.3.1 | Entornos de desarrollo y CI/CD operativos (EP-03) | 1d? | 2026-11-12 | 2026-11-12 | 32 | 56d |  | Técncio de sistemas - 2026 | 6h | 300 | EP-03 |
| 41 | 1.2.3 | **Sprint 2 · 23/11-04/12/2026** | 28d? | 2026-10-05 | 2026-11-12 |  | 56d |  |  | 36h | 1,362 |  |
| 42 | 1.2.3.1 | **RF-01 y RF-03 construidos e integrados (C)** | 1d? | 2026-11-12 | 2026-11-12 |  | 56d |  |  | 12h | 342 |  |
| 43 | 1.2.3.1.1 | RF-01 y RF-03 construidos e integrados | 1d? | 2026-11-12 | 2026-11-12 | 35 | 56d |  | Desarrollador - 2026; Desarrollador Junior - 2026 | 12h | 342 | RF-01;RF-03 |
| 44 | 1.2.3.2 | **RF-02 y RF-04 especificados y diseñados (E)** | 1d? | 2026-10-05 | 2026-10-05 |  | 83d |  |  | 12h | 510 |  |
| 45 | 1.2.3.2.1 | RF-02 y RF-04 especificados y diseñados | 1d? | 2026-10-05 | 2026-10-05 |  | 83d |  | Analista Funcional - 2026; Diseñador UX - 2026 | 12h | 510 | RF-02;RF-04 |
| 46 | 1.2.3.3 | **RF-06 construido e integrado (C)** | 1d? | 2026-10-05 | 2026-10-05 |  | 83d |  |  |  |  |  |
| 47 | 1.2.3.3.1 | RF-06 construido e integrado | 1d? | 2026-10-05 | 2026-10-05 |  | 83d |  |  |  |  |  |
| 48 | 1.2.3.4 | **RF-05 y RF-07 especificados y diseñados (E)** | 1d? | 2026-10-05 | 2026-10-05 |  | 83d |  |  | 12h | 510 |  |
| 49 | 1.2.3.4.1 | RF-05 y RF-07 especificados y diseñados | 1d? | 2026-10-05 | 2026-10-05 |  | 83d |  | Analista Funcional - 2026; Diseñador UX - 2026 | 12h | 510 | RF-05;RF-07 |

| ID | WBS | Task | Duration | Start | Finish | Total slack | Resources | Work | Cost | Text1 |
| --- | --- | --- | --- | --- | --- | --- | --- | --- | --- | --- |
| 50 | 1.2.4 | **Sprint 3 · 07-18/12/2026** | 1d? | 2026-10-05 | 2026-10-05 | 83d |  | 48h | 1,470 |  |
| 51 | 1.2.4.1 | **RF-01 verificado (V)** | 1d? | 2026-10-05 | 2026-10-05 | 83d |  | 6h | 222 |  |
| 52 | 1.2.4.1.1 | RF-01 verificado (V) | 1d? | 2026-10-05 | 2026-10-05 | 83d | Técnico de Calidad - 2026 | 6h | 222 | RF-01 |
| 53 | 1.2.4.2 | **RF-04 construido e integrado (C)** | 1d? | 2026-10-05 | 2026-10-05 | 83d |  | 12h | 342 |  |
| 54 | 1.2.4.2.1 | RF-04 construido e integrado | 1d? | 2026-10-05 | 2026-10-05 | 83d | Desarrollador - 2026; Desarrollador Junior - 2026 | 12h | 342 | RF-04 |
| 55 | 1.2.4.3 | **RF-05 construido e integrado (C)** | 1d? | 2026-10-05 | 2026-10-05 | 83d |  | 12h | 342 |  |
| 56 | 1.2.4.3.1 | RF-05 construido e integrado | 1d? | 2026-10-05 | 2026-10-05 | 83d | Desarrollador - 2026; Desarrollador Junior - 2026 | 12h | 342 | RF-05 |
| 57 | 1.2.4.4 | **RF-08 especificado y diseñado (E)** | 1d? | 2026-10-05 | 2026-10-05 | 83d |  | 12h | 342 |  |
| 58 | 1.2.4.4.1 | RF-08 especificado y diseñado | 1d? | 2026-10-05 | 2026-10-05 | 83d | Desarrollador - 2026; Desarrollador Junior - 2026 | 12h | 342 | RF-08 |
| 59 | 1.2.4.5 | **Plan y escenarios de pruebas de sistema preparados (EP-05)** | 1d? | 2026-10-05 | 2026-10-05 | 83d |  | 6h | 222 |  |
| 60 | 1.2.4.5.1 | Plan y escenarios de pruebas de sistema preparados (EP-05) | 1d? | 2026-10-05 | 2026-10-05 | 83d | Técnico de Calidad - 2026 | 6h | 222 | EP-05 |
| 61 | 1.2.5 | **Sprint 4 · 21/12/2026–08/01/2027** | 1d? | 2026-10-05 | 2026-10-05 | 83d |  | 24h | 786 |  |
| 62 | 1.2.5.1 | **RF-03 verificado (V)** | 1d? | 2026-10-05 | 2026-10-05 | 83d |  | 6h | 222 |  |
| 63 | 1.2.5.1.1 | RF-03 verificado (V) | 1d? | 2026-10-05 | 2026-10-05 | 83d | Técnico de Calidad - 2026 | 6h | 222 | RF-03 |
| 64 | 1.2.5.2 | **RF-02 construido e integrado (C)** | 1d? | 2026-10-05 | 2026-10-05 | 83d |  | 12h | 342 |  |
| 65 | 1.2.5.2.1 | RF-02 construido e integrado | 1d? | 2026-10-05 | 2026-10-05 | 83d | Desarrollador - 2026; Desarrollador Junior - 2026 | 12h | 342 | RF-02 |
| 66 | 1.2.5.3 | **RF-05 y RF-06 verificados (V)** | 1d? | 2026-10-05 | 2026-10-05 | 83d |  | 6h | 222 |  |
| 67 | 1.2.5.3.1 | RF-05 y RF-06 verificados | 1d? | 2026-10-05 | 2026-10-05 | 83d | Técnico de Calidad - 2026 | 6h | 222 | RF-05;RF-06 |
| 68 | 1.2.6 | **Sprint 5 · 11–22/01/2027** | 1d? | 2026-10-05 | 2026-10-05 | 83d |  | 30h | 1,008 |  |
| 69 | 1.2.6.1 | **RF-02 y RF-04 verificados (V)** | 1d? | 2026-10-05 | 2026-10-05 | 83d |  | 6h | 222 |  |
| 70 | 1.2.6.1.1 | RF-02 y RF-04 verificados | 1d? | 2026-10-05 | 2026-10-05 | 83d | Técnico de Calidad - 2026 | 6h | 222 | RF-02;RF-04 |
| 71 | 1.2.6.2 | **RF-07 y RF-08 construidos e integrados (C)** | 1d? | 2026-10-05 | 2026-10-05 | 83d |  | 12h | 342 |  |
| 72 | 1.2.6.2.1 | RF-07 y RF-08 construidos e integrados | 1d? | 2026-10-05 | 2026-10-05 | 83d | Desarrollador - 2026; Desarrollador Junior - 2026 | 12h | 342 | RF-07;RF-08 |
| 73 | 1.2.6.3 | **Pruebas de sistema, carga y seguridad ejecutadas (EP-05)** | 1d? | 2026-10-05 | 2026-10-05 | 83d |  | 6h | 222 |  |
| 74 | 1.2.6.3.1 | Pruebas de sistema, carga y seguridad ejecutadas (EP-05) | 1d? | 2026-10-05 | 2026-10-05 | 83d | Técnico de Calidad - 2026 | 6h | 222 | EP-05 |

| ID | WBS | Task | Duration | Start | Finish | Total slack | Resources | Work | Cost | Text1 |
| --- | --- | --- | --- | --- | --- | --- | --- | --- | --- | --- |
| 75 | 1.2.6.4 | **Seguimiento técnico del piloto: primer tramo completado (EP-05)** | 1d? | 2026-10-05 | 2026-10-05 | 83d |  | 6h | 222 |  |
| 76 | 1.2.6.4.1 | Seguimiento técnico del piloto: primer tramo completado (EP-05) | 1d? | 2026-10-05 | 2026-10-05 | 83d | Técnico de Calidad - 2026 | 6h | 222 | EP-05 |
| 77 | 1.2.7 | **Sprint 6 · 25/01–05/02/2027** | 1d? | 2026-10-05 | 2026-10-05 | 83d |  | 12h | 444 |  |
| 78 | 1.2.7.1 | **RF-07 y RF-08 verificados (V)** | 1d? | 2026-10-05 | 2026-10-05 | 83d |  | 6h | 222 |  |
| 79 | 1.2.7.1.1 | RF-07 y RF-08 verificados | 1d? | 2026-10-05 | 2026-10-05 | 83d | Técnico de Calidad - 2026 | 6h | 222 | RF-07;RF-08 |
| 80 | 1.2.7.2 | **Seguimiento técnico y evidencias finales del piloto completadas (EP-05)** | 1d? | 2026-10-05 | 2026-10-05 | 83d |  | 6h | 222 |  |
| 81 | 1.2.7.2.1 | Seguimiento técnico y evidencias finales del piloto completadas (EP-05) | 1d? | 2026-10-05 | 2026-10-05 | 83d | Técnico de Calidad - 2026 | 6h | 222 | EP-05 |
| 82 | 1.3 | **Integración con ERP · ENT-02** | 1d? | 2026-10-05 | 2026-10-05 | 83d |  |  |  |  |
| 83 | 1.3.1 | Sprint 1 · Especificación de interfaz ERP acordada (EP-04) | 1d? | 2026-10-05 | 2026-10-05 | 83d |  |  |  |  |
| 84 | 1.3.2 | Sprint 2 · Adaptación propia y ensayos con datos simulados (EP-04) | 1d? | 2026-10-05 | 2026-10-05 | 83d |  |  |  |  |
| 85 | 1.3.3 | Sprint 3 · Conector integrado, carga inicial y pruebas reales completadas (EP-04) | 1d? | 2026-10-05 | 2026-10-05 | 83d |  |  |  |  |
| 86 | 1.3.4 | Sprint 4 · Sincronización comprobada y carga productiva de 32 tiendas (EP-04) | 1d? | 2026-10-05 | 2026-10-05 | 83d |  |  |  |  |
| 87 | 1.4 | **Puesta en producción · ENT-03** | 1d? | 2026-10-05 | 2026-10-05 | 83d |  |  |  |  |
| 88 | 1.4.1 | Sprint 2 · Entorno de preproducción preparado (EP-06) | 1d? | 2026-10-05 | 2026-10-05 | 83d |  |  |  |  |
| 89 | 1.4.2 | Sprint 4 · Despliegue de la plataforma en tres tiendas piloto (EP-06) | 1d? | 2026-10-05 | 2026-10-05 | 83d |  |  |  |  |
| 90 | 1.4.3 | Sprint 5 · Piloto operativo y supervisado: primer tramo (EP-06) | 1d? | 2026-10-05 | 2026-10-05 | 83d |  |  |  |  |
| 91 | 1.4.4 | **Sprint 6 · 25/01–05/02/2027** | 1d? | 2026-10-05 | 2026-10-05 | 83d |  |  |  |  |
| 92 | 1.4.4.1 | Piloto operativo finalizado: segundo tramo (EP-06) | 1d? | 2026-10-05 | 2026-10-05 | 83d |  |  |  |  |
| 93 | 1.4.4.2 | Despliegue en producción y apertura de las 32 tiendas (EP-06) | 1d? | 2026-10-05 | 2026-10-05 | 83d |  |  |  |  |
| 94 | 1.5 | **Documentación y formación · ENT-04** | 1d? | 2026-10-05 | 2026-10-05 | 83d |  |  |  |  |
| 95 | 1.5.1 | Sprint 3 · Documentación técnica y funcional entregada a Formación (EP-07) | 1d? | 2026-10-05 | 2026-10-05 | 83d |  |  |  |  |
| 96 | 1.5.2 | Sprint 3 · Acceso a preproducción habilitado para Formación (EP-07) | 1d? | 2026-10-05 | 2026-10-05 | 83d |  |  |  |  |
| 97 | 1.6 | **Adquisiciones** | 1d? | 2026-10-05 | 2026-10-05 | 83d |  |  |  |  |
| 98 | 1.6.1 | Contrato del conector con ERP: pedido, seguimiento y aceptación | 1d? | 2026-10-05 | 2026-10-05 | 83d |  |  |  |  |
| 99 | 1.6.2 | Encargo de documentación de uso y formación: seguimiento y aceptación | 1d? | 2026-10-05 | 2026-10-05 | 83d |  |  |  |  |
