# Proyecto TSL-2627 TuSuper en Línea

Schedule from MS Project, 2026-10-05 to 2027-02-12, 6 hours a day, costs in €.

## Calendars

- Estándar: Mon-Fri 09:00-15:00; Sat-Sun off. Exceptions (off unless hours are given): 2026-10-12 (Día de la Constitución Española), 2026-12-06 (Día de la Constitución Española), 2026-12-08 (Inmaculada Concepción), 2026-12-24 to 2027-01-01 (Cierre de la consultora (NOR-20)), 2027-01-06 (Epifanía del Señor).

## Resources

| Resource | Rate |
| --- | --- |
| Jefe de proyecto - 2026 | 60 |
| Arquitecto de software - 2026 | 55 |
| Técncio de sistemas - 2026 | 50 |
| Analista Funcional - 2026 | 45 |
| Diseñador UX - 2026 | 40 |
| Técnico de Calidad - 2026 | 37 |
| Desarrollador - 2026 | 35 |
| Desarrollador Junior - 2026 | 22 |
| Jefe de proyecto - 2027 | 61.8 |
| Arquitecto de software - 2027 | 56.65 |
| Técncio de sistemas - 2027 | 51.5 |
| Analista Funcional - 2027 | 46.34 |
| Diseñador UX - 2027 | 41.2 |
| Técnico de Calidad - 2027 | 38.11 |
| Desarrollador - 2027 | 36.05 |
| Desarrollador Junior - 2027 | 22.66 |

## Schedule

| ID | WBS | Task | Type | Duration | Start | Finish | Predecessors | Total slack | Free slack | Constraint | Resources | Work | Cost | Text11 | Text3 |
| --- | --- | --- | --- | --- | --- | --- | --- | --- | --- | --- | --- | --- | --- | --- | --- |
| 1 | 1 | **TSL-2627 TuSuper en Línea** |  | 84d? | 2026-10-05 | 2027-02-12 |  | 0d |  |  |  | 294h | 12,540 |  |  |
| 2 | 1.1 | **Dirección del Proyecto** |  | 84d? | 2026-10-05 | 2027-02-12 |  | 0d |  |  |  | 60h | 3,600 | 1.1 |  |
| 3 | 1.1.1 | **Planificación y gestión de la planificación** |  | 2d? | 2026-10-05 | 2026-10-06 |  | 24d |  |  |  |  |  | 1.1.1 |  |
| 4 | 1.1.1.1 | Comienzo del Proyecto | milestone | 0d | 2026-10-05 | 2026-10-05 |  | 24d | 0d |  |  |  |  | 1.1.1.1 |  |
| 5 | 1.1.1.2 | Elaboración del Plan de Dirección del Proyecto, Alcance, EDT y Cronograma |  | 1d? | 2026-10-05 | 2026-10-05 | 4 | 24d | 0d |  |  |  |  | 1.1.1.2 | APR; SOL |
| 6 | 1.1.1.3 | Tramitación y negociación de la aceptación del calendario y alcance por el cliente |  | 1d | 2026-10-06 | 2026-10-06 | 5 | 24d | 22d |  |  |  |  | 1.1.1.3 | ACE-LB |
| 7 | 1.1.2 | **Dirección y seguimiento del Sprint 1** |  | 10d | 2026-11-09 | 2026-11-20 |  | 2d |  |  |  | 60h | 3,600 | 1.1.2 |  |
| 8 | 1.1.2.1 | Inicio del Sprint 1 | milestone | 0d | 2026-11-09 | 2026-11-09 | 6 | 2d | 0d | start no earlier than 2026-11-09 |  |  |  | 1.1.2.2 |  |
| 9 | 1.1.2.2 | Dirección y seguimiento del Sprint 1 |  | 10d | 2026-11-09 | 2026-11-20 | 8 | 2d | 0d |  | Jefe de proyecto - 2026 | 60h | 3,600 | 1.1.2.1 | SPR; ISV |
| 10 | 1.1.3 | **Dirección y seguimiento del Sprint 2** |  | 10d | 2026-11-23 | 2026-12-04 |  | 2d |  |  |  |  |  | 1.1.3 |  |
| 11 | 1.1.3.1 | Inicio Sprint 2 | milestone | 0d | 2026-11-23 | 2026-11-23 | 9 | 2d | 0d | start no earlier than 2026-11-23 |  |  |  | 1.1.3.2 |  |
| 12 | 1.1.3.2 | Dirección y seguimiento del Sprint 2 |  | 10d | 2026-11-23 | 2026-12-04 | 11 | 2d | 0d |  |  |  |  | 1.1.3.1 | SPR; ISV |
| 13 | 1.1.4 | **Dirección y seguimiento del Sprint 3** |  | 9d | 2026-12-07 | 2026-12-18 |  | 2d |  |  |  |  |  | 1.1.4 |  |
| 14 | 1.1.4.1 | Inicio Sprint 3 | milestone | 0d | 2026-12-07 | 2026-12-07 | 12 | 2d | 0d | start no earlier than 2026-12-07 |  |  |  | 1.1.4.2 |  |
| 15 | 1.1.4.2 | Dirección y seguimiento del Sprint 3 |  | 9d | 2026-12-07 | 2026-12-18 | 14 | 2d | 0d |  |  |  |  | 1.1.4.1 | SPR; ISV |
| 16 | 1.1.5 | **Dirección y seguimiento del Sprint 4** |  | 7d | 2026-12-21 | 2027-01-08 |  | 2d |  |  |  |  |  | 1.1.5 |  |
| 17 | 1.1.5.1 | Inicio Sprint 4 | milestone | 0d | 2026-12-21 | 2026-12-21 | 15 | 2d | 0d | start no earlier than 2026-12-21 |  |  |  | 1.1.5.2 |  |
| 18 | 1.1.5.2 | Dirección y seguimiento del Sprint 4 |  | 7d | 2026-12-21 | 2027-01-08 | 17 | 2d | 0d |  |  |  |  | 1.1.5.1 | SPR; ISV |
| 19 | 1.1.6 | **Dirección y seguimiento del Sprint 5** |  | 10d | 2027-01-11 | 2027-01-22 |  | 2d |  |  |  |  |  | 1.1.6 |  |
| 20 | 1.1.6.1 | Inicio Sprint 5 | milestone | 0d | 2027-01-11 | 2027-01-11 | 18 | 2d | 0d | start no earlier than 2027-01-11 |  |  |  | 1.1.6.2 |  |
| 21 | 1.1.6.2 | Dirección y seguimiento del Sprint 5 |  | 10d | 2027-01-11 | 2027-01-22 | 20 | 2d | 0d |  |  |  |  | 1.1.6.1 | SPR; ISV |
| 22 | 1.1.7 | **Dirección y seguimiento del Sprint 6** |  | 10d | 2027-01-25 | 2027-02-05 |  | 2d |  |  |  |  |  | 1.1.7 |  |
| 23 | 1.1.7.1 | Inicio Sprint 6 | milestone | 0d | 2027-01-25 | 2027-01-25 | 21 | 2d | 0d | start no earlier than 2027-01-25 |  |  |  | 1.1.7.2 |  |
| 24 | 1.1.7.2 | Dirección y seguimiento del Sprint 6 |  | 10d | 2027-01-25 | 2027-02-05 | 23 | 2d | 0d |  |  |  |  | 1.1.7.1 | SPR; ISV |

Notes:
- 1: Text10: TSL-2627 TuSuper en Línea
- 2: Text10: Dirección del Proyecto
- 3: Text10: Planificación y gestión de la planificación
- 4: Text10: Comienzo del Proyecto
- 5: Text10: Elaboración del Plan de Dirección del Proyecto, Alcance, EDT y Cronograma
- 6: Text10: Tramitación y negociación de la aceptación del calendario y alcance por el cliente
- 7: Text10: Dirección y seguimiento del Sprint 1
- 8: Text10: Inicio del Sprint 1
- 9: Text10: Dirección y seguimiento del Sprint 1
- 10: Text10: Dirección y seguimiento del Sprint 2
- 11: Text10: Inicio Sprint 2
- 12: Text10: Dirección y seguimiento del Sprint 2
- 13: Text10: Dirección y seguimiento del Sprint 3
- 14: Text10: Inicio Sprint 3
- 15: Text10: Dirección y seguimiento del Sprint 3
- 16: Text10: Dirección y seguimiento del Sprint 4
- 17: Text10: Inicio Sprint 4
- 18: Text10: Dirección y seguimiento del Sprint 4
- 19: Text10: Dirección y seguimiento del Sprint 5
- 20: Text10: Inicio Sprint 5
- 21: Text10: Dirección y seguimiento del Sprint 5
- 22: Text10: Dirección y seguimiento del Sprint 6
- 23: Text10: Inicio Sprint 6
- 24: Text10: Dirección y seguimiento del Sprint 6

| ID | WBS | Task | Type | Duration | Start | Finish | Predecessors | Total slack | Free slack | Constraint | Resources | Work | Cost | Text11 | Text3 | Text1 |
| --- | --- | --- | --- | --- | --- | --- | --- | --- | --- | --- | --- | --- | --- | --- | --- | --- |
| 25 | 1.1.8 | **Traspaso al servicio de mantenimiento completado** |  | 1d | 2027-02-08 | 2027-02-08 |  | 3d |  |  |  |  |  | 1.1.8 |  |  |
| 26 | 1.1.8.1 | Traspaso al servicio de mantenimiento completado |  | 1d | 2027-02-08 | 2027-02-08 | 24 | 3d |  |  |  |  |  | 1.1.8.1 |  |  |
| 27 | 1.1.9 | **Cierre del proyecto aprobado y completado** |  | 4d? | 2027-02-08 | 2027-02-12 |  | 0d |  |  |  |  |  | 1.1.9 |  |  |
| 28 | 1.1.9.1 | Elaboración del Informe de Cierre y Lecciones Aprendidas |  | 1d | 2027-02-08 | 2027-02-08 | 24 | 2d | 0d |  |  |  |  | 1.1.9.1 | CPR |  |
| 29 | 1.1.9.2 | Cierre del proyecto aprobado y completado |  | 1d? | 2027-02-09 | 2027-02-09 | 28 | 2d |  |  |  |  |  | 1.1.9.2 | CPR |  |
| 30 | 1.1.9.3 | Cierre del proyecto | milestone | 0d | 2027-02-12 | 2027-02-12 | 29 | 0d |  | start no earlier than 2027-02-12 |  |  |  | 1.1.9.3 |  |  |
| 31 | 1.2 | **Adquisiciones** |  | 1d? | 2026-10-05 | 2026-10-05 |  | 83d |  |  |  |  |  | 1.6 |  |  |
| 32 | 1.2.1 | **Contrato del conector con ERP: pedido, seguimiento y aceptación** |  | 1d? | 2026-10-05 | 2026-10-05 |  | 83d |  |  |  |  |  | 1.6.1 |  |  |
| 33 | 1.2.1.1 | Pedido del conector ERP tramitado |  | 1d? | 2026-10-05 | 2026-10-05 |  | 83d |  |  |  |  |  | 1.6.1.1 | PED |  |
| 34 | 1.2.1.2 | Seguimiento del proveedor del conector |  | 1d? | 2026-10-05 | 2026-10-05 |  | 83d |  |  |  |  |  | 1.6.1.2 | SEG |  |
| 35 | 1.2.1.3 | Conector recibido y aceptado formalmente |  | 1d? | 2026-10-05 | 2026-10-05 |  | 83d |  |  |  |  |  | 1.6.1.3 | ACO |  |
| 36 | 1.2.1.4 | Pago del control del conector HITO (TDB) |  | 1d? | 2026-10-05 | 2026-10-05 |  | 83d |  |  |  |  |  | 1.6.1.4 | CON |  |
| 37 | 1.2.2 | **Encargo de documentación de uso y formación: seguimiento y aceptación** |  | 1d? | 2026-10-05 | 2026-10-05 |  | 83d |  |  |  |  |  | 1.6.2 |  |  |
| 38 | 1.2.2.1 | Encargo de documentación y formación realizado |  | 1d? | 2026-10-05 | 2026-10-05 |  | 83d |  |  |  |  |  | 1.6.2.1 | EFO |  |
| 39 | 1.2.2.2 | Documentación entregada y acceso a preproducción habilitado para Formación |  | 1d? | 2026-10-05 | 2026-10-05 |  | 83d |  |  |  |  |  | 1.6.2.2 | DFO |  |
| 40 | 1.3 | **Integración con ERP · ENT-02** |  | 30d? | 2026-11-09 | 2026-12-21 |  | 30d |  |  |  | 30h | 1,470 | 1.3 |  |  |
| 41 | 1.3.1 | **Sprint 1 · Especificación de interfaz ERP acordada (EP-04)** |  | 1d? | 2026-11-09 | 2026-11-09 |  | 59d |  |  |  | 12h | 570 | 1.3.1 |  |  |
| 42 | 1.3.1.1 | Sprint 1 · Especificación de interfaz ERP acordada (EP-04) |  | 1d? | 2026-11-09 | 2026-11-09 | 8 | 59d |  |  | Arquitecto de software - 2026; Diseñador UX - 2026 | 12h | 570 | 1.3.1.1 |  | EP-04 |
| 43 | 1.3.2 | **Sprint 2 · Adaptación propia y ensayos con datos simulados (EP-04)** |  | 1d? | 2026-11-23 | 2026-11-23 |  | 49d |  |  |  | 6h | 300 | 1.3.2 |  |  |
| 44 | 1.3.2.1 | Sprint 2 · Adaptación propia y ensayos con datos simulados (EP-04) |  | 1d? | 2026-11-23 | 2026-11-23 | 11 | 49d |  |  | Técncio de sistemas - 2026 | 6h | 300 | 1.3.2.1 |  | EP-04 |
| 45 | 1.3.3 | **Sprint 3 · Conector integrado, carga inicial y pruebas reales completadas (EP-04)** |  | 1d? | 2026-12-07 | 2026-12-07 |  | 39d |  |  |  | 6h | 300 | 1.3.3 |  |  |
| 46 | 1.3.3.1 | Sprint 3 · Conector integrado, carga inicial y pruebas reales completadas (EP-04) |  | 1d? | 2026-12-07 | 2026-12-07 | 14 | 39d |  |  | Técncio de sistemas - 2026 | 6h | 300 | 1.3.3.1 |  | EP-04 |
| 47 | 1.3.4 | **Sprint 4 · Sincronización comprobada y carga productiva de 32 tiendas (EP-04)** |  | 1d? | 2026-12-21 | 2026-12-21 |  | 30d |  |  |  | 6h | 300 | 1.3.4 |  |  |
| 48 | 1.3.4.1 | Sprint 4 · Sincronización comprobada y carga productiva de 32 tiendas (EP-04) |  | 1d? | 2026-12-21 | 2026-12-21 | 17 | 30d |  |  | Técncio de sistemas - 2026 | 6h | 300 | 1.3.4.1 |  | EP-04 |

Notes:
- 25: Text10: Traspaso al servicio de mantenimiento completado
- 26: Text10: Traspaso al servicio de mantenimiento completado
- 27: Text10: Cierre del proyecto aprobado y completado
- 28: Text10: Elaboración del Informe de Cierre y Lecciones Aprendidas
- 29: Text10: Cierre del proyecto aprobado y completado
- 30: Text10: Cierre del proyecto
- 31: Text10: Adquisiciones
- 32: Text10: Contrato del conector con ERP: pedido, seguimiento y aceptación
- 33: Text10: Pedido del conector ERP tramitado
- 34: Text10: Seguimiento del proveedor del conector
- 35: Text10: Conector recibido y aceptado formalmente
- 36: Text10: Pago del control del conector HITO (TDB)
- 37: Text10: Encargo de documentación de uso y formación: seguimiento y aceptación
- 38: Text10: Encargo de documentación y formación realizado
- 39: Text10: Documentación entregada y acceso a preproducción habilitado para Formación
- 40: Text10: Integración con ERP · ENT-02
- 41: Text10: Sprint 1 · Especificación de interfaz ERP acordada (EP-04)
- 42: Text10: Sprint 1 · Especificación de interfaz ERP acordada (EP-04)
- 43: Text10: Sprint 2 · Adaptación propia y ensayos con datos simulados (EP-04)
- 44: Text10: Sprint 2 · Adaptación propia y ensayos con datos simulados (EP-04)
- 45: Text10: Sprint 3 · Conector integrado, carga inicial y pruebas reales completadas (EP-04)
- 46: Text10: Sprint 3 · Conector integrado, carga inicial y pruebas reales completadas (EP-04)
- 47: Text10: Sprint 4 · Sincronización comprobada y carga productiva de 32 tiendas (EP-04)
- 48: Text10: Sprint 4 · Sincronización comprobada y carga productiva de 32 tiendas (EP-04)

| ID | WBS | Task | Duration | Start | Finish | Predecessors | Total slack | Free slack | Resources | Work | Cost | Text11 | Text1 |
| --- | --- | --- | --- | --- | --- | --- | --- | --- | --- | --- | --- | --- | --- |
| 49 | 1.4 | **Puesta en producción · ENT-03** | 38d? | 2026-11-23 | 2027-01-26 |  | 12d |  |  |  |  | 1.4 |  |
| 50 | 1.4.1 | **Sprint 2 · Entorno de preproducción preparado (EP-06)** | 1d? | 2026-11-23 | 2026-11-23 |  | 49d |  |  |  |  | 1.4.1 |  |
| 51 | 1.4.1.1 | Sprint 2 · Entorno de preproducción preparado (EP-06) | 1d? | 2026-11-23 | 2026-11-23 | 11 | 49d |  |  |  |  | 1.4.1.1 | EP-06 |
| 52 | 1.4.2 | **Sprint 4 · Despliegue de la plataforma en tres tiendas piloto (EP-06)** | 1d? | 2026-12-07 | 2026-12-07 |  | 39d |  |  |  |  | 1.4.2 |  |
| 53 | 1.4.2.1 | Sprint 4 · Despliegue de la plataforma en tres tiendas piloto (EP-06) | 1d? | 2026-12-07 | 2026-12-07 | 14 | 39d |  |  |  |  | 1.4.2.1 | EP-06 |
| 54 | 1.4.3 | **Sprint 5 · Piloto operativo y supervisado: primer tramo (EP-06)** | 1d? | 2027-01-11 | 2027-01-11 |  | 23d |  |  |  |  | 1.4.3 |  |
| 55 | 1.4.3.1 | Sprint 5 · Piloto operativo y supervisado: primer tramo (EP-06) | 1d? | 2027-01-11 | 2027-01-11 | 20 | 23d |  |  |  |  | 1.4.3.1 | EP-06 |
| 56 | 1.4.4 | **Sprint 6 · 25/01–05/02/2027** | 2d? | 2027-01-25 | 2027-01-26 |  | 12d |  |  |  |  | 1.4.4 |  |
| 57 | 1.4.4.1 | **Piloto operativo finalizado: segundo tramo (EP-06)** | 1d? | 2027-01-25 | 2027-01-25 |  | 12d |  |  |  |  | 1.4.4.1 |  |
| 58 | 1.4.4.1.1 | Piloto operativo finalizado: segundo tramo (EP-06) | 1d? | 2027-01-25 | 2027-01-25 | 23 | 12d | 0d |  |  |  | 1.4.4.1.1 | EP-06 |
| 59 | 1.4.4.2 | **Despliegue en producción y apertura de las 32 tiendas (EP-06)** | 1d? | 2027-01-26 | 2027-01-26 |  | 12d |  |  |  |  | 1.4.4.2 |  |
| 60 | 1.4.4.2.1 | Despliegue en producción y apertura de las 32 tiendas (EP-06) | 1d? | 2027-01-26 | 2027-01-26 | 58 | 12d |  |  |  |  | 1.4.4.2.1 | EP-06 |
| 61 | 1.5 | **Documentación y formación · ENT-04** | 2d? | 2026-12-07 | 2026-12-09 |  | 38d |  |  |  |  | 1.5 |  |
| 62 | 1.5.1 | **Sprint 3 · Documentación técnica y funcional entregada a Formación (EP-07)** | 1d? | 2026-12-07 | 2026-12-07 |  | 38d |  |  |  |  | 1.5.1 |  |
| 63 | 1.5.1.1 | Sprint 3 · Documentación técnica y funcional entregada a Formación (EP-07) | 1d? | 2026-12-07 | 2026-12-07 | 14 | 38d | 0d |  |  |  | 1.5.1.1 | EP-07 |
| 64 | 1.5.2 | **Sprint 3 · Acceso a preproducción habilitado para Formación (EP-07)** | 1d? | 2026-12-09 | 2026-12-09 |  | 38d |  |  |  |  | 1.5.2 |  |
| 65 | 1.5.2.1 | Sprint 3 · Acceso a preproducción habilitado para Formación (EP-07) | 1d? | 2026-12-09 | 2026-12-09 | 63 | 38d |  |  |  |  | 1.5.2.1 | EP-07 |
| 66 | 1.6 | **Plataforma de compra en línea · ENT-01** | 71d? | 2026-10-05 | 2027-01-25 |  | 13d |  |  | 204h | 7,470 | 1.2 |  |
| 67 | 1.6.1 | **Planificación** | 3d? | 2026-11-09 | 2026-11-11 |  | 56d |  |  | 24h | 1,080 | 1.2.1 |  |
| 68 | 1.6.1.1 | **Especificación funcional común y criterios de aceptación acordados (EP-01)** | 1d | 2026-11-09 | 2026-11-09 |  | 56d | 0d |  | 12h | 510 | 1.2.1.1 |  |
| 69 | 1.6.1.1.1 | Especificación funcional común y criterios de aceptación acordados (EP-01) | 1d | 2026-11-09 | 2026-11-09 | 8 | 56d | 0d | Analista Funcional - 2026; Diseñador UX - 2026 | 12h | 510 | 1.2.1.1.1 | EP-01 |
| 70 | 1.6.1.2 | **Sistema de diseño e interfaz común preparados (EP-02)** | 1d? | 2026-11-10 | 2026-11-10 |  | 56d |  |  | 12h | 570 | 1.2.1.2 |  |
| 71 | 1.6.1.2.1 | Sistema de diseño e interfaz común preparados (EP-02) | 1d? | 2026-11-10 | 2026-11-10 | 69 | 56d | 0d | Arquitecto de software - 2026; Diseñador UX - 2026 | 12h | 570 | 1.2.1.2.1 | EP-02 |
| 72 | 1.6.1.3 | **Arquitectura técnica de la plataforma diseñada (EP-03)** | 1d? | 2026-11-11 | 2026-11-11 |  | 56d | 0d |  |  |  | 1.2.1.3 |  |
| 73 | 1.6.1.3.1 | Arquitectura técnica de la plataforma diseñada (EP-03) | 1d? | 2026-11-11 | 2026-11-11 | 71 | 56d |  |  |  |  | 1.2.1.3.1 | EP-03 |

Notes:
- 49: Text10: Puesta en producción · ENT-03
- 50: Text10: Sprint 2 · Entorno de preproducción preparado (EP-06)
- 51: Text10: Sprint 2 · Entorno de preproducción preparado (EP-06)
- 52: Text10: Sprint 4 · Despliegue de la plataforma en tres tiendas piloto (EP-06)
- 53: Text10: Sprint 4 · Despliegue de la plataforma en tres tiendas piloto (EP-06)
- 54: Text10: Sprint 5 · Piloto operativo y supervisado: primer tramo (EP-06)
- 55: Text10: Sprint 5 · Piloto operativo y supervisado: primer tramo (EP-06)
- 56: Text10: Sprint 6 · 25/01–05/02/2027
- 57: Text10: Piloto operativo finalizado: segundo tramo (EP-06)
- 58: Text10: Piloto operativo finalizado: segundo tramo (EP-06)
- 59: Text10: Despliegue en producción y apertura de las 32 tiendas (EP-06)
- 60: Text10: Despliegue en producción y apertura de las 32 tiendas (EP-06)
- 61: Text10: Documentación y formación · ENT-04
- 62: Text10: Sprint 3 · Documentación técnica y funcional entregada a Formación (EP-07)
- 63: Text10: Sprint 3 · Documentación técnica y funcional entregada a Formación (EP-07)
- 64: Text10: Sprint 3 · Acceso a preproducción habilitado para Formación (EP-07)
- 65: Text10: Sprint 3 · Acceso a preproducción habilitado para Formación (EP-07)
- 66: Text10: Plataforma de compra en línea · ENT-01
- 67: Text10: Planificación
- 68: Text10: Especificación funcional común y criterios de aceptación acordados (EP-01)
- 69: Text10: Especificación funcional común y criterios de aceptación acordados (EP-01)
- 70: Text10: Sistema de diseño e interfaz común preparados (EP-02)
- 71: Text10: Sistema de diseño e interfaz común preparados (EP-02)
- 72: Text10: Arquitectura técnica de la plataforma diseñada (EP-03)
- 73: Text10: Arquitectura técnica de la plataforma diseñada (EP-03)

| ID | WBS | Task | Duration | Start | Finish | Predecessors | Total slack | Free slack | Resources | Work | Cost | Text10 | Text11 | Text1 |
| --- | --- | --- | --- | --- | --- | --- | --- | --- | --- | --- | --- | --- | --- | --- |
| 74 | 1.6.2 | **Sprint 1 · 09-20/11/2026** | 3d? | 2026-11-10 | 2026-11-12 |  | 56d |  |  | 30h | 1,320 | Sprint 1 · 09-20/11/2026 | 1.2.2 |  |
| 75 | 1.6.2.1 | **RF-01 y RF-03 especificados y diseñados (E)** | 1d? | 2026-11-10 | 2026-11-10 |  | 57d |  |  | 12h | 510 | RF-01 y RF-03 especificados y diseñados (E) | 1.2.2.1 |  |
| 76 | 1.6.2.1.1 | RF-01 y RF-03 especificados y diseñados | 1d? | 2026-11-10 | 2026-11-10 | 69, 8 | 57d | 8d | Analista Funcional - 2026; Diseñador UX - 2026 | 12h | 510 | RF-01 y RF-03 especificados y diseñados | 1.2.2.1.1 | RF-01;RF-03 |
| 77 | 1.6.2.2 | **RF-06 especificado y diseñado (E)** | 1d? | 2026-11-10 | 2026-11-10 |  | 56d |  |  | 12h | 510 | RF-06 especificado y diseñado (E) | 1.2.2.2 |  |
| 78 | 1.6.2.2.1 | RF-06 especificado y diseñado | 1d? | 2026-11-10 | 2026-11-10 | 68 | 56d | 0d | Analista Funcional - 2026; Diseñador UX - 2026 | 12h | 510 | RF-06 especificado y diseñado | 1.2.2.2.1 | RF-06 |
| 79 | 1.6.2.3 | **Entornos de desarrollo y CI/CD operativos (EP-03)** | 1d? | 2026-11-12 | 2026-11-12 |  | 56d |  |  | 6h | 300 | Entornos de desarrollo y CI/CD operativos (EP-03) | 1.2.2.3 |  |
| 80 | 1.6.2.3.1 | Entornos de desarrollo y CI/CD operativos (EP-03) | 1d? | 2026-11-12 | 2026-11-12 | 72 | 56d |  | Técncio de sistemas - 2026 | 6h | 300 | Entornos de desarrollo y CI/CD operativos (EP-03) | 1.2.2.3.1 | EP-03 |
| 81 | 1.6.3 | **Sprint 2 · 23/11-04/12/2026** | 35d? | 2026-10-05 | 2026-11-23 |  | 49d |  |  | 36h | 1,362 | Sprint 2 · 23/11-04/12/2026 | 1.2.3 |  |
| 82 | 1.6.3.1 | **RF-01 y RF-03 construidos e integrados (C)** | 1d? | 2026-11-23 | 2026-11-23 |  | 49d |  |  | 12h | 342 | RF-01 y RF-03 construidos e integrados (C) | 1.2.3.1 |  |
| 83 | 1.6.3.1.1 | RF-01 y RF-03 construidos e integrados | 1d? | 2026-11-23 | 2026-11-23 | 76, 11 | 49d |  | Desarrollador - 2026; Desarrollador Junior - 2026 | 12h | 342 | RF-01 y RF-03 construidos e integrados | 1.2.3.1.1 | RF-01;RF-03 |
| 84 | 1.6.3.2 | **RF-02 y RF-04 especificados y diseñados (E)** | 1d? | 2026-10-05 | 2026-10-05 |  | 81d |  |  | 12h | 510 | RF-02 y RF-04 especificados y diseñados (E) | 1.2.3.2 |  |
| 85 | 1.6.3.2.1 | RF-02 y RF-04 especificados y diseñados | 1d? | 2026-10-05 | 2026-10-05 |  | 82d | 0d | Analista Funcional - 2026; Diseñador UX - 2026 | 12h | 510 | RF-02 y RF-04 especificados y diseñados | 1.2.3.2.1 | RF-02;RF-04 |
| 86 | 1.6.3.3 | **RF-06 construido e integrado (C)** | 1d? | 2026-11-11 | 2026-11-11 |  | 56d |  |  |  |  | RF-06 construido e integrado (C) | 1.2.3.3 |  |
| 87 | 1.6.3.3.1 | RF-06 construido e integrado | 1d? | 2026-11-11 | 2026-11-11 | 78 | 56d | 0d |  |  |  | RF-06 construido e integrado | 1.2.3.3.1 |  |
| 88 | 1.6.3.4 | **RF-05 y RF-07 especificados y diseñados (E)** | 1d? | 2026-10-05 | 2026-10-05 |  | 81d |  |  | 12h | 510 | RF-05 y RF-07 especificados y diseñados (E) | 1.2.3.4 |  |
| 89 | 1.6.3.4.1 | RF-05 y RF-07 especificados y diseñados | 1d? | 2026-10-05 | 2026-10-05 |  | 81d | 0d | Analista Funcional - 2026; Diseñador UX - 2026 | 12h | 510 | RF-05 y RF-07 especificados y diseñados | 1.2.3.4.1 | RF-05;RF-07 |
| 90 | 1.6.4 | **Sprint 3 · 07-18/12/2026** | 45d? | 2026-10-05 | 2026-12-07 |  | 39d |  |  | 48h | 1,470 | Sprint 3 · 07-18/12/2026 | 1.2.4 |  |
| 91 | 1.6.4.1 | **RF-01 verificado (V)** | 1d? | 2026-12-07 | 2026-12-07 |  | 39d |  |  | 6h | 222 | RF-01 verificado (V) | 1.2.4.1 |  |
| 92 | 1.6.4.1.1 | RF-01 verificado (V) | 1d? | 2026-12-07 | 2026-12-07 | 14, 76 | 39d |  | Técnico de Calidad - 2026 | 6h | 222 | RF-01 verificado (V) | 1.2.4.1.1 | RF-01 |
| 93 | 1.6.4.2 | **RF-04 construido e integrado (C)** | 1d? | 2026-10-06 | 2026-10-06 |  | 82d |  |  | 12h | 342 | RF-04 construido e integrado (C) | 1.2.4.2 |  |
| 94 | 1.6.4.2.1 | RF-04 construido e integrado | 1d? | 2026-10-06 | 2026-10-06 | 85 | 82d |  | Desarrollador - 2026; Desarrollador Junior - 2026 | 12h | 342 | RF-04 construido e integrado | 1.2.4.2.1 | RF-04 |
| 95 | 1.6.4.3 | **RF-05 construido e integrado (C)** | 1d? | 2026-10-06 | 2026-10-06 |  | 81d |  |  | 12h | 342 | RF-05 construido e integrado (C) | 1.2.4.3 |  |
| 96 | 1.6.4.3.1 | RF-05 construido e integrado | 1d? | 2026-10-06 | 2026-10-06 | 89 | 81d | 25d | Desarrollador - 2026; Desarrollador Junior - 2026 | 12h | 342 | RF-05 construido e integrado | 1.2.4.3.1 | RF-05 |
| 97 | 1.6.4.4 | **RF-08 especificado y diseñado (E)** | 1d? | 2026-10-05 | 2026-10-05 |  | 82d |  |  | 12h | 342 | RF-08 especificado y diseñado (E) | 1.2.4.4 |  |
| 98 | 1.6.4.4.1 | RF-08 especificado y diseñado | 1d? | 2026-10-05 | 2026-10-05 |  | 82d | 0d | Desarrollador - 2026; Desarrollador Junior - 2026 | 12h | 342 | RF-08 especificado y diseñado | 1.2.4.4.1 | RF-08 |

| ID | WBS | Task | Duration | Start | Finish | Predecessors | Total slack | Free slack | Resources | Work | Cost | Text11 | Text1 |
| --- | --- | --- | --- | --- | --- | --- | --- | --- | --- | --- | --- | --- | --- |
| 99 | 1.6.4.5 | **Plan y escenarios de pruebas de sistema preparados (EP-05)** | 1d? | 2026-10-05 | 2026-10-05 |  | 80d |  |  | 6h | 222 | 1.2.4.5 |  |
| 100 | 1.6.4.5.1 | Plan y escenarios de pruebas de sistema preparados (EP-05) | 1d? | 2026-10-05 | 2026-10-05 |  | 80d | 0d | Técnico de Calidad - 2026 | 6h | 222 | 1.2.4.5.1 | EP-05 |
| 101 | 1.6.5 | **Sprint 4 · 21/12/2026–08/01/2027** | 53d? | 2026-10-06 | 2026-12-21 |  | 30d |  |  | 24h | 786 | 1.2.5 |  |
| 102 | 1.6.5.1 | **RF-03 verificado (V)** | 1d? | 2026-12-21 | 2026-12-21 |  | 30d |  |  | 6h | 222 | 1.2.5.1 |  |
| 103 | 1.6.5.1.1 | RF-03 verificado (V) | 1d? | 2026-12-21 | 2026-12-21 | 17 | 30d |  | Técnico de Calidad - 2026 | 6h | 222 | 1.2.5.1.1 | RF-03 |
| 104 | 1.6.5.2 | **RF-02 construido e integrado (C)** | 1d? | 2026-10-06 | 2026-10-06 |  | 81d |  |  | 12h | 342 | 1.2.5.2 |  |
| 105 | 1.6.5.2.1 | RF-02 construido e integrado | 1d? | 2026-10-06 | 2026-10-06 | 85 | 82d |  | Desarrollador - 2026; Desarrollador Junior - 2026 | 12h | 342 | 1.2.5.2.1 | RF-02 |
| 106 | 1.6.5.3 | **RF-05 y RF-06 verificados (V)** | 1d? | 2026-11-12 | 2026-11-12 |  | 56d |  |  | 6h | 222 | 1.2.5.3 |  |
| 107 | 1.6.5.3.1 | RF-05 y RF-06 verificados | 1d? | 2026-11-12 | 2026-11-12 | 96, 87 | 56d |  | Técnico de Calidad - 2026 | 6h | 222 | 1.2.5.3.1 | RF-05;RF-06 |
| 108 | 1.6.6 | **Sprint 5 · 11–22/01/2027** | 60d? | 2026-10-06 | 2027-01-11 |  | 23d |  |  | 30h | 1,008 | 1.2.6 |  |
| 109 | 1.6.6.1 | **RF-02 y RF-04 verificados (V)** | 1d? | 2027-01-11 | 2027-01-11 |  | 23d |  |  | 6h | 222 | 1.2.6.1 |  |
| 110 | 1.6.6.1.1 | RF-02 y RF-04 verificados | 1d? | 2027-01-11 | 2027-01-11 | 20, 105 | 23d |  | Técnico de Calidad - 2026 | 6h | 222 | 1.2.6.1.1 | RF-02;RF-04 |
| 111 | 1.6.6.2 | **RF-07 y RF-08 construidos e integrados (C)** | 1d? | 2026-10-06 | 2026-10-06 |  | 82d |  |  | 12h | 342 | 1.2.6.2 |  |
| 112 | 1.6.6.2.1 | RF-07 y RF-08 construidos e integrados | 1d? | 2026-10-06 | 2026-10-06 | 89, 98 | 82d |  | Desarrollador - 2026; Desarrollador Junior - 2026 | 12h | 342 | 1.2.6.2.1 | RF-07;RF-08 |
| 113 | 1.6.6.3 | **Pruebas de sistema, carga y seguridad ejecutadas (EP-05)** | 1d? | 2026-10-06 | 2026-10-06 |  | 80d |  |  | 6h | 222 | 1.2.6.3 |  |
| 114 | 1.6.6.3.1 | Pruebas de sistema, carga y seguridad ejecutadas (EP-05) | 1d? | 2026-10-06 | 2026-10-06 | 100 | 80d | 0d | Técnico de Calidad - 2026 | 6h | 222 | 1.2.6.3.1 | EP-05 |
| 115 | 1.6.6.4 | **Seguimiento técnico del piloto: primer tramo completado (EP-05)** | 1d? | 2026-10-07 | 2026-10-07 |  | 80d |  |  | 6h | 222 | 1.2.6.4 |  |
| 116 | 1.6.6.4.1 | Seguimiento técnico del piloto: primer tramo completado (EP-05) | 1d? | 2026-10-07 | 2026-10-07 | 114 | 80d | 0d | Técnico de Calidad - 2026 | 6h | 222 | 1.2.6.4.1 | EP-05 |
| 117 | 1.6.7 | **Sprint 6 · 25/01–05/02/2027** | 68d? | 2026-10-08 | 2027-01-25 |  | 13d |  |  | 12h | 444 | 1.2.7 |  |
| 118 | 1.6.7.1 | **RF-07 y RF-08 verificados (V)** | 1d? | 2027-01-25 | 2027-01-25 |  | 13d |  |  | 6h | 222 | 1.2.7.1 |  |
| 119 | 1.6.7.1.1 | RF-07 y RF-08 verificados | 1d? | 2027-01-25 | 2027-01-25 | 23 | 13d |  | Técnico de Calidad - 2026 | 6h | 222 | 1.2.7.1.1 | RF-07;RF-08 |
| 120 | 1.6.7.2 | **Seguimiento técnico y evidencias finales del piloto completadas (EP-05)** | 1d? | 2026-10-08 | 2026-10-08 |  | 80d |  |  | 6h | 222 | 1.2.7.2 |  |
| 121 | 1.6.7.2.1 | Seguimiento técnico y evidencias finales del piloto completadas (EP-05) | 1d? | 2026-10-08 | 2026-10-08 | 116 | 80d |  | Técnico de Calidad - 2026 | 6h | 222 | 1.2.7.2.1 | EP-05 |

Notes:
- 99: Text10: Plan y escenarios de pruebas de sistema preparados (EP-05)
- 100: Text10: Plan y escenarios de pruebas de sistema preparados (EP-05)
- 101: Text10: Sprint 4 · 21/12/2026–08/01/2027
- 102: Text10: RF-03 verificado (V)
- 103: Text10: RF-03 verificado (V)
- 104: Text10: RF-02 construido e integrado (C)
- 105: Text10: RF-02 construido e integrado
- 106: Text10: RF-05 y RF-06 verificados (V)
- 107: Text10: RF-05 y RF-06 verificados
- 108: Text10: Sprint 5 · 11–22/01/2027
- 109: Text10: RF-02 y RF-04 verificados (V)
- 110: Text10: RF-02 y RF-04 verificados
- 111: Text10: RF-07 y RF-08 construidos e integrados (C)
- 112: Text10: RF-07 y RF-08 construidos e integrados
- 113: Text10: Pruebas de sistema, carga y seguridad ejecutadas (EP-05)
- 114: Text10: Pruebas de sistema, carga y seguridad ejecutadas (EP-05)
- 115: Text10: Seguimiento técnico del piloto: primer tramocompletado (EP-05)
- 116: Text10: Seguimiento técnico del piloto: primer tramo completado (EP-05)
- 117: Text10: Sprint 6 · 25/01–05/02/2027
- 118: Text10: RF-07 y RF-08 verificados (V)
- 119: Text10: RF-07 y RF-08 verificados
- 120: Text10: Seguimiento técnico y evidencias finales del piloto completadas (EP-05)
- 121: Text10: Seguimiento técnico y evidencias finales del piloto completadas (EP-05)
