# Proyecto TSL-2627 TuSuper en Línea

Schedule from MS Project, 2026-10-05 to 2027-02-12, 6 hours a day, costs in €.

## Calendars

- Estándar: Mon-Fri 09:00-15:00; Sat-Sun off. Exceptions (off unless hours are given): 2026-10-12 (Día de la Constitución Española), 2026-12-06 (Día de la Constitución Española), 2026-12-08 (Inmaculada Concepción), 2026-12-24 to 2027-01-01 (Cierre de la consultora (NOR-20)), 2027-01-06 (Epifanía del Señor).

## Resources

| Resource | Rate |
| --- | --- |
| Jefe de proyecto - 2026 | 60 |
| Arquitecto de software - 2026 | 55 |
| Técncio de sistemas - 2026 | 50 |
| Analista Funcional - 2026 | 45 |
| Diseñador UX - 2026 | 40 |
| Técnico de Calidad - 2026 | 37 |
| Desarrollador - 2026 | 35 |
| Desarrollador Junior - 2026 | 22 |
| Jefe de proyecto - 2027 | 61.8 |
| Arquitecto de software - 2027 | 56.65 |
| Técncio de sistemas - 2027 | 51.5 |
| Analista Funcional - 2027 | 46.34 |
| Diseñador UX - 2027 | 41.2 |
| Técnico de Calidad - 2027 | 38.11 |
| Desarrollador - 2027 | 36.05 |
| Desarrollador Junior - 2027 | 22.66 |

## Schedule

| ID | WBS | Task | Type | Duration | Start | Finish | Predecessors | Total slack | Free slack | Constraint | Resources | Work | Cost | Text11 | Text3 |
| --- | --- | --- | --- | --- | --- | --- | --- | --- | --- | --- | --- | --- | --- | --- | --- |
| 1 | 1 | **TSL-2627 TuSuper en Línea** |  | 84d? | 2026-10-05 | 2027-02-12 |  | 0d |  |  |  | 294h | 12,540 |  |  |
| 2 | 1.1 | **Dirección del Proyecto** |  | 84d? | 2026-10-05 | 2027-02-12 |  | 0d |  |  |  | 60h | 3,600 | 1.1 |  |
| 3 | 1.1.1 | **Planificación y gestión de la planificación** |  | 2d? | 2026-10-05 | 2026-10-06 |  | 24d |  |  |  |  |  | 1.1.1 |  |
| 4 | 1.1.1.1 | Comienzo del Proyecto | milestone | 0d | 2026-10-05 | 2026-10-05 |  | 24d | 0d |  |  |  |  | 1.1.1.1 |  |
| 5 | 1.1.1.2 | Elaboración del Plan de Dirección del Proyecto, Alcance, EDT y Cronograma |  | 1d? | 2026-10-05 | 2026-10-05 | 4 | 24d | 0d |  |  |  |  | 1.1.1.2 | APR; SOL |
| 6 | 1.1.1.3 | Tramitación y negociación de la aceptación del calendario y alcance por el cliente |  | 1d | 2026-10-06 | 2026-10-06 | 5 | 24d | 22d |  |  |  |  | 1.1.1.3 | ACE-LB |
| 7 | 1.1.2 | **Dirección y seguimiento del Sprint 1** |  | 10d | 2026-11-09 | 2026-11-20 |  | 2d |  |  |  | 60h | 3,600 | 1.1.2 |  |
| 8 | 1.1.2.1 | Inicio del Sprint 1 | milestone | 0d | 2026-11-09 | 2026-11-09 | 6 | 2d | 0d | start no earlier than 2026-11-09 |  |  |  | 1.1.2.2 |  |
| 9 | 1.1.2.2 | Dirección y seguimiento del Sprint 1 |  | 10d | 2026-11-09 | 2026-11-20 | 8 | 2d | 0d |  | Jefe de proyecto - 2026 | 60h | 3,600 | 1.1.2.1 | SPR; ISV |
| 10 | 1.1.3 | **Dirección y seguimiento del Sprint 2** |  | 10d | 2026-11-23 | 2026-12-04 |  | 2d |  |  |  |  |  | 1.1.3 |  |
| 11 | 1.1.3.1 | Inicio Sprint 2 | milestone | 0d | 2026-11-23 | 2026-11-23 | 9 | 2d | 0d | start no earlier than 2026-11-23 |  |  |  | 1.1.3.2 |  |
| 12 | 1.1.3.2 | Dirección y seguimiento del Sprint 2 |  | 10d | 2026-11-23 | 2026-12-04 | 11 | 2d | 0d |  |  |  |  | 1.1.3.1 | SPR; ISV |
| 13 | 1.1.4 | **Dirección y seguimiento del Sprint 3** |  | 9d | 2026-12-07 | 2026-12-18 |  | 2d |  |  |  |  |  | 1.1.4 |  |
| 14 | 1.1.4.1 | Inicio Sprint 3 | milestone | 0d | 2026-12-07 | 2026-12-07 | 12 | 2d | 0d | start no earlier than 2026-12-07 |  |  |  | 1.1.4.2 |  |
| 15 | 1.1.4.2 | Dirección y seguimiento del Sprint 3 |  | 9d | 2026-12-07 | 2026-12-18 | 14 | 2d | 0d |  |  |  |  | 1.1.4.1 | SPR; ISV |
| 16 | 1.1.5 | **Dirección y seguimiento del Sprint 4** |  | 7d | 2026-12-21 | 2027-01-08 |  | 2d |  |  |  |  |  | 1.1.5 |  |
| 17 | 1.1.5.1 | Inicio Sprint 4 | milestone | 0d | 2026-12-21 | 2026-12-21 | 15 | 2d | 0d | start no earlier than 2026-12-21 |  |  |  | 1.1.5.2 |  |
| 18 | 1.1.5.2 | Dirección y seguimiento del Sprint 4 |  | 7d | 2026-12-21 | 2027-01-08 | 17 | 2d | 0d |  |  |  |  | 1.1.5.1 | SPR; ISV |
| 19 | 1.1.6 | **Dirección y seguimiento del Sprint 5** |  | 10d | 2027-01-11 | 2027-01-22 |  | 2d |  |  |  |  |  | 1.1.6 |  |
| 20 | 1.1.6.1 | Inicio Sprint 5 | milestone | 0d | 2027-01-11 | 2027-01-11 | 18 | 2d | 0d | start no earlier than 2027-01-11 |  |  |  | 1.1.6.2 |  |
| 21 | 1.1.6.2 | Dirección y seguimiento del Sprint 5 |  | 10d | 2027-01-11 | 2027-01-22 | 20 | 2d | 0d |  |  |  |  | 1.1.6.1 | SPR; ISV |
| 22 | 1.1.7 | **Dirección y seguimiento del Sprint 6** |  | 10d | 2027-01-25 | 2027-02-05 |  | 2d |  |  |  |  |  | 1.1.7 |  |
| 23 | 1.1.7.1 | Inicio Sprint 6 | milestone | 0d | 2027-01-25 | 2027-01-25 | 21 | 2d | 0d | start no earlier than 2027-01-25 |  |  |  | 1.1.7.2 |  |
| 24 | 1.1.7.2 | Dirección y seguimiento del Sprint 6 |  | 10d | 2027-01-25 | 2027-02-05 | 23 | 2d | 0d |  |  |  |  | 1.1.7.1 | SPR; ISV |

Notes:
- 1: Text10: TSL-2627 TuSuper en Línea
- 2: Text10: Dirección del Proyecto
- 3: Text10: Planificación y gestión de la planificación
- 4: Text10: Comienzo del Proyecto
- 5: Text10: Elaboración del Plan de Dirección del Proyecto, Alcance, EDT y Cronograma
- 6: Text10: Tramitación y negociación de la aceptación del calendario y alcance por el cliente
- 7: Text10: Dirección y seguimiento del Sprint 1
- 8: Text10: Inicio del Sprint 1
- 9: Text10: Dirección y seguimiento del Sprint 1
- 10: Text10: Dirección y seguimiento del Sprint 2
- 11: Text10: Inicio Sprint 2
- 12: Text10: Dirección y seguimiento del Sprint 2
- 13: Text10: Dirección y seguimiento del Sprint 3
- 14: Text10: Inicio Sprint 3
- 15: Text10: Dirección y seguimiento del Sprint 3
- 16: Text10: Dirección y seguimiento del Sprint 4
- 17: Text10: Inicio Sprint 4
- 18: Text10: Dirección y seguimiento del Sprint 4
- 19: Text10: Dirección y seguimiento del Sprint 5
- 20: Text10: Inicio Sprint 5
- 21: Text10: Dirección y seguimiento del Sprint 5
- 22: Text10: Dirección y seguimiento del Sprint 6
- 23: Text10: Inicio Sprint 6
- 24: Text10: Dirección y seguimiento del Sprint 6

| ID | WBS | Task | Type | Duration | Start | Finish | Predecessors | Total slack | Free slack | Constraint | Resources | Work | Cost | Text11 | Text3 | Text1 |
| --- | --- | --- | --- | --- | --- | --- | --- | --- | --- | --- | --- | --- | --- | --- | --- | --- |
| 25 | 1.1.8 | **Traspaso al servicio de mantenimiento completado** |  | 1d | 2027-02-08 | 2027-02-08 |  | 3d |  |  |  |  |  | 1.1.8 |  |  |
| 26 | 1.1.8.1 | Traspaso al servicio de mantenimiento completado |  | 1d | 2027-02-08 | 2027-02-08 | 24 | 3d |  |  |  |  |  | 1.1.8.1 |  |  |
| 27 | 1.1.9 | **Cierre del proyecto aprobado y completado** |  | 4d? | 2027-02-08 | 2027-02-12 |  | 0d |  |  |  |  |  | 1.1.9 |  |  |
| 28 | 1.1.9.1 | Elaboración del Informe de Cierre y Lecciones Aprendidas |  | 1d | 2027-02-08 | 2027-02-08 | 24 | 2d | 0d |  |  |  |  | 1.1.9.1 | CPR |  |
| 29 | 1.1.9.2 | Cierre del proyecto aprobado y completado |  | 1d? | 2027-02-09 | 2027-02-09 | 28 | 2d |  |  |  |  |  | 1.1.9.2 | CPR |  |
| 30 | 1.1.9.3 | Cierre del proyecto | milestone | 0d | 2027-02-12 | 2027-02-12 | 29 | 0d |  | start no earlier than 2027-02-12 |  |  |  | 1.1.9.3 |  |  |
| 31 | 1.2 | **Adquisiciones** |  | 33d? | 2026-10-05 | 2026-11-19 |  | 51d |  |  |  |  |  | 1.6 |  |  |
| 32 | 1.2.1 | **Contrato del conector con ERP: pedido, seguimiento y aceptación** |  | 33d? | 2026-10-05 | 2026-11-19 |  | 51d |  |  |  |  |  | 1.6.1 |  |  |
| 33 | 1.2.1.1 | Tramitación del Pedido del conector ERP tramitado |  | 1d? | 2026-10-05 | 2026-10-05 |  | 81d | 30d |  |  |  |  | 1.6.1.1 | PED |  |
| 34 | 1.2.1.2 | Pedido Conector | milestone | 0d | 2026-11-18 | 2026-11-18 | 33 | 51d | 0d | start no earlier than 2026-11-18 |  |  |  |  |  |  |
| 35 | 1.2.1.3 | Seguimiento del proveedor del conector |  | 1d? | 2026-11-18 | 2026-11-18 | 34 | 51d | 0d |  |  |  |  | 1.6.1.2 | SEG |  |
| 36 | 1.2.1.4 | Conector recibido y aceptado formalmente |  | 1d? | 2026-11-19 | 2026-11-19 | 35 | 51d | 19d |  |  |  |  | 1.6.1.3 | ACO |  |
| 37 | 1.2.1.5 | Pago del control del conector HITO (TDB) |  | 1d? | 2026-10-05 | 2026-10-05 |  | 83d |  |  |  |  |  | 1.6.1.4 | CON |  |
| 38 | 1.2.2 | **Encargo de documentación de uso y formación: seguimiento y aceptación** |  | 23d? | 2026-10-05 | 2026-11-06 |  | 61d |  |  |  |  |  | 1.6.2 |  |  |
| 39 | 1.2.2.1 | Encargo de documentación y formación realizado |  | 1d? | 2026-10-05 | 2026-10-05 |  | 83d | 22d |  |  |  |  | 1.6.2.1 | EFO |  |
| 40 | 1.2.2.2 | Encargo de documentación | milestone | 0d | 2026-11-06 | 2026-11-06 | 39 | 61d |  | start no earlier than 2026-11-06 |  |  |  |  |  |  |
| 41 | 1.2.2.3 | Documentación entregada y acceso a preproducción habilitado para Formación |  | 1d? | 2026-10-05 | 2026-10-05 |  | 83d |  |  |  |  |  | 1.6.2.2 | DFO |  |
| 42 | 1.3 | **Integración con ERP · ENT-02** |  | 30d? | 2026-11-09 | 2026-12-21 |  | 30d |  |  |  | 30h | 1,470 | 1.3 |  |  |
| 43 | 1.3.1 | **Sprint 1 · Especificación de interfaz ERP acordada (EP-04)** |  | 1d? | 2026-11-09 | 2026-11-09 |  | 59d |  |  |  | 12h | 570 | 1.3.1 |  |  |
| 44 | 1.3.1.1 | Sprint 1 · Especificación de interfaz ERP acordada (EP-04) |  | 1d? | 2026-11-09 | 2026-11-09 | 8 | 59d |  |  | Arquitecto de software - 2026; Diseñador UX - 2026 | 12h | 570 | 1.3.1.1 |  | EP-04 |
| 45 | 1.3.2 | **Sprint 2 · Adaptación propia y ensayos con datos simulados (EP-04)** |  | 1d? | 2026-11-23 | 2026-11-23 |  | 49d |  |  |  | 6h | 300 | 1.3.2 |  |  |
| 46 | 1.3.2.1 | Sprint 2 · Adaptación propia y ensayos con datos simulados (EP-04) |  | 1d? | 2026-11-23 | 2026-11-23 | 11 | 49d |  |  | Técncio de sistemas - 2026 | 6h | 300 | 1.3.2.1 |  | EP-04 |
| 47 | 1.3.3 | **Sprint 3 · Conector integrado, carga inicial y pruebas reales completadas (EP-04)** |  | 8d? | 2026-12-07 | 2026-12-18 |  | 32d |  |  |  | 6h | 300 | 1.3.3 |  |  |
| 48 | 1.3.3.1 | Sprint 3 · Conector integrado, carga inicial y pruebas reales completadas (EP-04) |  | 1d? | 2026-12-07 | 2026-12-07 | 14 | 38d | 7d |  | Técncio de sistemas - 2026 | 6h | 300 | 1.3.3.1 |  | EP-04 |
| 49 | 1.3.3.2 | Aceptación del Conector | milestone | 0d | 2026-12-18 | 2026-12-18 | 48, 36 | 32d |  | start no earlier than 2026-12-18 |  |  |  |  | ACO | EP-04 |

Notes:
- 25: Text10: Traspaso al servicio de mantenimiento completado
- 26: Text10: Traspaso al servicio de mantenimiento completado
- 27: Text10: Cierre del proyecto aprobado y completado
- 28: Text10: Elaboración del Informe de Cierre y Lecciones Aprendidas
- 29: Text10: Cierre del proyecto aprobado y completado
- 30: Text10: Cierre del proyecto
- 31: Text10: Adquisiciones
- 32: Text10: Contrato del conector con ERP: pedido, seguimiento y aceptación
- 33: Text10: Pedido del conector ERP tramitado
- 35: Text10: Seguimiento del proveedor del conector
- 36: Text10: Conector recibido y aceptado formalmente
- 37: Text10: Pago del control del conector HITO (TDB)
- 38: Text10: Encargo de documentación de uso y formación: seguimiento y aceptación
- 39: Text10: Encargo de documentación y formación realizado
- 41: Text10: Documentación entregada y acceso a preproducción habilitado para Formación
- 42: Text10: Integración con ERP · ENT-02
- 43: Text10: Sprint 1 · Especificación de interfaz ERP acordada (EP-04)
- 44: Text10: Sprint 1 · Especificación de interfaz ERP acordada (EP-04)
- 45: Text10: Sprint 2 · Adaptación propia y ensayos con datos simulados (EP-04)
- 46: Text10: Sprint 2 · Adaptación propia y ensayos con datos simulados (EP-04)
- 47: Text10: Sprint 3 · Conector integrado, carga inicial y pruebas reales completadas (EP-04)
- 48: Text10: Sprint 3 · Conector integrado, carga inicial y pruebas reales completadas (EP-04)

| ID | WBS | Task | Duration | Start | Finish | Predecessors | Total slack | Free slack | Resources | Work | Cost | Text11 | Text1 |
| --- | --- | --- | --- | --- | --- | --- | --- | --- | --- | --- | --- | --- | --- |
| 50 | 1.3.4 | **Sprint 4 · Sincronización comprobada y carga productiva de 32 tiendas (EP-04)** | 1d? | 2026-12-21 | 2026-12-21 |  | 30d |  |  | 6h | 300 | 1.3.4 |  |
| 51 | 1.3.4.1 | Sprint 4 · Sincronización comprobada y carga productiva de 32 tiendas (EP-04) | 1d? | 2026-12-21 | 2026-12-21 | 17 | 30d |  | Técncio de sistemas - 2026 | 6h | 300 | 1.3.4.1 | EP-04 |
| 52 | 1.4 | **Plataforma de compra en línea · ENT-01** | 71d? | 2026-10-05 | 2027-01-25 |  | 13d |  |  | 204h | 7,470 | 1.2 |  |
| 53 | 1.4.1 | **Planificación** | 3d? | 2026-11-09 | 2026-11-11 |  | 56d |  |  | 24h | 1,080 | 1.2.1 |  |
| 54 | 1.4.1.1 | **Especificación funcional común y criterios de aceptación acordados (EP-01)** | 1d | 2026-11-09 | 2026-11-09 |  | 56d | 0d |  | 12h | 510 | 1.2.1.1 |  |
| 55 | 1.4.1.1.1 | Especificación funcional común y criterios de aceptación acordados (EP-01) | 1d | 2026-11-09 | 2026-11-09 | 8 | 56d | 0d | Analista Funcional - 2026; Diseñador UX - 2026 | 12h | 510 | 1.2.1.1.1 | EP-01 |
| 56 | 1.4.1.2 | **Sistema de diseño e interfaz común preparados (EP-02)** | 1d? | 2026-11-10 | 2026-11-10 |  | 56d |  |  | 12h | 570 | 1.2.1.2 |  |
| 57 | 1.4.1.2.1 | Sistema de diseño e interfaz común preparados (EP-02) | 1d? | 2026-11-10 | 2026-11-10 | 55 | 56d | 0d | Arquitecto de software - 2026; Diseñador UX - 2026 | 12h | 570 | 1.2.1.2.1 | EP-02 |
| 58 | 1.4.1.3 | **Arquitectura técnica de la plataforma diseñada (EP-03)** | 1d? | 2026-11-11 | 2026-11-11 |  | 56d | 0d |  |  |  | 1.2.1.3 |  |
| 59 | 1.4.1.3.1 | Arquitectura técnica de la plataforma diseñada (EP-03) | 1d? | 2026-11-11 | 2026-11-11 | 57 | 56d |  |  |  |  | 1.2.1.3.1 | EP-03 |
| 60 | 1.4.2 | **Sprint 1 · 09-20/11/2026** | 3d? | 2026-11-10 | 2026-11-12 |  | 56d |  |  | 30h | 1,320 | 1.2.2 |  |
| 61 | 1.4.2.1 | **RF-01 y RF-03 especificados y diseñados (E)** | 1d? | 2026-11-10 | 2026-11-10 |  | 56d |  |  | 12h | 510 | 1.2.2.1 |  |
| 62 | 1.4.2.1.1 | RF-01 y RF-03 especificados y diseñados | 1d? | 2026-11-10 | 2026-11-10 | 55, 8 | 56d | 8d | Analista Funcional - 2026; Diseñador UX - 2026 | 12h | 510 | 1.2.2.1.1 | RF-01;RF-03 |
| 63 | 1.4.2.2 | **RF-06 especificado y diseñado (E)** | 1d? | 2026-11-10 | 2026-11-10 |  | 56d |  |  | 12h | 510 | 1.2.2.2 |  |
| 64 | 1.4.2.2.1 | RF-06 especificado y diseñado | 1d? | 2026-11-10 | 2026-11-10 | 54 | 56d | 8d | Analista Funcional - 2026; Diseñador UX - 2026 | 12h | 510 | 1.2.2.2.1 | RF-06 |
| 65 | 1.4.2.3 | **Entornos de desarrollo y CI/CD operativos (EP-03)** | 1d? | 2026-11-12 | 2026-11-12 |  | 56d |  |  | 6h | 300 | 1.2.2.3 |  |
| 66 | 1.4.2.3.1 | Entornos de desarrollo y CI/CD operativos (EP-03) | 1d? | 2026-11-12 | 2026-11-12 | 58 | 56d |  | Técncio de sistemas - 2026 | 6h | 300 | 1.2.2.3.1 | EP-03 |
| 67 | 1.4.3 | **Sprint 2 · 23/11-04/12/2026** | 1d? | 2026-11-23 | 2026-11-23 |  | 46d |  |  | 36h | 1,362 | 1.2.3 |  |
| 68 | 1.4.3.1 | **RF-01 y RF-03 construidos e integrados (C)** | 1d? | 2026-11-23 | 2026-11-23 |  | 48d |  |  | 12h | 342 | 1.2.3.1 |  |
| 69 | 1.4.3.1.1 | RF-01 y RF-03 construidos e integrados | 1d? | 2026-11-23 | 2026-11-23 | 62, 11 | 48d | 18d | Desarrollador - 2026; Desarrollador Junior - 2026 | 12h | 342 | 1.2.3.1.1 | RF-01;RF-03 |
| 70 | 1.4.3.2 | **RF-02 y RF-04 especificados y diseñados (E)** | 1d? | 2026-11-23 | 2026-11-23 |  | 46d |  |  | 12h | 510 | 1.2.3.2 |  |
| 71 | 1.4.3.2.1 | RF-02 y RF-04 especificados y diseñados | 1d? | 2026-11-23 | 2026-11-23 | 11 | 46d | 9d | Analista Funcional - 2026; Diseñador UX - 2026 | 12h | 510 | 1.2.3.2.1 | RF-02;RF-04 |
| 72 | 1.4.3.3 | **RF-06 construido e integrado (C)** | 1d? | 2026-11-23 | 2026-11-23 |  | 48d |  |  |  |  | 1.2.3.3 |  |
| 73 | 1.4.3.3.1 | RF-06 construido e integrado | 1d? | 2026-11-23 | 2026-11-23 | 64, 11 | 48d | 18d |  |  |  | 1.2.3.3.1 |  |

Notes:
- 50: Text10: Sprint 4 · Sincronización comprobada y carga productiva de 32 tiendas (EP-04)
- 51: Text10: Sprint 4 · Sincronización comprobada y carga productiva de 32 tiendas (EP-04)
- 52: Text10: Plataforma de compra en línea · ENT-01
- 53: Text10: Planificación
- 54: Text10: Especificación funcional común y criterios de aceptación acordados (EP-01)
- 55: Text10: Especificación funcional común y criterios de aceptación acordados (EP-01)
- 56: Text10: Sistema de diseño e interfaz común preparados (EP-02)
- 57: Text10: Sistema de diseño e interfaz común preparados (EP-02)
- 58: Text10: Arquitectura técnica de la plataforma diseñada (EP-03)
- 59: Text10: Arquitectura técnica de la plataforma diseñada (EP-03)
- 60: Text10: Sprint 1 · 09-20/11/2026
- 61: Text10: RF-01 y RF-03 especificados y diseñados (E)
- 62: Text10: RF-01 y RF-03 especificados y diseñados
- 63: Text10: RF-06 especificado y diseñado (E)
- 64: Text10: RF-06 especificado y diseñado
- 65: Text10: Entornos de desarrollo y CI/CD operativos (EP-03)
- 66: Text10: Entornos de desarrollo y CI/CD operativos (EP-03)
- 67: Text10: Sprint 2 · 23/11-04/12/2026
- 68: Text10: RF-01 y RF-03 construidos e integrados (C)
- 69: Text10: RF-01 y RF-03 construidos e integrados
- 70: Text10: RF-02 y RF-04 especificados y diseñados (E)
- 71: Text10: RF-02 y RF-04 especificados y diseñados
- 72: Text10: RF-06 construido e integrado (C)
- 73: Text10: RF-06 construido e integrado

| ID | WBS | Task | Type | Duration | Start | Finish | Predecessors | Total slack | Free slack | Constraint | Resources | Work | Cost | Text10 | Text11 | Text1 | Text3 |
| --- | --- | --- | --- | --- | --- | --- | --- | --- | --- | --- | --- | --- | --- | --- | --- | --- | --- |
| 74 | 1.4.3.4 | **RF-05 y RF-07 especificados y diseñados (E)** |  | 1d? | 2026-11-23 | 2026-11-23 |  | 47d |  |  |  | 12h | 510 | RF-05 y RF-07 especificados y diseñados (E) | 1.2.3.4 |  |  |
| 75 | 1.4.3.4.1 | RF-05 y RF-07 especificados y diseñados |  | 1d? | 2026-11-23 | 2026-11-23 | 11 | 47d | 9d |  | Analista Funcional - 2026; Diseñador UX - 2026 | 12h | 510 | RF-05 y RF-07 especificados y diseñados | 1.2.3.4.1 | RF-05;RF-07 |  |
| 76 | 1.4.4 | **Sprint 3 · 07-18/12/2026** |  | 9d? | 2026-12-07 | 2026-12-18 |  | 31d |  |  |  | 48h | 1,470 | Sprint 3 · 07-18/12/2026 | 1.2.4 |  |  |
| 77 | 1.4.4.1 | **RF-01 verificado (V)** |  | 1d? | 2026-12-07 | 2026-12-07 |  | 39d |  |  |  | 6h | 222 | RF-01 verificado (V) | 1.2.4.1 |  |  |
| 78 | 1.4.4.1.1 | RF-01 verificado (V) |  | 1d? | 2026-12-07 | 2026-12-07 | 14, 62 | 39d |  |  | Técnico de Calidad - 2026 | 6h | 222 | RF-01 verificado (V) | 1.2.4.1.1 | RF-01 |  |
| 79 | 1.4.4.2 | **RF-04 construido e integrado (C)** |  | 9d? | 2026-12-07 | 2026-12-18 |  | 31d |  |  |  | 12h | 342 | RF-04 construido e integrado (C) | 1.2.4.2 |  |  |
| 80 | 1.4.4.2.1 | RF-04 construido e integrado |  | 1d? | 2026-12-07 | 2026-12-07 | 71, 14 | 37d | 6d |  | Desarrollador - 2026; Desarrollador Junior - 2026 | 12h | 342 | RF-04 construido e integrado | 1.2.4.2.1 | RF-04 |  |
| 81 | 1.4.4.2.2 | RF-04 pasarela de pago construida |  | 1d? | 2026-12-17 | 2026-12-17 | 80 | 31d | 0d | start no earlier than 2026-12-17 |  |  |  |  |  |  |  |
| 82 | 1.4.4.2.3 | Solicitud de auditoria a TuSuper |  | 1d? | 2026-12-18 | 2026-12-18 | 81 | 31d |  |  |  |  |  |  |  |  |  |
| 83 | 1.4.4.3 | **RF-05 construido e integrado (C)** |  | 1d? | 2026-12-07 | 2026-12-07 |  | 38d |  |  |  | 12h | 342 | RF-05 construido e integrado (C) | 1.2.4.3 |  |  |
| 84 | 1.4.4.3.1 | RF-05 construido e integrado |  | 1d? | 2026-12-07 | 2026-12-07 | 75, 14 | 38d | 8d |  | Desarrollador - 2026; Desarrollador Junior - 2026 | 12h | 342 | RF-05 construido e integrado | 1.2.4.3.1 | RF-05 |  |
| 85 | 1.4.4.4 | **RF-08 especificado y diseñado (E)** |  | 1d? | 2026-12-07 | 2026-12-07 |  | 38d |  |  |  | 12h | 342 | RF-08 especificado y diseñado (E) | 1.2.4.4 |  |  |
| 86 | 1.4.4.4.1 | RF-08 especificado y diseñado |  | 1d? | 2026-12-07 | 2026-12-07 | 14 | 38d | 15d |  | Desarrollador - 2026; Desarrollador Junior - 2026 | 12h | 342 | RF-08 especificado y diseñado | 1.2.4.4.1 | RF-08 |  |
| 87 | 1.4.4.5 | **Plan y escenarios de pruebas de sistema preparados (EP-05)** |  | 1d? | 2026-12-07 | 2026-12-07 |  | 36d |  |  |  | 6h | 222 | Plan y escenarios de pruebas de sistema preparados (EP-05) | 1.2.4.5 |  |  |
| 88 | 1.4.4.5.1 | Plan y escenarios de pruebas de sistema preparados (EP-05) |  | 1d? | 2026-12-07 | 2026-12-07 | 14 | 36d | 15d |  | Técnico de Calidad - 2026 | 6h | 222 | Plan y escenarios de pruebas de sistema preparados (EP-05) | 1.2.4.5.1 | EP-05 |  |
| 89 | 1.4.5 | **Sprint 4 · 21/12/2026–08/01/2027** |  | 1d? | 2026-12-21 | 2026-12-21 |  | 29d |  |  |  | 24h | 786 | Sprint 4 · 21/12/2026–08/01/2027 | 1.2.5 |  |  |
| 90 | 1.4.5.1 | **RF-03 verificado (V)** |  | 1d? | 2026-12-21 | 2026-12-21 |  | 30d |  |  |  | 6h | 222 | RF-03 verificado (V) | 1.2.5.1 |  |  |
| 91 | 1.4.5.1.1 | RF-03 verificado (V) |  | 1d? | 2026-12-21 | 2026-12-21 | 17, 69 | 30d |  |  | Técnico de Calidad - 2026 | 6h | 222 | RF-03 verificado (V) | 1.2.5.1.1 | RF-03 |  |
| 92 | 1.4.5.2 | **RF-02 construido e integrado (C)** |  | 1d? | 2026-12-21 | 2026-12-21 |  | 29d |  |  |  | 12h | 342 | RF-02 construido e integrado (C) | 1.2.5.2 |  |  |
| 93 | 1.4.5.2.1 | RF-02 construido e integrado |  | 1d? | 2026-12-21 | 2026-12-21 | 71, 17 | 29d | 6d |  | Desarrollador - 2026; Desarrollador Junior - 2026 | 12h | 342 | RF-02 construido e integrado | 1.2.5.2.1 | RF-02 |  |
| 94 | 1.4.5.3 | **RF-05 y RF-06 verificados (V)** |  | 1d? | 2026-12-21 | 2026-12-21 |  | 30d |  |  |  | 6h | 222 | RF-05 y RF-06 verificados (V) | 1.2.5.3 |  |  |
| 95 | 1.4.5.3.1 | RF-05 y RF-06 verificados |  | 1d? | 2026-12-21 | 2026-12-21 | 84, 73, 48, 17 | 30d |  |  | Técnico de Calidad - 2026 | 6h | 222 | RF-05 y RF-06 verificados | 1.2.5.3.1 | RF-05;RF-06 |  |
| 96 | 1.4.6 | **Sprint 5 · 11–22/01/2027** |  | 62d? | 2026-10-05 | 2027-01-13 |  | 22d |  |  |  | 30h | 1,008 | Sprint 5 · 11–22/01/2027 | 1.2.6 |  |  |
| 97 | 1.4.6.1 | **RF-02 y RF-04 verificados (V)** |  | 62d? | 2026-10-05 | 2027-01-13 |  | 22d |  |  |  | 6h | 222 | RF-02 y RF-04 verificados (V) | 1.2.6.1 |  |  |
| 98 | 1.4.6.1.1 | RF-02 verificado |  | 1d? | 2026-10-05 | 2026-10-05 |  | 83d |  |  |  |  |  |  |  | RF-02 | 93 |
| 99 | 1.4.6.1.2 | RF-04 Recepción de Credenciales de la pasarela | milestone | 0d | 2027-01-13 | 2027-01-13 |  | 22d |  | start no earlier than 2027-01-13 |  |  |  |  |  |  | 81 |
| 100 | 1.4.6.1.3 | RF-04 verificados |  | 1d? | 2027-01-11 | 2027-01-11 | 20, 93, 48 | 23d |  |  | Técnico de Calidad - 2026 | 6h | 222 | RF-02 y RF-04 verificados | 1.2.6.1.1 | RF-04 | 81;99 |

| ID | WBS | Task | Type | Duration | Start | Finish | Predecessors | Total slack | Free slack | Constraint | Resources | Work | Cost | Text11 | Text1 |
| --- | --- | --- | --- | --- | --- | --- | --- | --- | --- | --- | --- | --- | --- | --- | --- |
| 101 | 1.4.6.2 | **RF-07 y RF-08 construidos e integrados (C)** |  | 1d? | 2027-01-11 | 2027-01-11 |  | 23d |  |  |  | 12h | 342 | 1.2.6.2 |  |
| 102 | 1.4.6.2.1 | RF-07 y RF-08 construidos e integrados |  | 1d? | 2027-01-11 | 2027-01-11 | 75, 86, 20 | 23d |  |  | Desarrollador - 2026; Desarrollador Junior - 2026 | 12h | 342 | 1.2.6.2.1 | RF-07;RF-08 |
| 103 | 1.4.6.3 | **Pruebas de sistema, carga y seguridad ejecutadas (EP-05)** |  | 1d? | 2027-01-11 | 2027-01-11 |  | 21d |  |  |  | 6h | 222 | 1.2.6.3 |  |
| 104 | 1.4.6.3.1 | Pruebas de sistema, carga y seguridad ejecutadas (EP-05) |  | 1d? | 2027-01-11 | 2027-01-11 | 88, 20 | 21d | 0d |  | Técnico de Calidad - 2026 | 6h | 222 | 1.2.6.3.1 | EP-05 |
| 105 | 1.4.6.4 | **Seguimiento técnico del piloto: primer tramo completado (EP-05)** |  | 1d? | 2027-01-12 | 2027-01-12 |  | 21d |  |  |  | 6h | 222 | 1.2.6.4 |  |
| 106 | 1.4.6.4.1 | Seguimiento técnico del piloto: primer tramo completado (EP-05) |  | 1d? | 2027-01-12 | 2027-01-12 | 104, 20 | 21d | 8d |  | Técnico de Calidad - 2026 | 6h | 222 | 1.2.6.4.1 | EP-05 |
| 107 | 1.4.7 | **Sprint 6 · 25/01–05/02/2027** |  | 1d? | 2027-01-25 | 2027-01-25 |  | 13d |  |  |  | 12h | 444 | 1.2.7 |  |
| 108 | 1.4.7.1 | **RF-07 y RF-08 verificados (V)** |  | 1d? | 2027-01-25 | 2027-01-25 |  | 13d |  |  |  | 6h | 222 | 1.2.7.1 |  |
| 109 | 1.4.7.1.1 | RF-07 y RF-08 verificados |  | 1d? | 2027-01-25 | 2027-01-25 | 23, 48 | 13d |  |  | Técnico de Calidad - 2026 | 6h | 222 | 1.2.7.1.1 | RF-07;RF-08 |
| 110 | 1.4.7.2 | **Seguimiento técnico y evidencias finales del piloto completadas (EP-05)** |  | 1d? | 2027-01-25 | 2027-01-25 |  | 13d |  |  |  | 6h | 222 | 1.2.7.2 |  |
| 111 | 1.4.7.2.1 | Seguimiento técnico y evidencias finales del piloto completadas (EP-05) |  | 1d? | 2027-01-25 | 2027-01-25 | 106, 23 | 13d |  |  | Técnico de Calidad - 2026 | 6h | 222 | 1.2.7.2.1 | EP-05 |
| 112 | 1.5 | **Documentación y formación · ENT-04** |  | 2d? | 2026-12-07 | 2026-12-09 |  | 38d |  |  |  |  |  | 1.5 |  |
| 113 | 1.5.1 | **Sprint 3 · Acceso Preproducción y Documentación técnica y funcional entregada a Formación (EP-07)** |  | 2d? | 2026-12-07 | 2026-12-09 |  | 38d |  |  |  |  |  | 1.5.1 |  |
| 114 | 1.5.1.1 | Sprint 3 · Documentación técnica y funcional entregada a Formación (EP-07) |  | 1d? | 2026-12-07 | 2026-12-07 | 14 | 38d | 0d |  |  |  |  | 1.5.1.1 | EP-07 |
| 115 | 1.5.1.2 | Sprint 3 · Acceso a preproducción habilitado para Formación (EP-07) |  | 1d? | 2026-12-09 | 2026-12-09 | 114, 14 | 38d |  |  |  |  |  | 1.5.2.1 | EP-07 |
| 116 | 1.6 | **Puesta en producción · ENT-03** |  | 38d? | 2026-11-23 | 2027-01-26 |  | 12d |  |  |  |  |  | 1.4 |  |
| 117 | 1.6.1 | **Sprint 2 · Entorno de preproducción preparado (EP-06)** |  | 9d? | 2026-11-23 | 2026-12-04 |  | 41d |  |  |  |  |  | 1.4.1 |  |
| 118 | 1.6.1.1 | Sprint 2 · Entorno de preproducción preparado (EP-06) |  | 1d? | 2026-11-23 | 2026-11-23 | 11 | 49d | 8d |  |  |  |  | 1.4.1.1 | EP-06 |
| 119 | 1.6.1.2 | Entorno de preproducción construido | milestone | 0d | 2026-12-04 | 2026-12-04 | 118 | 41d |  | start no earlier than 2026-12-04 |  |  |  |  |  |
| 120 | 1.6.2 | **Sprint 4 · Despliegue de la plataforma en tres tiendas piloto (EP-06)** |  | 1d? | 2026-12-07 | 2026-12-07 |  | 39d |  |  |  |  |  | 1.4.2 |  |
| 121 | 1.6.2.1 | Sprint 4 · Despliegue de la plataforma en tres tiendas piloto (EP-06) |  | 1d? | 2026-12-07 | 2026-12-07 | 14 | 39d |  |  |  |  |  | 1.4.2.1 | EP-06 |
| 122 | 1.6.3 | **Sprint 5 · Piloto operativo y supervisado: primer tramo (EP-06)** |  | 1d? | 2027-01-11 | 2027-01-11 |  | 23d |  |  |  |  |  | 1.4.3 |  |
| 123 | 1.6.3.1 | Sprint 5 · Piloto operativo y supervisado: primer tramo (EP-06) |  | 1d? | 2027-01-11 | 2027-01-11 | 20 | 23d |  |  |  |  |  | 1.4.3.1 | EP-06 |
| 124 | 1.6.4 | **Sprint 6 · 25/01–05/02/2027** |  | 2d? | 2027-01-25 | 2027-01-26 |  | 12d |  |  |  |  |  | 1.4.4 |  |
| 125 | 1.6.4.1 | **Piloto operativo finalizado: segundo tramo (EP-06)** |  | 1d? | 2027-01-25 | 2027-01-25 |  | 12d |  |  |  |  |  | 1.4.4.1 |  |
| 126 | 1.6.4.1.1 | Piloto operativo finalizado: segundo tramo (EP-06) |  | 1d? | 2027-01-25 | 2027-01-25 | 23 | 12d | 0d |  |  |  |  | 1.4.4.1.1 | EP-06 |

Notes:
- 101: Text10: RF-07 y RF-08 construidos e integrados (C)
- 102: Text10: RF-07 y RF-08 construidos e integrados
- 103: Text10: Pruebas de sistema, carga y seguridad ejecutadas (EP-05)
- 104: Text10: Pruebas de sistema, carga y seguridad ejecutadas (EP-05)
- 105: Text10: Seguimiento técnico del piloto: primer tramocompletado (EP-05)
- 106: Text10: Seguimiento técnico del piloto: primer tramo completado (EP-05)
- 107: Text10: Sprint 6 · 25/01–05/02/2027
- 108: Text10: RF-07 y RF-08 verificados (V)
- 109: Text10: RF-07 y RF-08 verificados
- 110: Text10: Seguimiento técnico y evidencias finales del piloto completadas (EP-05)
- 111: Text10: Seguimiento técnico y evidencias finales del piloto completadas (EP-05)
- 112: Text10: Documentación y formación · ENT-04
- 113: Text10: Sprint 3 · Documentación técnica y funcional entregada a Formación (EP-07)
- 114: Text10: Sprint 3 · Documentación técnica y funcional entregada a Formación (EP-07)
- 115: Text10: Sprint 3 · Acceso a preproducción habilitado para Formación (EP-07)
- 116: Text10: Puesta en producción · ENT-03
- 117: Text10: Sprint 2 · Entorno de preproducción preparado (EP-06)
- 118: Text10: Sprint 2 · Entorno de preproducción preparado (EP-06)
- 120: Text10: Sprint 4 · Despliegue de la plataforma en tres tiendas piloto (EP-06)
- 121: Text10: Sprint 4 · Despliegue de la plataforma en tres tiendas piloto (EP-06)
- 122: Text10: Sprint 5 · Piloto operativo y supervisado: primer tramo (EP-06)
- 123: Text10: Sprint 5 · Piloto operativo y supervisado: primer tramo (EP-06)
- 124: Text10: Sprint 6 · 25/01–05/02/2027
- 125: Text10: Piloto operativo finalizado: segundo tramo (EP-06)
- 126: Text10: Piloto operativo finalizado: segundo tramo (EP-06)

| ID | WBS | Task | Duration | Start | Finish | Predecessors | Total slack | Text11 | Text1 |
| --- | --- | --- | --- | --- | --- | --- | --- | --- | --- |
| 127 | 1.6.4.2 | **Despliegue en producción y apertura de las 32 tiendas (EP-06)** | 1d? | 2027-01-26 | 2027-01-26 |  | 12d | 1.4.4.2 |  |
| 128 | 1.6.4.2.1 | Despliegue en producción y apertura de las 32 tiendas (EP-06) | 1d? | 2027-01-26 | 2027-01-26 | 126 | 12d | 1.4.4.2.1 | EP-06 |

Notes:
- 127: Text10: Despliegue en producción y apertura de las 32 tiendas (EP-06)
- 128: Text10: Despliegue en producción y apertura de las 32 tiendas (EP-06)
