# Proyecto TSL-2627 TuSuper en Línea

Schedule from MS Project, 2026-10-05 to 2027-02-12, 6 hours a day, costs in €.

## Calendars

- Estándar: Mon-Fri 09:00-15:00; Sat-Sun off. Exceptions (off unless hours are given): 2026-10-12 (Día de la Constitución Española), 2026-12-06 (Día de la Constitución Española), 2026-12-08 (Inmaculada Concepción), 2026-12-24 to 2027-01-01 (Cierre de la consultora (NOR-20)), 2027-01-06 (Epifanía del Señor).

## Resources

| Resource | Rate |
| --- | --- |
| Jefe de proyecto - 2026 | 60 |
| Arquitecto de software - 2026 | 55 |
| Técncio de sistemas - 2026 | 50 |
| Analista Funcional - 2026 | 45 |
| Diseñador UX - 2026 | 40 |
| Técnico de Calidad - 2026 | 37 |
| Desarrollador - 2026 | 35 |
| Desarrollador Junior - 2026 | 22 |
| Jefe de proyecto - 2027 | 61.8 |
| Arquitecto de software - 2027 | 56.65 |
| Técncio de sistemas - 2027 | 51.5 |
| Analista Funcional - 2027 | 46.34 |
| Diseñador UX - 2027 | 41.2 |
| Técnico de Calidad - 2027 | 38.11 |
| Desarrollador - 2027 | 36.05 |
| Desarrollador Junior - 2027 | 22.66 |

## Schedule

| ID | WBS | Task | Type | Duration | Start | Finish | Predecessors | Total slack | Free slack | Constraint | Resources | Work | Cost | Text11 | Text3 |
| --- | --- | --- | --- | --- | --- | --- | --- | --- | --- | --- | --- | --- | --- | --- | --- |
| 1 | 1 | **TSL-2627 TuSuper en Línea** |  | 84d? | 2026-10-05 | 2027-02-12 |  | 0d |  |  |  | 294h | 12,540 |  |  |
| 2 | 1.1 | **Dirección del Proyecto** |  | 84d? | 2026-10-05 | 2027-02-12 |  | 0d |  |  |  | 60h | 3,600 | 1.1 |  |
| 3 | 1.1.1 | **Planificación y gestión de la planificación** |  | 23d? | 2026-10-05 | 2026-11-06 |  | 24d |  |  |  |  |  | 1.1.1 |  |
| 4 | 1.1.1.1 | Comienzo del Proyecto | milestone | 0d | 2026-10-05 | 2026-10-05 |  | 24d | 0d |  |  |  |  | 1.1.1.1 |  |
| 5 | 1.1.1.2 | Elaboración del Plan de Dirección del Proyecto, Alcance, EDT y Cronograma |  | 1d? | 2026-10-05 | 2026-10-05 | 4 | 24d | 0d |  |  |  |  | 1.1.1.2 | APR; SOL |
| 6 | 1.1.1.3 | Tramitación y negociación de la aceptación del calendario y alcance por el cliente |  | 1d | 2026-10-06 | 2026-10-06 | 5 | 24d | 22d |  |  |  |  | 1.1.1.3 | ACE-LB |
| 7 | 1.1.1.4 | Aprobación del Plan de Dirección y Líneas Bases | milestone | 0d | 2026-11-06 | 2026-11-06 | 6 | 61d |  | start no earlier than 2026-11-06 |  |  |  |  |  |
| 8 | 1.1.2 | **Dirección y seguimiento del Sprint 1** |  | 10d | 2026-11-09 | 2026-11-20 |  | 2d |  |  |  | 60h | 3,600 | 1.1.2 |  |
| 9 | 1.1.2.1 | Inicio del Sprint 1 | milestone | 0d | 2026-11-09 | 2026-11-09 | 6 | 2d | 0d | start no earlier than 2026-11-09 |  |  |  | 1.1.2.2 |  |
| 10 | 1.1.2.2 | Dirección y seguimiento del Sprint 1 |  | 10d | 2026-11-09 | 2026-11-20 | 9 | 2d | 0d |  | Jefe de proyecto - 2026 | 60h | 3,600 | 1.1.2.1 | SPR; ISV |
| 11 | 1.1.3 | **Dirección y seguimiento del Sprint 2** |  | 10d | 2026-11-23 | 2026-12-04 |  | 2d |  |  |  |  |  | 1.1.3 |  |
| 12 | 1.1.3.1 | Inicio Sprint 2 | milestone | 0d | 2026-11-23 | 2026-11-23 | 10 | 2d | 0d | start no earlier than 2026-11-23 |  |  |  | 1.1.3.2 |  |
| 13 | 1.1.3.2 | Dirección y seguimiento del Sprint 2 |  | 10d | 2026-11-23 | 2026-12-04 | 12 | 2d | 0d |  |  |  |  | 1.1.3.1 | SPR; ISV |
| 14 | 1.1.4 | **Dirección y seguimiento del Sprint 3** |  | 9d | 2026-12-07 | 2026-12-18 |  | 2d |  |  |  |  |  | 1.1.4 |  |
| 15 | 1.1.4.1 | Inicio Sprint 3 | milestone | 0d | 2026-12-07 | 2026-12-07 | 13 | 2d | 0d | start no earlier than 2026-12-07 |  |  |  | 1.1.4.2 |  |
| 16 | 1.1.4.2 | Dirección y seguimiento del Sprint 3 |  | 9d | 2026-12-07 | 2026-12-18 | 15 | 2d | 0d |  |  |  |  | 1.1.4.1 | SPR; ISV |
| 17 | 1.1.5 | **Dirección y seguimiento del Sprint 4** |  | 7d | 2026-12-21 | 2027-01-08 |  | 2d |  |  |  |  |  | 1.1.5 |  |
| 18 | 1.1.5.1 | Inicio Sprint 4 | milestone | 0d | 2026-12-21 | 2026-12-21 | 16 | 2d | 0d | start no earlier than 2026-12-21 |  |  |  | 1.1.5.2 |  |
| 19 | 1.1.5.2 | Dirección y seguimiento del Sprint 4 |  | 7d | 2026-12-21 | 2027-01-08 | 18 | 2d | 0d |  |  |  |  | 1.1.5.1 | SPR; ISV |
| 20 | 1.1.6 | **Dirección y seguimiento del Sprint 5** |  | 10d | 2027-01-11 | 2027-01-22 |  | 2d | 0d |  |  |  |  | 1.1.6 |  |
| 21 | 1.1.6.1 | Inicio Sprint 5 | milestone | 0d | 2027-01-11 | 2027-01-11 | 19 | 2d | 0d | start no earlier than 2027-01-11 |  |  |  | 1.1.6.2 |  |
| 22 | 1.1.6.2 | Dirección y seguimiento del Sprint 5 |  | 10d | 2027-01-11 | 2027-01-22 | 21 | 2d | 0d |  |  |  |  | 1.1.6.1 | SPR; ISV |
| 23 | 1.1.7 | **Dirección y seguimiento del Sprint 6** |  | 10d | 2027-01-25 | 2027-02-05 |  | 2d |  |  |  |  |  | 1.1.7 |  |
| 24 | 1.1.7.1 | Inicio Sprint 6 | milestone | 0d | 2027-01-25 | 2027-01-25 | 22 | 2d | 0d | start no earlier than 2027-01-25 |  |  |  | 1.1.7.2 |  |
| 25 | 1.1.7.2 | Dirección y seguimiento del Sprint 6 |  | 10d | 2027-01-25 | 2027-02-05 | 24 | 2d | 0d |  |  |  |  | 1.1.7.1 | SPR; ISV |

Notes:
- 1: Text10: TSL-2627 TuSuper en Línea
- 2: Text10: Dirección del Proyecto
- 3: Text10: Planificación y gestión de la planificación
- 4: Text10: Comienzo del Proyecto
- 5: Text10: Elaboración del Plan de Dirección del Proyecto, Alcance, EDT y Cronograma
- 6: Text10: Tramitación y negociación de la aceptación del calendario y alcance por el cliente
- 8: Text10: Dirección y seguimiento del Sprint 1
- 9: Text10: Inicio del Sprint 1
- 10: Text10: Dirección y seguimiento del Sprint 1
- 11: Text10: Dirección y seguimiento del Sprint 2
- 12: Text10: Inicio Sprint 2
- 13: Text10: Dirección y seguimiento del Sprint 2
- 14: Text10: Dirección y seguimiento del Sprint 3
- 15: Text10: Inicio Sprint 3
- 16: Text10: Dirección y seguimiento del Sprint 3
- 17: Text10: Dirección y seguimiento del Sprint 4
- 18: Text10: Inicio Sprint 4
- 19: Text10: Dirección y seguimiento del Sprint 4
- 20: Text10: Dirección y seguimiento del Sprint 5
- 21: Text10: Inicio Sprint 5
- 22: Text10: Dirección y seguimiento del Sprint 5
- 23: Text10: Dirección y seguimiento del Sprint 6
- 24: Text10: Inicio Sprint 6
- 25: Text10: Dirección y seguimiento del Sprint 6

| ID | WBS | Task | Type | Duration | Start | Finish | Predecessors | Total slack | Free slack | Constraint | Resources | Work | Cost | Text11 | Text3 | Text1 |
| --- | --- | --- | --- | --- | --- | --- | --- | --- | --- | --- | --- | --- | --- | --- | --- | --- |
| 26 | 1.1.8 | **Traspaso al servicio de mantenimiento completado** |  | 1d | 2027-02-08 | 2027-02-08 |  | 3d |  |  |  |  |  | 1.1.8 |  |  |
| 27 | 1.1.8.1 | Traspaso al servicio de mantenimiento completado |  | 1d | 2027-02-08 | 2027-02-08 | 25 | 3d |  |  |  |  |  | 1.1.8.1 |  |  |
| 28 | 1.1.9 | **Cierre del proyecto aprobado y completado** |  | 4d? | 2027-02-08 | 2027-02-12 |  | 0d |  |  |  |  |  | 1.1.9 |  |  |
| 29 | 1.1.9.1 | Elaboración del Informe de Cierre y Lecciones Aprendidas |  | 1d | 2027-02-08 | 2027-02-08 | 25 | 2d | 0d |  |  |  |  | 1.1.9.1 | CPR |  |
| 30 | 1.1.9.2 | Cierre del proyecto aprobado y completado |  | 1d? | 2027-02-09 | 2027-02-09 | 29 | 2d |  |  |  |  |  | 1.1.9.2 | CPR |  |
| 31 | 1.1.9.3 | Cierre del proyecto | milestone | 0d | 2027-02-12 | 2027-02-12 | 30 | 0d |  | start no earlier than 2027-02-12 |  |  |  | 1.1.9.3 |  |  |
| 32 | 1.2 | **Adquisiciones** |  | 24d? | 2026-11-06 | 2026-12-11 |  | 37d |  |  |  |  |  | 1.6 |  |  |
| 33 | 1.2.1 | **Contrato del conector con ERP: pedido, seguimiento y aceptación** |  | 8d? | 2026-11-06 | 2026-11-18 |  | 53d |  |  |  |  |  | 1.6.1 |  |  |
| 34 | 1.2.1.1 | Pedido del conector ERP | milestone | 0d | 2026-11-06 | 2026-11-06 | 7 | 58d | 0d |  |  |  |  |  |  |  |
| 35 | 1.2.1.2 | Tramitación del Pedido del conector ERP tramitado |  | 1d? | 2026-11-06 | 2026-11-06 | 34 | 58d | 0d |  |  |  |  | 1.6.1.1 | PED |  |
| 36 | 1.2.1.3 | Primer pago (40%) | milestone | 0d | 2026-11-09 | 2026-11-09 | 35 | 58d | 0d | start no earlier than 2026-11-09 |  |  |  | 1.6.1.4 | CON |  |
| 37 | 1.2.1.4 | Seguimiento del proveedor del conector |  | 1d? | 2026-11-09 | 2026-11-09 | 36 | 58d | 0d |  |  |  |  | 1.6.1.2 | SEG |  |
| 38 | 1.2.1.5 | Conector recibido y aceptado formalmente |  | 1d? | 2026-11-10 | 2026-11-10 | 37 | 58d | 5d |  |  |  |  | 1.6.1.3 | ACO |  |
| 39 | 1.2.1.6 | Segundo pago (60%) con Retención 10% | milestone | 0d | 2026-11-18 | 2026-11-18 | 38 | 53d |  | start no earlier than 2026-11-18 |  |  |  |  |  |  |
| 40 | 1.2.2 | **Encargo de documentación de uso y formación: seguimiento y aceptación** |  | 24d? | 2026-11-06 | 2026-12-11 |  | 37d |  |  |  |  |  | 1.6.2 |  |  |
| 41 | 1.2.2.1 | Encargo de documentación y formación realizado |  | 1d? | 2026-11-06 | 2026-11-06 | 7 | 60d | 0d |  |  |  |  | 1.6.2.1 | EFO |  |
| 42 | 1.2.2.2 | Encargo de documentación | milestone | 0d | 2026-11-06 | 2026-11-06 | 41 | 60d | 23d | start no earlier than 2026-11-06 |  |  |  |  |  |  |
| 43 | 1.2.2.3 | Documentación entregada y acceso a preproducción habilitado para Formación | milestone | 0d | 2026-12-11 | 2026-12-11 | 42 | 37d |  | start no earlier than 2026-12-11 |  |  |  | 1.6.2.2 | DFO |  |
| 44 | 1.3 | **Integración con ERP · ENT-02** |  | 30d? | 2026-11-09 | 2026-12-21 |  | 30d |  |  |  | 30h | 1,470 | 1.3 |  |  |
| 45 | 1.3.1 | **Sprint 1 · Especificación de interfaz ERP acordada (EP-04)** |  | 1d? | 2026-11-09 | 2026-11-09 |  | 59d |  |  |  | 12h | 570 | 1.3.1 |  |  |
| 46 | 1.3.1.1 | Solcitud de Acceso a los datos del ERP | milestone | 0d | 2026-11-09 | 2026-11-09 |  | 59d | 0d | start no earlier than 2026-11-09 |  |  |  |  |  |  |
| 47 | 1.3.1.2 | Gestión Solcitud de Acceso a los datos del ERP |  | 1d? | 2026-11-09 | 2026-11-09 | 46 | 59d |  |  |  |  |  |  |  |  |
| 48 | 1.3.1.3 | Sprint 1 · Especificación de interfaz ERP acordada (EP-04) |  | 1d? | 2026-11-09 | 2026-11-09 | 9 | 59d |  |  | Arquitecto de software - 2026; Diseñador UX - 2026 | 12h | 570 | 1.3.1.1 |  | EP-04 |
| 49 | 1.3.2 | **Sprint 2 · Adaptación propia y ensayos con datos simulados (EP-04)** |  | 1d? | 2026-11-23 | 2026-11-23 |  | 49d |  |  |  | 6h | 300 | 1.3.2 |  |  |
| 50 | 1.3.2.1 | Sprint 2 · Adaptación propia y ensayos con datos simulados (EP-04) |  | 1d? | 2026-11-23 | 2026-11-23 | 12 | 49d |  |  | Técncio de sistemas - 2026 | 6h | 300 | 1.3.2.1 |  | EP-04 |

Notes:
- 26: Text10: Traspaso al servicio de mantenimiento completado
- 27: Text10: Traspaso al servicio de mantenimiento completado
- 28: Text10: Cierre del proyecto aprobado y completado
- 29: Text10: Elaboración del Informe de Cierre y Lecciones Aprendidas
- 30: Text10: Cierre del proyecto aprobado y completado
- 31: Text10: Cierre del proyecto
- 32: Text10: Adquisiciones
- 33: Text10: Contrato del conector con ERP: pedido, seguimiento y aceptación
- 35: Text10: Pedido del conector ERP tramitado
- 36: Text10: Pago del control del conector HITO (TDB)
- 37: Text10: Seguimiento del proveedor del conector
- 38: Text10: Conector recibido y aceptado formalmente
- 40: Text10: Encargo de documentación de uso y formación: seguimiento y aceptación
- 41: Text10: Encargo de documentación y formación realizado
- 43: Text10: Documentación entregada y acceso a preproducción habilitado para Formación
- 44: Text10: Integración con ERP · ENT-02
- 45: Text10: Sprint 1 · Especificación de interfaz ERP acordada (EP-04)
- 48: Text10: Sprint 1 · Especificación de interfaz ERP acordada (EP-04)
- 49: Text10: Sprint 2 · Adaptación propia y ensayos con datos simulados (EP-04)
- 50: Text10: Sprint 2 · Adaptación propia y ensayos con datos simulados (EP-04)

| ID | WBS | Task | Type | Duration | Start | Finish | Predecessors | Total slack | Free slack | Constraint | Resources | Work | Cost | Text11 | Text1 | Text3 |
| --- | --- | --- | --- | --- | --- | --- | --- | --- | --- | --- | --- | --- | --- | --- | --- | --- |
| 51 | 1.3.3 | **Sprint 3 · Conector integrado, carga inicial y pruebas reales completadas (EP-04)** |  | 8d? | 2026-12-07 | 2026-12-18 |  | 32d |  |  |  | 6h | 300 | 1.3.3 |  |  |
| 52 | 1.3.3.1 | Sprint 3 · Conector integrado, carga inicial y pruebas reales completadas (EP-04) |  | 1d? | 2026-12-07 | 2026-12-07 | 15 | 38d | 7d |  | Técncio de sistemas - 2026 | 6h | 300 | 1.3.3.1 | EP-04 |  |
| 53 | 1.3.3.2 | Aceptación del Conector | milestone | 0d | 2026-12-18 | 2026-12-18 | 52, 38 | 32d |  | start no earlier than 2026-12-18 |  |  |  |  | EP-04 | ACO |
| 54 | 1.3.4 | **Sprint 4 · Sincronización comprobada y carga productiva de 32 tiendas (EP-04)** |  | 1d? | 2026-12-21 | 2026-12-21 |  | 30d |  |  |  | 6h | 300 | 1.3.4 |  |  |
| 55 | 1.3.4.1 | Sprint 4 · Sincronización comprobada y carga productiva de 32 tiendas (EP-04) |  | 1d? | 2026-12-21 | 2026-12-21 | 18 | 30d |  |  | Técncio de sistemas - 2026 | 6h | 300 | 1.3.4.1 | EP-04 |  |
| 56 | 1.4 | **Plataforma de compra en línea · ENT-01** |  | 71d? | 2026-10-05 | 2027-01-25 |  | 13d |  |  |  | 204h | 7,470 | 1.2 |  |  |
| 57 | 1.4.1 | **Planificación** |  | 27d? | 2026-10-05 | 2026-11-11 |  | 56d |  |  |  | 24h | 1,080 | 1.2.1 |  |  |
| 58 | 1.4.1.1 | **Especificación funcional común y criterios de aceptación acordados (EP-01)** |  | 25d? | 2026-10-05 | 2026-11-09 |  | 56d | 0d |  |  | 12h | 510 | 1.2.1.1 |  |  |
| 59 | 1.4.1.1.1 | Se Solicitó a TuSuper el alta en la pasarela de pago | milestone | 0d | 2026-10-05 | 2026-10-05 |  | 80d | 24d |  |  |  |  |  | EP-01 |  |
| 60 | 1.4.1.1.2 | Solicitud de Franjas de Entrega, zonas de reparto y repartidores y acceso a Datos ERP | milestone | 0d | 2026-11-09 | 2026-11-09 |  | 56d | 0d | start no earlier than 2026-11-09 |  |  |  |  | EP-03 |  |
| 61 | 1.4.1.1.3 | Gestión de la Solicitud de Franjas de Entrega, zonas de reparto y repartidores y acceso a Datos ERP |  | 1d? | 2026-11-09 | 2026-11-09 | 60 | 56d | 9d |  |  |  |  |  | EP-03 |  |
| 62 | 1.4.1.1.4 | Solicitud de contrato a Jurídico sobre Taracera como encargada de procesamiento de datos de TuSuper | milestone | 0d | 2026-10-28 | 2026-10-28 |  | 64d | 0d | start no earlier than 2026-10-28 |  |  |  |  |  |  |
| 63 | 1.4.1.1.5 | Gestión de la Solicitud de contrato a Jurídico sobre Taracera como encargada de procesamiento de datos de TuSuper |  | 1d? | 2026-10-28 | 2026-10-28 | 62 | 64d |  |  |  |  |  |  |  |  |
| 64 | 1.4.1.1.6 | Especificación funcional común y criterios de aceptación acordados (EP-01) |  | 1d | 2026-11-09 | 2026-11-09 | 9, 59 | 56d | 0d |  | Analista Funcional - 2026; Diseñador UX - 2026 | 12h | 510 | 1.2.1.1.1 | EP-01 |  |
| 65 | 1.4.1.2 | **Sistema de diseño e interfaz común preparados (EP-02)** |  | 1d? | 2026-11-10 | 2026-11-10 |  | 56d |  |  |  | 12h | 570 | 1.2.1.2 |  |  |
| 66 | 1.4.1.2.1 | Sistema de diseño e interfaz común preparados (EP-02) |  | 1d? | 2026-11-10 | 2026-11-10 | 64 | 56d | 0d |  | Arquitecto de software - 2026; Diseñador UX - 2026 | 12h | 570 | 1.2.1.2.1 | EP-02 |  |
| 67 | 1.4.1.3 | **Arquitectura técnica de la plataforma diseñada (EP-03)** |  | 1d? | 2026-11-11 | 2026-11-11 |  | 56d | 0d |  |  |  |  | 1.2.1.3 |  |  |
| 68 | 1.4.1.3.1 | Arquitectura técnica de la plataforma diseñada (EP-03) |  | 1d? | 2026-11-11 | 2026-11-11 | 66 | 56d |  |  |  |  |  | 1.2.1.3.1 | EP-03 |  |
| 69 | 1.4.2 | **Sprint 1 · 09-20/11/2026** |  | 3d? | 2026-11-10 | 2026-11-12 |  | 56d |  |  |  | 30h | 1,320 | 1.2.2 |  |  |
| 70 | 1.4.2.1 | **RF-01 y RF-03 especificados y diseñados (E)** |  | 1d? | 2026-11-10 | 2026-11-10 |  | 56d |  |  |  | 12h | 510 | 1.2.2.1 |  |  |
| 71 | 1.4.2.1.1 | RF-01 y RF-03 especificados y diseñados |  | 1d? | 2026-11-10 | 2026-11-10 | 64, 9 | 56d | 8d |  | Analista Funcional - 2026; Diseñador UX - 2026 | 12h | 510 | 1.2.2.1.1 | RF-01;RF-03 |  |
| 72 | 1.4.2.2 | **RF-06 especificado y diseñado (E)** |  | 1d? | 2026-11-10 | 2026-11-10 |  | 56d |  |  |  | 12h | 510 | 1.2.2.2 |  |  |
| 73 | 1.4.2.2.1 | RF-06 especificado y diseñado |  | 1d? | 2026-11-10 | 2026-11-10 | 58 | 56d | 8d |  | Analista Funcional - 2026; Diseñador UX - 2026 | 12h | 510 | 1.2.2.2.1 | RF-06 |  |
| 74 | 1.4.2.3 | **Entornos de desarrollo y CI/CD operativos (EP-03)** |  | 1d? | 2026-11-12 | 2026-11-12 |  | 56d |  |  |  | 6h | 300 | 1.2.2.3 |  |  |
| 75 | 1.4.2.3.1 | Entornos de desarrollo y CI/CD operativos (EP-03) |  | 1d? | 2026-11-12 | 2026-11-12 | 67 | 56d |  |  | Técncio de sistemas - 2026 | 6h | 300 | 1.2.2.3.1 | EP-03 |  |

Notes:
- 51: Text10: Sprint 3 · Conector integrado, carga inicial y pruebas reales completadas (EP-04)
- 52: Text10: Sprint 3 · Conector integrado, carga inicial y pruebas reales completadas (EP-04)
- 54: Text10: Sprint 4 · Sincronización comprobada y carga productiva de 32 tiendas (EP-04)
- 55: Text10: Sprint 4 · Sincronización comprobada y carga productiva de 32 tiendas (EP-04)
- 56: Text10: Plataforma de compra en línea · ENT-01
- 57: Text10: Planificación
- 58: Text10: Especificación funcional común y criterios de aceptación acordados (EP-01)
- 64: Text10: Especificación funcional común y criterios de aceptación acordados (EP-01)
- 65: Text10: Sistema de diseño e interfaz común preparados (EP-02)
- 66: Text10: Sistema de diseño e interfaz común preparados (EP-02)
- 67: Text10: Arquitectura técnica de la plataforma diseñada (EP-03)
- 68: Text10: Arquitectura técnica de la plataforma diseñada (EP-03)
- 69: Text10: Sprint 1 · 09-20/11/2026
- 70: Text10: RF-01 y RF-03 especificados y diseñados (E)
- 71: Text10: RF-01 y RF-03 especificados y diseñados
- 72: Text10: RF-06 especificado y diseñado (E)
- 73: Text10: RF-06 especificado y diseñado
- 74: Text10: Entornos de desarrollo y CI/CD operativos (EP-03)
- 75: Text10: Entornos de desarrollo y CI/CD operativos (EP-03)

| ID | WBS | Task | Type | Duration | Start | Finish | Predecessors | Total slack | Free slack | Constraint | Resources | Work | Cost | Text10 | Text11 | Text1 |
| --- | --- | --- | --- | --- | --- | --- | --- | --- | --- | --- | --- | --- | --- | --- | --- | --- |
| 76 | 1.4.3 | **Sprint 2 · 23/11-04/12/2026** |  | 1d? | 2026-11-23 | 2026-11-23 |  | 46d |  |  |  | 36h | 1,362 | Sprint 2 · 23/11-04/12/2026 | 1.2.3 |  |
| 77 | 1.4.3.1 | **RF-01 y RF-03 construidos e integrados (C)** |  | 1d? | 2026-11-23 | 2026-11-23 |  | 48d |  |  |  | 12h | 342 | RF-01 y RF-03 construidos e integrados (C) | 1.2.3.1 |  |
| 78 | 1.4.3.1.1 | RF-01 y RF-03 construidos e integrados |  | 1d? | 2026-11-23 | 2026-11-23 | 71, 12 | 48d | 18d |  | Desarrollador - 2026; Desarrollador Junior - 2026 | 12h | 342 | RF-01 y RF-03 construidos e integrados | 1.2.3.1.1 | RF-01;RF-03 |
| 79 | 1.4.3.2 | **RF-02 y RF-04 especificados y diseñados (E)** |  | 1d? | 2026-11-23 | 2026-11-23 |  | 46d |  |  |  | 12h | 510 | RF-02 y RF-04 especificados y diseñados (E) | 1.2.3.2 |  |
| 80 | 1.4.3.2.1 | RF-02 y RF-04 especificados y diseñados |  | 1d? | 2026-11-23 | 2026-11-23 | 12 | 46d | 9d |  | Analista Funcional - 2026; Diseñador UX - 2026 | 12h | 510 | RF-02 y RF-04 especificados y diseñados | 1.2.3.2.1 | RF-02;RF-04 |
| 81 | 1.4.3.3 | **RF-06 construido e integrado (C)** |  | 1d? | 2026-11-23 | 2026-11-23 |  | 48d |  |  |  |  |  | RF-06 construido e integrado (C) | 1.2.3.3 |  |
| 82 | 1.4.3.3.1 | RF-06 construido e integrado |  | 1d? | 2026-11-23 | 2026-11-23 | 73, 12 | 48d | 18d |  |  |  |  | RF-06 construido e integrado | 1.2.3.3.1 |  |
| 83 | 1.4.3.4 | **RF-05 y RF-07 especificados y diseñados (E)** |  | 1d? | 2026-11-23 | 2026-11-23 |  | 47d |  |  |  | 12h | 510 | RF-05 y RF-07 especificados y diseñados (E) | 1.2.3.4 |  |
| 84 | 1.4.3.4.1 | Recepción de Franjas y Repartidores | milestone | 0d | 2026-11-23 | 2026-11-23 | 61 | 49d | 0d | start no earlier than 2026-11-23 |  |  |  |  |  | RF-05 |
| 85 | 1.4.3.4.2 | RF-05 especificados y diseñados |  | 1d? | 2026-11-23 | 2026-11-23 | 84, 12 | 49d |  |  |  |  |  |  |  |  |
| 86 | 1.4.3.4.3 | RF-07 especificados y diseñados |  | 1d? | 2026-11-23 | 2026-11-23 | 12 | 47d | 9d |  | Analista Funcional - 2026; Diseñador UX - 2026 | 12h | 510 | RF-05 y RF-07 especificados y diseñados | 1.2.3.4.1 | RF-05;RF-07 |
| 87 | 1.4.4 | **Sprint 3 · 07-18/12/2026** |  | 9d? | 2026-12-07 | 2026-12-18 |  | 31d |  |  |  | 48h | 1,470 | Sprint 3 · 07-18/12/2026 | 1.2.4 |  |
| 88 | 1.4.4.1 | **RF-01 verificado (V)** |  | 1d? | 2026-12-07 | 2026-12-07 |  | 39d |  |  |  | 6h | 222 | RF-01 verificado (V) | 1.2.4.1 |  |
| 89 | 1.4.4.1.1 | RF-01 verificado (V) |  | 1d? | 2026-12-07 | 2026-12-07 | 15, 71 | 39d |  |  | Técnico de Calidad - 2026 | 6h | 222 | RF-01 verificado (V) | 1.2.4.1.1 | RF-01 |
| 90 | 1.4.4.2 | **RF-04 construido e integrado (C)** |  | 9d? | 2026-12-07 | 2026-12-18 |  | 31d |  |  |  | 12h | 342 | RF-04 construido e integrado (C) | 1.2.4.2 |  |
| 91 | 1.4.4.2.1 | RF-04 construido e integrado |  | 1d? | 2026-12-07 | 2026-12-07 | 80, 15 | 37d | 6d |  | Desarrollador - 2026; Desarrollador Junior - 2026 | 12h | 342 | RF-04 construido e integrado | 1.2.4.2.1 | RF-04 |
| 92 | 1.4.4.2.2 | RF-04 pasarela de pago construida |  | 1d? | 2026-12-17 | 2026-12-17 | 91 | 31d | 0d | start no earlier than 2026-12-17 |  |  |  |  |  |  |
| 93 | 1.4.4.2.3 | Solicitud de auditoria a TuSuper |  | 1d? | 2026-12-18 | 2026-12-18 | 92 | 31d |  |  |  |  |  |  |  |  |
| 94 | 1.4.4.3 | **RF-05 construido e integrado (C)** |  | 1d? | 2026-12-07 | 2026-12-07 |  | 38d | 25d |  |  | 12h | 342 | RF-05 construido e integrado (C) | 1.2.4.3 |  |
| 95 | 1.4.4.3.1 | RF-05 construido e integrado |  | 1d? | 2026-12-07 | 2026-12-07 | 86, 15 | 38d | 8d |  | Desarrollador - 2026; Desarrollador Junior - 2026 | 12h | 342 | RF-05 construido e integrado | 1.2.4.3.1 | RF-05 |
| 96 | 1.4.4.4 | **RF-08 especificado y diseñado (E)** |  | 1d? | 2026-12-07 | 2026-12-07 |  | 38d |  |  |  | 12h | 342 | RF-08 especificado y diseñado (E) | 1.2.4.4 |  |
| 97 | 1.4.4.4.1 | RF-08 especificado y diseñado |  | 1d? | 2026-12-07 | 2026-12-07 | 15 | 38d | 15d |  | Desarrollador - 2026; Desarrollador Junior - 2026 | 12h | 342 | RF-08 especificado y diseñado | 1.2.4.4.1 | RF-08 |
| 98 | 1.4.4.5 | **Plan y escenarios de pruebas de sistema preparados (EP-05)** |  | 1d? | 2026-12-07 | 2026-12-07 |  | 36d |  |  |  | 6h | 222 | Plan y escenarios de pruebas de sistema preparados (EP-05) | 1.2.4.5 |  |
| 99 | 1.4.4.5.1 | Plan y escenarios de pruebas de sistema preparados (EP-05) |  | 1d? | 2026-12-07 | 2026-12-07 | 15 | 36d | 15d |  | Técnico de Calidad - 2026 | 6h | 222 | Plan y escenarios de pruebas de sistema preparados (EP-05) | 1.2.4.5.1 | EP-05 |

| ID | WBS | Task | Type | Duration | Start | Finish | Predecessors | Total slack | Free slack | Constraint | Resources | Work | Cost | Text11 | Text1 | Text3 |
| --- | --- | --- | --- | --- | --- | --- | --- | --- | --- | --- | --- | --- | --- | --- | --- | --- |
| 100 | 1.4.5 | **Sprint 4 · 21/12/2026–08/01/2027** |  | 1d? | 2026-12-21 | 2026-12-21 |  | 29d |  |  |  | 24h | 786 | 1.2.5 |  |  |
| 101 | 1.4.5.1 | **RF-03 verificado (V)** |  | 1d? | 2026-12-21 | 2026-12-21 |  | 30d |  |  |  | 6h | 222 | 1.2.5.1 |  |  |
| 102 | 1.4.5.1.1 | RF-03 verificado (V) |  | 1d? | 2026-12-21 | 2026-12-21 | 18, 78 | 30d |  |  | Técnico de Calidad - 2026 | 6h | 222 | 1.2.5.1.1 | RF-03 |  |
| 103 | 1.4.5.2 | **RF-02 construido e integrado (C)** |  | 1d? | 2026-12-21 | 2026-12-21 |  | 29d |  |  |  | 12h | 342 | 1.2.5.2 |  |  |
| 104 | 1.4.5.2.1 | RF-02 construido e integrado |  | 1d? | 2026-12-21 | 2026-12-21 | 80, 18 | 29d | 6d |  | Desarrollador - 2026; Desarrollador Junior - 2026 | 12h | 342 | 1.2.5.2.1 | RF-02 |  |
| 105 | 1.4.5.3 | **RF-05 y RF-06 verificados (V)** |  | 1d? | 2026-12-21 | 2026-12-21 |  | 30d |  |  |  | 6h | 222 | 1.2.5.3 |  |  |
| 106 | 1.4.5.3.1 | RF-05 y RF-06 verificados |  | 1d? | 2026-12-21 | 2026-12-21 | 95, 82, 52, 18 | 30d |  |  | Técnico de Calidad - 2026 | 6h | 222 | 1.2.5.3.1 | RF-05;RF-06 |  |
| 107 | 1.4.6 | **Sprint 5 · 11–22/01/2027** |  | 11d? | 2027-01-11 | 2027-01-25 |  | 13d |  |  |  | 30h | 1,008 | 1.2.6 |  |  |
| 108 | 1.4.6.1 | **RF-02 y RF-04 verificados (V)** |  | 11d? | 2027-01-11 | 2027-01-25 |  | 13d |  |  |  | 6h | 222 | 1.2.6.1 |  |  |
| 109 | 1.4.6.1.1 | RF-02 verificado |  | 1d? | 2027-01-25 | 2027-01-25 | 94, 20 | 13d |  |  |  |  |  |  | RF-02 |  |
| 110 | 1.4.6.1.2 | RF-04 Recepción de Credenciales de la pasarela | milestone | 0d | 2027-01-13 | 2027-01-13 |  | 22d |  | start no earlier than 2027-01-13 |  |  |  |  |  | 81 |
| 111 | 1.4.6.1.3 | RF-04 verificados |  | 1d? | 2027-01-11 | 2027-01-11 | 21, 104, 52 | 23d |  |  | Técnico de Calidad - 2026 | 6h | 222 | 1.2.6.1.1 | RF-04 | 81;99 |
| 112 | 1.4.6.2 | **RF-07 y RF-08 construidos e integrados (C)** |  | 1d? | 2027-01-11 | 2027-01-11 |  | 23d |  |  |  | 12h | 342 | 1.2.6.2 |  |  |
| 113 | 1.4.6.2.1 | RF-07 y RF-08 construidos e integrados |  | 1d? | 2027-01-11 | 2027-01-11 | 86, 97, 21 | 23d |  |  | Desarrollador - 2026; Desarrollador Junior - 2026 | 12h | 342 | 1.2.6.2.1 | RF-07;RF-08 |  |
| 114 | 1.4.6.3 | **Pruebas de sistema, carga y seguridad ejecutadas (EP-05)** |  | 1d? | 2027-01-11 | 2027-01-11 |  | 21d |  |  |  | 6h | 222 | 1.2.6.3 |  |  |
| 115 | 1.4.6.3.1 | Pruebas de sistema, carga y seguridad ejecutadas (EP-05) |  | 1d? | 2027-01-11 | 2027-01-11 | 99, 21 | 21d | 0d |  | Técnico de Calidad - 2026 | 6h | 222 | 1.2.6.3.1 | EP-05 |  |
| 116 | 1.4.6.4 | **Seguimiento técnico del piloto: primer tramo completado (EP-05)** |  | 1d? | 2027-01-12 | 2027-01-12 |  | 21d |  |  |  | 6h | 222 | 1.2.6.4 |  |  |
| 117 | 1.4.6.4.1 | Seguimiento técnico del piloto: primer tramo completado (EP-05) |  | 1d? | 2027-01-12 | 2027-01-12 | 115, 21 | 21d | 8d |  | Técnico de Calidad - 2026 | 6h | 222 | 1.2.6.4.1 | EP-05 |  |
| 118 | 1.4.7 | **Sprint 6 · 25/01–05/02/2027** |  | 1d? | 2027-01-25 | 2027-01-25 |  | 13d |  |  |  | 12h | 444 | 1.2.7 |  |  |
| 119 | 1.4.7.1 | **RF-07 y RF-08 verificados (V)** |  | 1d? | 2027-01-25 | 2027-01-25 |  | 13d |  |  |  | 6h | 222 | 1.2.7.1 |  |  |
| 120 | 1.4.7.1.1 | RF-07 y RF-08 verificados |  | 1d? | 2027-01-25 | 2027-01-25 | 24, 52 | 13d |  |  | Técnico de Calidad - 2026 | 6h | 222 | 1.2.7.1.1 | RF-07;RF-08 |  |
| 121 | 1.4.7.2 | **Seguimiento técnico y evidencias finales del piloto completadas (EP-05)** |  | 1d? | 2027-01-25 | 2027-01-25 |  | 13d |  |  |  | 6h | 222 | 1.2.7.2 |  |  |
| 122 | 1.4.7.2.1 | Seguimiento técnico y evidencias finales del piloto completadas (EP-05) |  | 1d? | 2027-01-25 | 2027-01-25 | 117, 24 | 13d |  |  | Técnico de Calidad - 2026 | 6h | 222 | 1.2.7.2.1 | EP-05 |  |
| 123 | 1.5 | **Documentación y formación · ENT-04** |  | 18d? | 2026-12-04 | 2027-01-11 |  | 23d |  |  |  |  |  | 1.5 |  |  |
| 124 | 1.5.1 | **Sprint 3 · Acceso Preproducción y Documentación técnica y funcional entregada a Formación (EP-07)** |  | 3d? | 2026-12-04 | 2026-12-09 |  | 38d |  |  |  |  |  | 1.5.1 |  |  |
| 125 | 1.5.1.1 | Solicitud de las listas del personal a formar | milestone | 0d | 2026-12-04 | 2026-12-04 |  | 40d | 0d | start no earlier than 2026-12-04 |  |  |  |  |  |  |
| 126 | 1.5.1.2 | Gestión de la Solicitud de las listas del personal a formar |  | 1d? | 2026-12-04 | 2026-12-04 | 125 | 40d |  |  |  |  |  |  |  |  |
| 127 | 1.5.1.3 | Sprint 3 · Documentación técnica y funcional entregada a Formación (EP-07) |  | 1d? | 2026-12-07 | 2026-12-07 | 15 | 38d | 0d |  |  |  |  | 1.5.1.1 | EP-07 |  |
| 128 | 1.5.1.4 | Sprint 3 · Acceso a preproducción habilitado para Formación (EP-07) |  | 1d? | 2026-12-09 | 2026-12-09 | 127, 15 | 38d |  |  |  |  |  | 1.5.2.1 | EP-07 |  |

Notes:
- 100: Text10: Sprint 4 · 21/12/2026–08/01/2027
- 101: Text10: RF-03 verificado (V)
- 102: Text10: RF-03 verificado (V)
- 103: Text10: RF-02 construido e integrado (C)
- 104: Text10: RF-02 construido e integrado
- 105: Text10: RF-05 y RF-06 verificados (V)
- 106: Text10: RF-05 y RF-06 verificados
- 107: Text10: Sprint 5 · 11–22/01/2027
- 108: Text10: RF-02 y RF-04 verificados (V)
- 111: Text10: RF-02 y RF-04 verificados
- 112: Text10: RF-07 y RF-08 construidos e integrados (C)
- 113: Text10: RF-07 y RF-08 construidos e integrados
- 114: Text10: Pruebas de sistema, carga y seguridad ejecutadas (EP-05)
- 115: Text10: Pruebas de sistema, carga y seguridad ejecutadas (EP-05)
- 116: Text10: Seguimiento técnico del piloto: primer tramocompletado (EP-05)
- 117: Text10: Seguimiento técnico del piloto: primer tramo completado (EP-05)
- 118: Text10: Sprint 6 · 25/01–05/02/2027
- 119: Text10: RF-07 y RF-08 verificados (V)
- 120: Text10: RF-07 y RF-08 verificados
- 121: Text10: Seguimiento técnico y evidencias finales del piloto completadas (EP-05)
- 122: Text10: Seguimiento técnico y evidencias finales del piloto completadas (EP-05)
- 123: Text10: Documentación y formación · ENT-04
- 124: Text10: Sprint 3 · Documentación técnica y funcional entregada a Formación (EP-07)
- 127: Text10: Sprint 3 · Documentación técnica y funcional entregada a Formación (EP-07)
- 128: Text10: Sprint 3 · Acceso a preproducción habilitado para Formación (EP-07)

| ID | WBS | Task | Type | Duration | Start | Finish | Predecessors | Total slack | Free slack | Constraint | Text3 | Text11 | Text1 |
| --- | --- | --- | --- | --- | --- | --- | --- | --- | --- | --- | --- | --- | --- |
| 129 | 1.5.2 | **Sprint 5 · Formación (EP-07)** |  | 1d? | 2027-01-11 | 2027-01-11 |  | 23d |  |  |  |  |  |
| 130 | 1.5.2.1 | Recepción de la lista del personal a formar | milestone | 0d | 2027-01-11 | 2027-01-11 | 21 | 23d | 0d |  |  |  |  |
| 131 | 1.5.2.2 | Formación del personal |  | 1d? | 2027-01-11 | 2027-01-11 | 130 | 23d |  |  | DFI |  |  |
| 132 | 1.6 | **Puesta en producción · ENT-03** |  | 38d? | 2026-11-23 | 2027-01-26 |  | 12d |  |  |  | 1.4 |  |
| 133 | 1.6.1 | **Sprint 2 · Entorno de preproducción preparado (EP-06)** |  | 10d? | 2026-11-23 | 2026-12-04 |  | 40d |  |  |  | 1.4.1 |  |
| 134 | 1.6.1.1 | Solicitud de cuentas de desarrollo (app móviles) | milestone | 0d | 2026-12-04 | 2026-12-04 |  | 40d | 0d | start no earlier than 2026-12-04 |  |  |  |
| 135 | 1.6.1.2 | Gestión de la Solicitud de cuentas de desarrollo |  | 1d? | 2026-12-04 | 2026-12-04 | 12, 134 | 40d |  |  |  |  |  |
| 136 | 1.6.1.3 | Sprint 2 · Entorno de preproducción preparado (EP-06) |  | 1d? | 2026-11-23 | 2026-11-23 | 12 | 49d | 8d |  |  | 1.4.1.1 | EP-06 |
| 137 | 1.6.1.4 | Entorno de preproducción construido | milestone | 0d | 2026-12-04 | 2026-12-04 | 136 | 41d |  | start no earlier than 2026-12-04 |  |  |  |
| 138 | 1.6.2 | **Sprint 4 · Despliegue de la plataforma en tres tiendas piloto (EP-06)** |  | 5d? | 2026-12-21 | 2027-01-07 |  | 26d |  |  |  | 1.4.2 |  |
| 139 | 1.6.2.1 | Cuentas de desarrollo disponibles (app móviles) | milestone | 0d | 2026-12-21 | 2026-12-21 | 15, 134 | 30d | 0d | start no earlier than 2026-12-21 |  |  |  |
| 140 | 1.6.2.2 | Sprint 4 · Despliegue de la plataforma en tres tiendas piloto (EP-06) |  | 1d? | 2026-12-21 | 2026-12-21 | 15, 139 | 30d |  |  |  | 1.4.2.1 | EP-06 |
| 141 | 1.6.2.3 | Publicación de app móviles | milestone | 0d | 2027-01-07 | 2027-01-07 |  | 26d |  | start no earlier than 2027-01-07 |  |  |  |
| 142 | 1.6.3 | **Sprint 5 · Piloto operativo y supervisado: primer tramo (EP-06)** |  | 1d? | 2027-01-11 | 2027-01-11 |  | 23d |  |  |  | 1.4.3 |  |
| 143 | 1.6.3.1 | Sprint 5 · Piloto operativo y supervisado: primer tramo (EP-06) |  | 1d? | 2027-01-11 | 2027-01-11 | 21 | 23d |  |  |  | 1.4.3.1 | EP-06 |
| 144 | 1.6.4 | **Sprint 6 · 25/01–05/02/2027** |  | 2d? | 2027-01-25 | 2027-01-26 |  | 12d |  |  |  | 1.4.4 |  |
| 145 | 1.6.4.1 | **Piloto operativo finalizado: segundo tramo (EP-06)** |  | 1d? | 2027-01-25 | 2027-01-25 |  | 12d |  |  |  | 1.4.4.1 |  |
| 146 | 1.6.4.1.1 | Piloto operativo finalizado: segundo tramo (EP-06) |  | 1d? | 2027-01-25 | 2027-01-25 | 24 | 12d | 0d |  |  | 1.4.4.1.1 | EP-06 |
| 147 | 1.6.4.2 | **Despliegue en producción y apertura de las 32 tiendas (EP-06)** |  | 1d? | 2027-01-26 | 2027-01-26 |  | 12d |  |  |  | 1.4.4.2 |  |
| 148 | 1.6.4.2.1 | Despliegue en producción y apertura de las 32 tiendas (EP-06) |  | 1d? | 2027-01-26 | 2027-01-26 | 146 | 12d |  |  |  | 1.4.4.2.1 | EP-06 |

Notes:
- 132: Text10: Puesta en producción · ENT-03
- 133: Text10: Sprint 2 · Entorno de preproducción preparado (EP-06)
- 136: Text10: Sprint 2 · Entorno de preproducción preparado (EP-06)
- 138: Text10: Sprint 4 · Despliegue de la plataforma en tres tiendas piloto (EP-06)
- 140: Text10: Sprint 4 · Despliegue de la plataforma en tres tiendas piloto (EP-06)
- 142: Text10: Sprint 5 · Piloto operativo y supervisado: primer tramo (EP-06)
- 143: Text10: Sprint 5 · Piloto operativo y supervisado: primer tramo (EP-06)
- 144: Text10: Sprint 6 · 25/01–05/02/2027
- 145: Text10: Piloto operativo finalizado: segundo tramo (EP-06)
- 146: Text10: Piloto operativo finalizado: segundo tramo (EP-06)
- 147: Text10: Despliegue en producción y apertura de las 32 tiendas (EP-06)
- 148: Text10: Despliegue en producción y apertura de las 32 tiendas (EP-06)
