# Proyecto TSL-2627 TuSuper en Línea

Schedule from MS Project, 2026-10-05 to 2027-02-12, 6 hours a day, costs in €.

## Calendars

- Estándar: Mon-Fri 09:00-15:00; Sat-Sun off. Exceptions (off unless hours are given): 2026-10-12 (Día de la Constitución Española), 2026-12-06 (Día de la Constitución Española), 2026-12-08 (Inmaculada Concepción), 2026-12-24 to 2027-01-01 (Cierre de la consultora (NOR-20)), 2027-01-06 (Epifanía del Señor).

## Resources

| Resource | Rate |
| --- | --- |
| Jefe de proyecto - 2026 | 60 |
| Arquitecto de software - 2026 | 55 |
| Técncio de sistemas - 2026 | 50 |
| Analista Funcional - 2026 | 45 |
| Diseñador UX - 2026 | 40 |
| Técnico de Calidad - 2026 | 37 |
| Desarrollador - 2026 | 35 |
| Desarrollador Junior - 2026 | 22 |
| Jefe de proyecto - 2027 | 61.8 |
| Arquitecto de software - 2027 | 56.65 |
| Técncio de sistemas - 2027 | 51.5 |
| Analista Funcional - 2027 | 46.34 |
| Diseñador UX - 2027 | 41.2 |
| Técnico de Calidad - 2027 | 38.11 |
| Desarrollador - 2027 | 36.05 |
| Desarrollador Junior - 2027 | 22.66 |

## Schedule

| ID | WBS | Task | Type | Duration | Start | Finish | Predecessors | Total slack | Free slack | Constraint | Resources | Work | Cost | Text11 | Text3 |
| --- | --- | --- | --- | --- | --- | --- | --- | --- | --- | --- | --- | --- | --- | --- | --- |
| 1 | 1 | **TSL-2627 TuSuper en Línea** |  | 84d? | 2026-10-05 | 2027-02-12 |  | 0d |  |  |  | 1391.4h | 50,465.28 |  |  |
| 2 | 1.1 | **Dirección del Proyecto** |  | 84d? | 2026-10-05 | 2027-02-12 |  | 0d |  |  |  | 60h | 3,600 | 1.1 |  |
| 3 | 1.1.1 | **Planificación y gestión de la planificación** |  | 23d | 2026-10-05 | 2026-11-06 |  | 3d |  |  |  |  |  | 1.1.1 |  |
| 4 | 1.1.1.1 | Comienzo del Proyecto | milestone | 0d | 2026-10-05 | 2026-10-05 |  | 16d | 0d |  |  |  |  | 1.1.1.1 |  |
| 5 | 1.1.1.2 | Elaboración del Plan de Dirección del Proyecto, Alcance, EDT y Cronograma |  | 5d | 2026-10-05 | 2026-10-09 | 4 | 16d | 0d |  |  |  |  | 1.1.1.2 | APR; SOL |
| 6 | 1.1.1.3 | Tramitación y negociación de la aceptación del calendario y alcance por el cliente |  | 5d | 2026-10-13 | 2026-10-19 | 5 | 16d | 13d |  |  |  |  | 1.1.1.3 | ACE-LB |
| 7 | 1.1.1.4 | Aprobación del Plan de Dirección y Líneas Bases | milestone | 0d | 2026-11-06 | 2026-11-06 | 6 | 3d | 0d | start no earlier than 2026-11-06 |  |  |  |  |  |
| 8 | 1.1.2 | **Dirección y seguimiento del Sprint 1** |  | 10d | 2026-11-09 | 2026-11-20 |  | 2d |  |  |  | 60h | 3,600 | 1.1.2 |  |
| 9 | 1.1.2.1 | Inicio del Sprint 1 | milestone | 0d | 2026-11-09 | 2026-11-09 | 7 | 2d | 0d | start no earlier than 2026-11-09 |  |  |  | 1.1.2.2 |  |
| 10 | 1.1.2.2 | Dirección y seguimiento del Sprint 1 |  | 10d | 2026-11-09 | 2026-11-20 | 9 | 2d | 0d |  | Jefe de proyecto - 2026 | 60h | 3,600 | 1.1.2.1 | SPR; ISV |
| 11 | 1.1.3 | **Dirección y seguimiento del Sprint 2** |  | 10d | 2026-11-23 | 2026-12-04 |  | 2d |  |  |  |  |  | 1.1.3 |  |
| 12 | 1.1.3.1 | Inicio Sprint 2 | milestone | 0d | 2026-11-23 | 2026-11-23 | 10 | 2d | 0d | start no earlier than 2026-11-23 |  |  |  | 1.1.3.2 |  |
| 13 | 1.1.3.2 | Dirección y seguimiento del Sprint 2 |  | 10d | 2026-11-23 | 2026-12-04 | 12 | 2d | 0d |  |  |  |  | 1.1.3.1 | SPR; ISV |
| 14 | 1.1.4 | **Dirección y seguimiento del Sprint 3** |  | 9d | 2026-12-07 | 2026-12-18 |  | 2d |  |  |  |  |  | 1.1.4 |  |
| 15 | 1.1.4.1 | Inicio Sprint 3 | milestone | 0d | 2026-12-07 | 2026-12-07 | 13 | 2d | 0d | start no earlier than 2026-12-07 |  |  |  | 1.1.4.2 |  |
| 16 | 1.1.4.2 | Dirección y seguimiento del Sprint 3 |  | 9d | 2026-12-07 | 2026-12-18 | 15 | 2d | 0d |  |  |  |  | 1.1.4.1 | SPR; ISV |
| 17 | 1.1.5 | **Dirección y seguimiento del Sprint 4** |  | 7d | 2026-12-21 | 2027-01-08 |  | 2d |  |  |  |  |  | 1.1.5 |  |
| 18 | 1.1.5.1 | Inicio Sprint 4 | milestone | 0d | 2026-12-21 | 2026-12-21 | 16 | 2d | 0d | start no earlier than 2026-12-21 |  |  |  | 1.1.5.2 |  |
| 19 | 1.1.5.2 | Dirección y seguimiento del Sprint 4 |  | 7d | 2026-12-21 | 2027-01-08 | 18 | 2d | 0d |  |  |  |  | 1.1.5.1 | SPR; ISV |
| 20 | 1.1.6 | **Dirección y seguimiento del Sprint 5** |  | 10d | 2027-01-11 | 2027-01-22 |  | 2d | 0d |  |  |  |  | 1.1.6 |  |
| 21 | 1.1.6.1 | Inicio Sprint 5 | milestone | 0d | 2027-01-11 | 2027-01-11 | 19 | 2d | 0d | start no earlier than 2027-01-11 |  |  |  | 1.1.6.2 |  |
| 22 | 1.1.6.2 | Dirección y seguimiento del Sprint 5 |  | 10d | 2027-01-11 | 2027-01-22 | 21 | 2d | 0d |  |  |  |  | 1.1.6.1 | SPR; ISV |
| 23 | 1.1.7 | **Dirección y seguimiento del Sprint 6** |  | 10d | 2027-01-25 | 2027-02-05 |  | 2d |  |  |  |  |  | 1.1.7 |  |
| 24 | 1.1.7.1 | Inicio Sprint 6 | milestone | 0d | 2027-01-25 | 2027-01-25 | 22 | 2d | 0d | start no earlier than 2027-01-25 |  |  |  | 1.1.7.2 |  |
| 25 | 1.1.7.2 | Dirección y seguimiento del Sprint 6 |  | 10d | 2027-01-25 | 2027-02-05 | 24 | 2d | 0d |  |  |  |  | 1.1.7.1 | SPR; ISV |

Notes:
- 1: Text10: TSL-2627 TuSuper en Línea
- 2: Text10: Dirección del Proyecto
- 3: Text10: Planificación y gestión de la planificación
- 4: Text10: Comienzo del Proyecto
- 5: ·Estimación: No encontrado evidencia, luego 1/2 sprint / Text10: Elaboración del Plan de Dirección del Proyecto, Alcance, EDT y Cronograma
- 6: ·Estimación: No encontrado evidencia, luego 1/2 sprint / Text10: Tramitación y negociación de la aceptación del calendario y alcance por el cliente
- 8: Text10: Dirección y seguimiento del Sprint 1
- 9: Text10: Inicio del Sprint 1
- 10: Text10: Dirección y seguimiento del Sprint 1
- 11: Text10: Dirección y seguimiento del Sprint 2
- 12: Text10: Inicio Sprint 2
- 13: Text10: Dirección y seguimiento del Sprint 2
- 14: Text10: Dirección y seguimiento del Sprint 3
- 15: Text10: Inicio Sprint 3
- 16: Text10: Dirección y seguimiento del Sprint 3
- 17: Text10: Dirección y seguimiento del Sprint 4
- 18: Text10: Inicio Sprint 4
- 19: Text10: Dirección y seguimiento del Sprint 4
- 20: Text10: Dirección y seguimiento del Sprint 5
- 21: Text10: Inicio Sprint 5
- 22: Text10: Dirección y seguimiento del Sprint 5
- 23: Text10: Dirección y seguimiento del Sprint 6
- 24: Text10: Inicio Sprint 6
- 25: Text10: Dirección y seguimiento del Sprint 6

| ID | WBS | Task | Type | Duration | Start | Finish | Predecessors | Total slack | Free slack | Constraint | Resources | Work | Cost | Text11 | Text3 | Text1 |
| --- | --- | --- | --- | --- | --- | --- | --- | --- | --- | --- | --- | --- | --- | --- | --- | --- |
| 26 | 1.1.8 | **Traspaso al servicio de mantenimiento completado** |  | 1d | 2027-02-08 | 2027-02-08 |  | 3d |  |  |  |  |  | 1.1.8 |  |  |
| 27 | 1.1.8.1 | Traspaso al servicio de mantenimiento completado |  | 1d | 2027-02-08 | 2027-02-08 | 25 | 3d |  |  |  |  |  | 1.1.8.1 |  |  |
| 28 | 1.1.9 | **Cierre del proyecto aprobado y completado** |  | 4d? | 2027-02-08 | 2027-02-12 |  | 0d |  |  |  |  |  | 1.1.9 |  |  |
| 29 | 1.1.9.1 | Elaboración del Informe de Cierre y Lecciones Aprendidas |  | 1d | 2027-02-08 | 2027-02-08 | 25 | 2d | 0d |  |  |  |  | 1.1.9.1 | CPR |  |
| 30 | 1.1.9.2 | Cierre del proyecto aprobado y completado |  | 1d? | 2027-02-09 | 2027-02-09 | 29 | 2d |  |  |  |  |  | 1.1.9.2 | CPR |  |
| 31 | 1.1.9.3 | Cierre del proyecto | milestone | 0d | 2027-02-12 | 2027-02-12 | 30 | 0d |  | start no earlier than 2027-02-12 |  |  |  | 1.1.9.3 |  |  |
| 32 | 1.2 | **Adquisiciones** |  | 24d? | 2026-11-06 | 2026-12-11 |  | 37d |  |  |  |  |  | 1.6 |  |  |
| 33 | 1.2.1 | **Contrato del conector con ERP: pedido, seguimiento y aceptación** |  | 8d? | 2026-11-06 | 2026-11-18 |  | 52d |  |  |  |  |  | 1.6.1 |  |  |
| 34 | 1.2.1.1 | Pedido del conector ERP | milestone | 0d | 2026-11-06 | 2026-11-06 | 7 | 52d | 0d |  |  |  |  |  |  |  |
| 35 | 1.2.1.2 | Tramitación del Pedido del conector ERP tramitado |  | 1d? | 2026-11-06 | 2026-11-06 | 34 | 52d | 0d |  |  |  |  | 1.6.1.1 | PED |  |
| 36 | 1.2.1.3 | Primer pago (40%) | milestone | 0d | 2026-11-09 | 2026-11-09 | 35 | 52d | 0d | start no earlier than 2026-11-09 |  |  |  | 1.6.1.4 | CON |  |
| 37 | 1.2.1.4 | Seguimiento del proveedor del conector |  | 1d? | 2026-11-09 | 2026-11-09 | 36 | 52d | 0d |  |  |  |  | 1.6.1.2 | SEG |  |
| 38 | 1.2.1.5 | Conector recibido y aceptado formalmente |  | 1d? | 2026-11-10 | 2026-11-10 | 37 | 52d | 5d |  |  |  |  | 1.6.1.3 | ACO |  |
| 39 | 1.2.1.6 | Segundo pago (60%) con Retención 10% | milestone | 0d | 2026-11-18 | 2026-11-18 | 38 | 53d |  | start no earlier than 2026-11-18 |  |  |  |  |  |  |
| 40 | 1.2.2 | **Encargo de documentación de uso y formación: seguimiento y aceptación** |  | 24d? | 2026-11-06 | 2026-12-11 |  | 37d |  |  |  |  |  | 1.6.2 |  |  |
| 41 | 1.2.2.1 | Encargo de documentación y formación realizado |  | 1d? | 2026-11-06 | 2026-11-06 | 7 | 60d | 0d |  |  |  |  | 1.6.2.1 | EFO |  |
| 42 | 1.2.2.2 | Encargo de documentación | milestone | 0d | 2026-11-06 | 2026-11-06 | 41 | 60d | 23d | start no earlier than 2026-11-06 |  |  |  |  |  |  |
| 43 | 1.2.2.3 | Documentación entregada y acceso a preproducción habilitado para Formación | milestone | 0d | 2026-12-11 | 2026-12-11 | 42 | 37d |  | start no earlier than 2026-12-11 |  |  |  | 1.6.2.2 | DFO |  |
| 44 | 1.3 | **Integración con ERP · ENT-02** |  | 36d? | 2026-11-09 | 2027-01-08 |  | 21d |  |  |  | 120h | 5,940 | 1.3 |  |  |
| 45 | 1.3.1 | **Sprint 1 · Especificación de interfaz ERP acordada (EP-04)** |  | 2d? | 2026-11-09 | 2026-11-10 |  | 21d |  |  |  | 24h | 1,140 | 1.3.1 |  |  |
| 46 | 1.3.1.1 | Solcitud de Acceso a los datos del ERP | milestone | 0d | 2026-11-09 | 2026-11-09 | 7 | 59d | 0d | start no earlier than 2026-11-09 |  |  |  |  |  |  |
| 47 | 1.3.1.2 | Gestión Solcitud de Acceso a los datos del ERP |  | 1d? | 2026-11-09 | 2026-11-09 | 46 | 59d |  |  |  |  |  |  |  |  |
| 48 | 1.3.1.3 | Sprint 1 · Especificación de interfaz ERP acordada (EP-04) |  | 2d | 2026-11-09 | 2026-11-10 | 9 | 21d | 8d |  | Arquitecto de software - 2026; Diseñador UX - 2026 | 24h | 1,140 | 1.3.1.1 |  | EP-04 |
| 49 | 1.3.2 | **Sprint 2 · Adaptación propia y ensayos con datos simulados (EP-04)** |  | 5d | 2026-11-23 | 2026-11-27 |  | 13d |  |  |  | 30h | 1,500 | 1.3.2 |  |  |
| 50 | 1.3.2.1 | Sprint 2 · Adaptación propia y ensayos con datos simulados (EP-04) |  | 5d | 2026-11-23 | 2026-11-27 | 12, 48 | 13d | 5d |  | Técncio de sistemas - 2026 | 30h | 1,500 | 1.3.2.1 |  | EP-04 |

Notes:
- 26: Text10: Traspaso al servicio de mantenimiento completado
- 27: Text10: Traspaso al servicio de mantenimiento completado
- 28: Text10: Cierre del proyecto aprobado y completado
- 29: Text10: Elaboración del Informe de Cierre y Lecciones Aprendidas
- 30: Text10: Cierre del proyecto aprobado y completado
- 31: Text10: Cierre del proyecto
- 32: Text10: Adquisiciones
- 33: Text10: Contrato del conector con ERP: pedido, seguimiento y aceptación
- 35: Text10: Pedido del conector ERP tramitado
- 36: Text10: Pago del control del conector HITO (TDB)
- 37: Text10: Seguimiento del proveedor del conector
- 38: Text10: Conector recibido y aceptado formalmente
- 40: Text10: Encargo de documentación de uso y formación: seguimiento y aceptación
- 41: Text10: Encargo de documentación y formación realizado
- 43: Text10: Documentación entregada y acceso a preproducción habilitado para Formación
- 44: Text10: Integración con ERP · ENT-02
- 45: Text10: Sprint 1 · Especificación de interfaz ERP acordada (EP-04)
- 48: Text10: Sprint 1 · Especificación de interfaz ERP acordada (EP-04)
- 49: Text10: Sprint 2 · Adaptación propia y ensayos con datos simulados (EP-04)
- 50: Text10: Sprint 2 · Adaptación propia y ensayos con datos simulados (EP-04)

| ID | WBS | Task | Type | Duration | Start | Finish | Predecessors | Total slack | Free slack | Constraint | Resources | Work | Cost | Text11 | Text1 | Text3 |
| --- | --- | --- | --- | --- | --- | --- | --- | --- | --- | --- | --- | --- | --- | --- | --- | --- |
| 51 | 1.3.3 | **Sprint 3 · Conector integrado, carga inicial y pruebas reales completadas (EP-04)** |  | 10d | 2026-12-07 | 2026-12-21 |  | 8d |  |  |  | 30h | 1,500 | 1.3.3 |  |  |
| 52 | 1.3.3.1 | Sprint 3 · Conector integrado, carga inicial y pruebas reales completadas (EP-04) |  | 5d | 2026-12-07 | 2026-12-14 | 15, 50 | 8d | 0d |  | Técncio de sistemas - 2026 | 30h | 1,500 | 1.3.3.1 | EP-04 |  |
| 53 | 1.3.3.2 | Catálogo, precios y existencias del ERP, cargados y existencias del ERP, cargados y sincronizados (EP-04), con el conector y ERP funcionando |  | 5d | 2026-12-15 | 2026-12-21 | 52 | 12.75d | 0d |  |  |  |  |  | EP-04 |  |
| 54 | 1.3.3.3 | Aceptación del Conector | milestone | 0d | 2026-12-21 | 2026-12-21 | 52, 38, 53 | 24d | 0d | start no earlier than 2026-12-18 |  |  |  |  | EP-04 | ACO |
| 55 | 1.3.4 | **Sprint 4 · Sincronización comprobada y carga productiva de 32 tiendas (EP-04)** |  | 6d | 2026-12-22 | 2027-01-08 |  | 24d |  |  |  | 36h | 1,800 | 1.3.4 |  |  |
| 56 | 1.3.4.1 | Sprint 4 · Sincronización comprobada y carga productiva de 32 tiendas (EP-04) |  | 6d | 2026-12-22 | 2027-01-08 | 18, 54 | 24d |  |  | Técncio de sistemas - 2026 | 36h | 1,800 | 1.3.4.1 | EP-04 |  |
| 57 | 1.4 | **Plataforma de compra en línea · ENT-01** |  | 78d? | 2026-10-05 | 2027-02-03 |  | 6d |  |  |  | 1211.4h | 40,925.28 | 1.2 |  |  |
| 58 | 1.4.1 | **Planificación** |  | 32d? | 2026-10-05 | 2026-11-18 |  | 42d |  |  |  | 72h | 3,240 | 1.2.1 |  |  |
| 59 | 1.4.1.1 | **Especificación funcional común y criterios de aceptación acordados (EP-01)** |  | 27d? | 2026-10-05 | 2026-11-11 |  | 26.25d | 0d |  |  | 36h | 1,530 | 1.2.1.1 |  |  |
| 60 | 1.4.1.1.1 | Se Solicitó a TuSuper el alta en la pasarela de pago | milestone | 0d | 2026-10-05 | 2026-10-05 | 4 | 53.75d | 24d |  |  |  |  |  | EP-01 |  |
| 61 | 1.4.1.1.2 | Solicitud de Franjas de Entrega, zonas de reparto y repartidores y acceso a Datos ERP | milestone | 0d | 2026-11-09 | 2026-11-09 | 7 | 32d | 0d | start no earlier than 2026-11-09 |  |  |  |  | EP-03 |  |
| 62 | 1.4.1.1.3 | Gestión de la Solicitud de Franjas de Entrega, zonas de reparto y repartidores y acceso a Datos ERP |  | 0.5d | 2026-11-09 | 2026-11-09 | 61 | 28.75d | 9.5d |  |  |  |  |  | EP-03 |  |
| 63 | 1.4.1.1.4 | Solicitud de contrato a Jurídico sobre Taracera como encargada de procesamiento de datos de TuSuper | milestone | 0d | 2026-11-06 | 2026-11-06 | 7 | 33d | 0d | start no earlier than 2026-10-28 |  |  |  |  |  |  |
| 64 | 1.4.1.1.5 | Gestión de la Solicitud de contrato a Jurídico sobre Taracera como encargada de procesamiento de datos de TuSuper |  | 1d? | 2026-11-06 | 2026-11-06 | 63 | 33d |  |  |  |  |  |  |  |  |
| 65 | 1.4.1.1.6 | Especificación funcional común y criterios de aceptación acordados (EP-01) |  | 3d | 2026-11-09 | 2026-11-11 | 9, 60 | 26.25d | 0d |  | Analista Funcional - 2026; Diseñador UX - 2026 | 36h | 1,530 | 1.2.1.1.1 | EP-01 |  |
| 66 | 1.4.1.2 | **Sistema de diseño e interfaz común preparados (EP-02)** |  | 3d | 2026-11-12 | 2026-11-16 |  | 42d |  |  |  | 36h | 1,710 | 1.2.1.2 |  |  |
| 67 | 1.4.1.2.1 | Sistema de diseño e interfaz común preparados (EP-02) |  | 3d | 2026-11-12 | 2026-11-16 | 65 | 42d | 0d |  | Arquitecto de software - 2026; Diseñador UX - 2026 | 36h | 1,710 | 1.2.1.2.1 | EP-02 |  |
| 68 | 1.4.1.3 | **Arquitectura técnica de la plataforma diseñada (EP-03)** |  | 2d | 2026-11-17 | 2026-11-18 |  | 42d | 0d |  |  |  |  | 1.2.1.3 |  |  |
| 69 | 1.4.1.3.1 | Arquitectura técnica de la plataforma diseñada (EP-03) |  | 2d | 2026-11-17 | 2026-11-18 | 67 | 42d |  |  |  |  |  | 1.2.1.3.1 | EP-03 |  |
| 70 | 1.4.2 | **Sprint 1 · 09-20/11/2026** |  | 15d | 2026-11-12 | 2026-12-02 |  | 26.25d |  |  |  | 138h | 6,315 | 1.2.2 |  |  |
| 71 | 1.4.2.1 | **RF-01 y RF-03 especificados y diseñados (E)** |  | 2.75d | 2026-11-12 | 2026-11-16 |  | 35.38d |  |  |  | 33h | 1,402.5 | 1.2.2.1 |  |  |
| 72 | 1.4.2.1.1 | RF-01 y RF-03 especificados y diseñados |  | 2.75d | 2026-11-12 | 2026-11-16 | 65, 9 | 35.38d | 4.25d |  | Analista Funcional - 2026; Diseñador UX - 2026 | 33h | 1,402.5 | 1.2.2.1.1 | RF-01;RF-03 |  |
| 73 | 1.4.2.2 | **RF-06 especificado y diseñado (E)** |  | 3.75d | 2026-11-12 | 2026-11-17 |  | 26.25d |  |  |  | 45h | 1,912.5 | 1.2.2.2 |  |  |
| 74 | 1.4.2.2.1 | RF-06 especificado y diseñado |  | 3.75d | 2026-11-12 | 2026-11-17 | 59 | 26.25d | 18.25d |  | Analista Funcional - 2026; Diseñador UX - 2026 | 45h | 1,912.5 | 1.2.2.2.1 | RF-06 |  |

Notes:
- 51: Text10: Sprint 3 · Conector integrado, carga inicial y pruebas reales completadas (EP-04)
- 52: Text10: Sprint 3 · Conector integrado, carga inicial y pruebas reales completadas (EP-04)
- 55: Text10: Sprint 4 · Sincronización comprobada y carga productiva de 32 tiendas (EP-04)
- 56: Text10: Sprint 4 · Sincronización comprobada y carga productiva de 32 tiendas (EP-04)
- 57: Text10: Plataforma de compra en línea · ENT-01
- 58: Text10: Planificación
- 59: Text10: Especificación funcional común y criterios de aceptación acordados (EP-01)
- 65: Text10: Especificación funcional común y criterios de aceptación acordados (EP-01)
- 66: Text10: Sistema de diseño e interfaz común preparados (EP-02)
- 67: Text10: Sistema de diseño e interfaz común preparados (EP-02)
- 68: Text10: Arquitectura técnica de la plataforma diseñada (EP-03)
- 69: Text10: Arquitectura técnica de la plataforma diseñada (EP-03)
- 70: Text10: Sprint 1 · 09-20/11/2026
- 71: Text10: RF-01 y RF-03 especificados y diseñados (E)
- 72: ·Estimación (RF-01(min) + RF-03(min))/2 / Text10: RF-01 y RF-03 especificados y diseñados
- 73: Text10: RF-06 especificado y diseñado (E)
- 74: Text10: RF-06 especificado y diseñado

| ID | WBS | Task | Type | Duration | Start | Finish | Predecessors | Total slack | Free slack | Constraint | Resources | Work | Cost | Text10 | Text11 | Text1 |
| --- | --- | --- | --- | --- | --- | --- | --- | --- | --- | --- | --- | --- | --- | --- | --- | --- |
| 75 | 1.4.2.3 | **Entornos de desarrollo y CI/CD operativos (EP-03)** |  | 10d | 2026-11-19 | 2026-12-02 |  | 42d |  |  |  | 60h | 3,000 | Entornos de desarrollo y CI/CD operativos (EP-03) | 1.2.2.3 |  |
| 76 | 1.4.2.3.1 | Entornos de desarrollo y CI/CD operativos (EP-03) |  | 10d | 2026-11-19 | 2026-12-02 | 68 | 42d |  |  | Técncio de sistemas - 2026 | 60h | 3,000 | Entornos de desarrollo y CI/CD operativos (EP-03) | 1.2.2.3.1 | EP-03 |
| 77 | 1.4.3 | **Sprint 2 · 23/11-04/12/2026** |  | 24.75d | 2026-11-23 | 2027-01-07 |  | 18.75d |  |  |  | 210.36h | 6,862.14 | Sprint 2 · 23/11-04/12/2026 | 1.2.3 |  |
| 78 | 1.4.3.1 | **RF-01 y RF-03 construidos e integrados (C)** |  | 12.37d | 2026-11-23 | 2026-12-10 |  | 31.13d |  |  |  | 148.44h | 4,230.54 | RF-01 y RF-03 construidos e integrados (C) | 1.2.3.1 |  |
| 79 | 1.4.3.1.1 | RF-01 y RF-03 construidos e integrados |  | 12.37d | 2026-11-23 | 2026-12-10 | 72, 12 | 34.38d | 6.63d |  | Desarrollador - 2026; Desarrollador Junior - 2026 | 148.44h | 4,230.54 | RF-01 y RF-03 construidos e integrados | 1.2.3.1.1 | RF-01;RF-03 |
| 80 | 1.4.3.2 | **RF-02 y RF-04 especificados y diseñados (E)** |  | 3.66d | 2026-11-23 | 2026-11-26 |  | 25.34d |  |  |  | 43.92h | 1,866.6 | RF-02 y RF-04 especificados y diseñados (E) | 1.2.3.2 |  |
| 81 | 1.4.3.2.1 | RF-02 y RF-04 especificados y diseñados |  | 3.66d | 2026-11-23 | 2026-11-26 | 12 | 29.67d | 6.34d |  | Analista Funcional - 2026; Diseñador UX - 2026 | 43.92h | 1,866.6 | RF-02 y RF-04 especificados y diseñados | 1.2.3.2.1 | RF-02;RF-04 |
| 82 | 1.4.3.3 | **RF-06 construido e integrado (C)** |  | 9.75d | 2026-12-15 | 2027-01-07 |  | 8d | 3.25d |  |  |  |  | RF-06 construido e integrado (C) | 1.2.3.3 |  |
| 83 | 1.4.3.3.1 | RF-06 construido e integrado |  | 9.75d | 2026-12-15 | 2027-01-07 | 74, 12, 52 | 8d | 0d |  |  |  |  | RF-06 construido e integrado | 1.2.3.3.1 | RF-06 |
| 84 | 1.4.3.4 | **RF-05 y RF-07 especificados y diseñados (E)** |  | 3.75d | 2026-11-23 | 2026-11-26 |  | 19.25d |  |  |  | 18h | 765 | RF-05 y RF-07 especificados y diseñados (E) | 1.2.3.4 |  |
| 85 | 1.4.3.4.1 | Recepción de Franjas y Repartidores | milestone | 0d | 2026-11-23 | 2026-11-23 | 62 | 46.25d | 0d | start no earlier than 2026-11-23 |  |  |  |  |  | RF-05 |
| 86 | 1.4.3.4.2 | RF-05 especificados y diseñados |  | 3.75d | 2026-11-23 | 2026-11-26 | 85, 12 | 46.25d |  |  |  |  |  |  |  | RF-05 |
| 87 | 1.4.3.4.3 | RF-07 especificados y diseñados |  | 1.5d | 2026-11-23 | 2026-11-24 | 12 | 25.25d | 8.5d |  | Analista Funcional - 2026; Diseñador UX - 2026 | 18h | 765 | RF-05 y RF-07 especificados y diseñados | 1.2.3.4.1 | RF-05;RF-07 |
| 88 | 1.4.4 | **Sprint 3 · 07-18/12/2026** |  | 9.75d? | 2026-12-07 | 2026-12-21 |  | 13d |  |  |  | 316.5h | 9,492 | Sprint 3 · 07-18/12/2026 | 1.2.4 |  |
| 89 | 1.4.4.1 | **RF-01 verificado (V)** |  | 3.25d | 2026-12-10 | 2026-12-15 |  | 31.13d |  |  |  | 19.5h | 721.5 | RF-01 verificado (V) | 1.2.4.1 |  |
| 90 | 1.4.4.1.1 | RF-01 verificado (V) |  | 3.25d | 2026-12-10 | 2026-12-15 | 15, 79 | 31.13d | 0d |  | Técnico de Calidad - 2026 | 19.5h | 721.5 | RF-01 verificado (V) | 1.2.4.1.1 | RF-01 |
| 91 | 1.4.4.1.2 | dentificación del comprador (RF-01.2) | milestone | 0d | 2026-12-15 | 2026-12-15 | 90 | 34.38d |  |  |  |  |  |  |  | RF-01 |
| 92 | 1.4.4.2 | **RF-04 construido e integrado (C)** |  | 9.25d? | 2026-12-07 | 2026-12-21 |  | 30.25d |  |  |  | 99h | 2,821.5 | RF-04 construido e integrado (C) | 1.2.4.2 |  |
| 93 | 1.4.4.2.1 | RF-04 construido e integrado |  | 8.25d | 2026-12-07 | 2026-12-18 | 81, 15 | 30.75d | 0d |  | Desarrollador - 2026; Desarrollador Junior - 2026 | 99h | 2,821.5 | RF-04 construido e integrado | 1.2.4.2.1 | RF-04 |
| 94 | 1.4.4.2.2 | RF-04 pasarela de pago construida | milestone | 0d | 2026-12-18 | 2026-12-18 | 93 | 30.75d | 0d | start no earlier than 2026-12-17 |  |  |  |  |  | RF-04 |
| 95 | 1.4.4.2.3 | Solicitud de auditoria a TuSuper |  | 1d? | 2026-12-18 | 2026-12-21 | 94 | 30.75d |  |  |  |  |  |  |  |  |
| 96 | 1.4.4.3 | **RF-05 construido e integrado (C)** |  | 9.75d | 2026-12-07 | 2026-12-21 |  | 13d |  |  |  | 117h | 3,334.5 | RF-05 construido e integrado (C) | 1.2.4.3 |  |
| 97 | 1.4.4.3.1 | RF-05 construido e integrado |  | 9.75d | 2026-12-07 | 2026-12-21 | 87, 15, 86 | 16.75d | 1d |  | Desarrollador - 2026; Desarrollador Junior - 2026 | 117h | 3,334.5 | RF-05 construido e integrado | 1.2.4.3.1 | RF-05 |
| 98 | 1.4.4.4 | **RF-08 especificado y diseñado (E)** |  | 3.75d | 2026-12-07 | 2026-12-11 |  | 22.75d |  |  |  | 45h | 1,282.5 | RF-08 especificado y diseñado (E) | 1.2.4.4 |  |
| 99 | 1.4.4.4.1 | RF-08 especificado y diseñado |  | 3.75d | 2026-12-07 | 2026-12-11 | 15 | 26.5d | 12.25d |  | Desarrollador - 2026; Desarrollador Junior - 2026 | 45h | 1,282.5 | RF-08 especificado y diseñado | 1.2.4.4.1 | RF-08 |

Notes:
- 81: ·Estimación: (RF-02(Max) + RF-04(Min)) / 2

| ID | WBS | Task | Type | Duration | Start | Finish | Predecessors | Total slack | Free slack | Constraint | Resources | Work | Cost | Text11 | Text1 |
| --- | --- | --- | --- | --- | --- | --- | --- | --- | --- | --- | --- | --- | --- | --- | --- |
| 100 | 1.4.4.5 | **Plan y escenarios de pruebas de sistema preparados (EP-05)** |  | 6d | 2026-12-07 | 2026-12-15 |  | 16d |  |  |  | 36h | 1,332 | 1.2.4.5 |  |
| 101 | 1.4.4.5.1 | Plan y escenarios de pruebas de sistema preparados (EP-05) |  | 6d | 2026-12-07 | 2026-12-15 | 15 | 16d | 10d |  | Técnico de Calidad - 2026 | 36h | 1,332 | 1.2.4.5.1 | EP-05 |
| 102 | 1.4.5 | **Sprint 4 · 21/12/2026–08/01/2027** |  | 15.17d? | 2026-12-21 | 2027-01-21 |  | 10d |  |  |  | 218.04h | 6,520.14 | 1.2.5 |  |
| 103 | 1.4.5.1 | **RF-03 verificado (V)** |  | 3.25d? | 2026-12-21 | 2027-01-04 |  | 27.75d |  |  |  | 13.5h | 499.5 | 1.2.5.1 |  |
| 104 | 1.4.5.1.1 | RF-03 verificado (V) |  | 2.25d | 2026-12-21 | 2026-12-23 | 18, 79, 90 | 27.75d | 0d |  | Técnico de Calidad - 2026 | 13.5h | 499.5 | 1.2.5.1.1 | RF-03 |
| 105 | 1.4.5.1.2 | RF-03.4 Persistencia Sesión verificada (V) |  | 1d? | 2026-12-23 | 2027-01-04 | 104 | 27.75d |  |  |  |  |  |  | RF-03 |
| 106 | 1.4.5.2 | **RF-02 construido e integrado (C)** |  | 15.17d | 2026-12-21 | 2027-01-21 |  | 10d |  |  |  | 182.04h | 5,188.14 | 1.2.5.2 |  |
| 107 | 1.4.5.2.1 | RF-02 construido e integrado |  | 15.17d | 2026-12-21 | 2027-01-21 | 81, 18 | 14.33d | 0d |  | Desarrollador - 2026; Desarrollador Junior - 2026 | 182.04h | 5,188.14 | 1.2.5.2.1 | RF-02 |
| 108 | 1.4.5.3 | **RF-05 y RF-06 verificados (V)** |  | 3.75d | 2027-01-07 | 2027-01-13 |  | 8d |  |  |  | 22.5h | 832.5 | 1.2.5.3 |  |
| 109 | 1.4.5.3.1 | RF-05 y RF-06 verificados |  | 3.75d | 2027-01-07 | 2027-01-13 | 97, 83, 18, 53 | 8d | 0d |  | Técnico de Calidad - 2026 | 22.5h | 832.5 | 1.2.5.3.1 | RF-05;RF-06 |
| 110 | 1.4.6 | **Sprint 5 · 11–22/01/2027** |  | 15.83d | 2027-01-11 | 2027-02-01 |  | 6d |  |  |  | 198h | 6,331.5 | 1.2.6 |  |
| 111 | 1.4.6.1 | **RF-02 y RF-04 verificados (V)** |  | 13.83d | 2027-01-13 | 2027-02-01 |  | 8.17d |  |  |  | 9h | 333 | 1.2.6.1 |  |
| 112 | 1.4.6.1.1 | RF-02 verificado |  | 5.83d | 2027-01-25 | 2027-02-01 | 96, 20, 53, 107 | 8.17d | 0d |  |  |  |  |  | RF-02 |
| 113 | 1.4.6.1.2 | RF-02.6 Datos de ERP por tienda verificado (V) | milestone | 0d | 2027-02-01 | 2027-02-01 | 112 | 8.17d |  |  |  |  |  |  | RF-02 |
| 114 | 1.4.6.1.3 | RF-04 Recepción de Credenciales de la pasarela | milestone | 0d | 2027-01-13 | 2027-01-13 | 82 | 22d |  | start no earlier than 2027-01-13 |  |  |  |  | RF-04 |
| 115 | 1.4.6.1.4 | RF-04 verificados |  | 1.5d | 2027-01-21 | 2027-01-22 | 21, 107, 52, 93, 99, 114 | 14.33d |  |  | Técnico de Calidad - 2026 | 9h | 333 | 1.2.6.1.1 | RF-04 |
| 116 | 1.4.6.2 | **RF-07 y RF-08 construidos e integrados (C)** |  | 9.75d | 2027-01-13 | 2027-01-27 |  | 8d |  |  |  | 117h | 3,334.5 | 1.2.6.2 |  |
| 117 | 1.4.6.2.1 | RF-07 y RF-08 construidos e integrados |  | 9.75d | 2027-01-13 | 2027-01-27 | 87, 99, 21, 109 | 8d | 0d |  | Desarrollador - 2026; Desarrollador Junior - 2026 | 117h | 3,334.5 | 1.2.6.2.1 | RF-07;RF-08 |
| 118 | 1.4.6.3 | **Pruebas de sistema, carga y seguridad ejecutadas (EP-05)** |  | 6d | 2027-01-11 | 2027-01-18 |  | 6d |  |  |  | 36h | 1,332 | 1.2.6.3 |  |
| 119 | 1.4.6.3.1 | Pruebas de sistema, carga y seguridad ejecutadas (EP-05) |  | 6d | 2027-01-11 | 2027-01-18 | 101, 21 | 6d | 0d |  | Técnico de Calidad - 2026 | 36h | 1,332 | 1.2.6.3.1 | EP-05 |
| 120 | 1.4.6.4 | **Seguimiento técnico del piloto: primer tramo completado (EP-05)** |  | 6d | 2027-01-19 | 2027-01-26 |  | 6d |  |  |  | 36h | 1,332 | 1.2.6.4 |  |
| 121 | 1.4.6.4.1 | Seguimiento técnico del piloto: primer tramo completado (EP-05) |  | 6d | 2027-01-19 | 2027-01-26 | 119, 21 | 6d | 0d |  | Técnico de Calidad - 2026 | 36h | 1,332 | 1.2.6.4.1 | EP-05 |
| 122 | 1.4.7 | **Sprint 6 · 25/01–05/02/2027** |  | 6d | 2027-01-27 | 2027-02-03 |  | 6d |  |  |  | 58.5h | 2,164.5 | 1.2.7 |  |
| 123 | 1.4.7.1 | **RF-07 y RF-08 verificados (V)** |  | 3.75d | 2027-01-27 | 2027-02-01 |  | 8d |  |  |  | 22.5h | 832.5 | 1.2.7.1 |  |
| 124 | 1.4.7.1.1 | RF-07 y RF-08 verificados |  | 3.75d | 2027-01-27 | 2027-02-01 | 24, 109, 53, 117 | 8d |  |  | Técnico de Calidad - 2026 | 22.5h | 832.5 | 1.2.7.1.1 | RF-07;RF-08 |

Notes:
- 100: Text10: Plan y escenarios de pruebas de sistema preparados (EP-05)
- 101: Text10: Plan y escenarios de pruebas de sistema preparados (EP-05)
- 102: Text10: Sprint 4 · 21/12/2026–08/01/2027
- 103: Text10: RF-03 verificado (V)
- 104: Text10: RF-03 verificado (V)
- 106: Text10: RF-02 construido e integrado (C)
- 107: Text10: RF-02 construido e integrado
- 108: Text10: RF-05 y RF-06 verificados (V)
- 109: Text10: RF-05 y RF-06 verificados
- 110: Text10: Sprint 5 · 11–22/01/2027
- 111: Text10: RF-02 y RF-04 verificados (V)
- 115: Text10: RF-02 y RF-04 verificados
- 116: Text10: RF-07 y RF-08 construidos e integrados (C)
- 117: Text10: RF-07 y RF-08 construidos e integrados
- 118: Text10: Pruebas de sistema, carga y seguridad ejecutadas (EP-05)
- 119: Text10: Pruebas de sistema, carga y seguridad ejecutadas (EP-05)
- 120: Text10: Seguimiento técnico del piloto: primer tramocompletado (EP-05)
- 121: Text10: Seguimiento técnico del piloto: primer tramo completado (EP-05)
- 122: Text10: Sprint 6 · 25/01–05/02/2027
- 123: Text10: RF-07 y RF-08 verificados (V)
- 124: Text10: RF-07 y RF-08 verificados

| ID | WBS | Task | Type | Duration | Start | Finish | Predecessors | Total slack | Free slack | Constraint | Resources | Work | Cost | Text11 | Text1 | Text3 |
| --- | --- | --- | --- | --- | --- | --- | --- | --- | --- | --- | --- | --- | --- | --- | --- | --- |
| 125 | 1.4.7.2 | **Seguimiento técnico y evidencias finales del piloto completadas (EP-05)** |  | 6d | 2027-01-27 | 2027-02-03 |  | 6d |  |  |  | 36h | 1,332 | 1.2.7.2 |  |  |
| 126 | 1.4.7.2.1 | Seguimiento técnico y evidencias finales del piloto completadas (EP-05) |  | 6d | 2027-01-27 | 2027-02-03 | 121, 24 | 6d |  |  | Técnico de Calidad - 2026 | 36h | 1,332 | 1.2.7.2.1 | EP-05 |  |
| 127 | 1.5 | **Documentación y formación · ENT-04** |  | 18d? | 2026-12-04 | 2027-01-11 |  | 23d |  |  |  |  |  | 1.5 |  |  |
| 128 | 1.5.1 | **Sprint 3 · Acceso Preproducción y Documentación técnica y funcional entregada a Formación (EP-07)** |  | 6d? | 2026-12-04 | 2026-12-14 |  | 35d |  |  |  |  |  | 1.5.1 |  |  |
| 129 | 1.5.1.1 | Solicitud de las listas del personal a formar | milestone | 0d | 2026-12-04 | 2026-12-04 | 7 | 40d | 0d | start no earlier than 2026-12-04 |  |  |  |  |  |  |
| 130 | 1.5.1.2 | Gestión de la Solicitud de las listas del personal a formar |  | 1d? | 2026-12-04 | 2026-12-04 | 129 | 40d |  |  |  |  |  |  |  |  |
| 131 | 1.5.1.3 | Sprint 3 · Documentación técnica y funcional entregada a Formación (EP-07) |  | 5d | 2026-12-07 | 2026-12-14 | 15 | 35d | 0d |  |  |  |  | 1.5.1.1 | EP-07 |  |
| 132 | 1.5.1.4 | Sprint 3 · Acceso a preproducción habilitado para Formación (EP-07) | milestone | 0d | 2026-12-14 | 2026-12-14 | 131, 15 | 35d |  |  |  |  |  | 1.5.2.1 | EP-07 |  |
| 133 | 1.5.2 | **Sprint 5 · Formación (EP-07)** |  | 1d? | 2027-01-11 | 2027-01-11 |  | 23d |  |  |  |  |  |  |  |  |
| 134 | 1.5.2.1 | Recepción de la lista del personal a formar | milestone | 0d | 2027-01-11 | 2027-01-11 | 21 | 23d | 0d |  |  |  |  |  |  |  |
| 135 | 1.5.2.2 | Formación del personal |  | 1d? | 2027-01-11 | 2027-01-11 | 134 | 23d |  |  |  |  |  |  |  | DFI |
| 136 | 1.6 | **Puesta en producción · ENT-03** |  | 47d? | 2026-11-23 | 2027-02-08 |  | 3d |  |  |  |  |  | 1.4 |  |  |
| 137 | 1.6.1 | **Sprint 2 · Entorno de preproducción preparado (EP-06)** |  | 10d? | 2026-11-23 | 2026-12-04 |  | 28d |  |  |  |  |  | 1.4.1 |  |  |
| 138 | 1.6.1.1 | Solicitud de cuentas de desarrollo (app móviles) | milestone | 0d | 2026-12-04 | 2026-12-04 | 7 | 40d | 0d | start no earlier than 2026-12-04 |  |  |  |  |  |  |
| 139 | 1.6.1.2 | Gestión de la Solicitud de cuentas de desarrollo |  | 1d? | 2026-12-04 | 2026-12-04 | 12, 138 | 40d |  |  |  |  |  |  |  |  |
| 140 | 1.6.1.3 | Sprint 2 · Entorno de preproducción preparado (EP-06) |  | 5d | 2026-11-23 | 2026-11-27 | 12 | 40d | 4d |  |  |  |  | 1.4.1.1 | EP-06 |  |
| 141 | 1.6.1.4 | Entorno de preproducción construido | milestone | 0d | 2026-12-04 | 2026-12-04 | 140 | 41d |  | start no earlier than 2026-12-04 |  |  |  |  |  |  |
| 142 | 1.6.2 | **Sprint 4 · Despliegue de la plataforma en tres tiendas piloto (EP-06)** |  | 5d | 2026-12-21 | 2027-01-07 |  | 14d |  |  |  |  |  | 1.4.2 |  |  |
| 143 | 1.6.2.1 | Cuentas de desarrollo disponibles (app móviles) | milestone | 0d | 2026-12-21 | 2026-12-21 | 15, 138 | 30d | 0d | start no earlier than 2026-12-21 |  |  |  |  |  |  |
| 144 | 1.6.2.2 | Sprint 4 · Despliegue de la plataforma en tres tiendas piloto (EP-06) |  | 5d | 2026-12-21 | 2027-01-05 | 15, 143, 140 | 26d |  |  |  |  |  | 1.4.2.1 | EP-06 |  |
| 145 | 1.6.2.3 | Publicación de app móviles | milestone | 0d | 2027-01-07 | 2027-01-07 | 138 | 26d |  | start no earlier than 2027-01-07 |  |  |  |  |  |  |
| 146 | 1.6.3 | **Sprint 5 · Piloto operativo y supervisado: primer tramo (EP-06)** |  | 1d? | 2027-01-11 | 2027-01-11 |  | 12d |  |  |  |  |  | 1.4.3 |  |  |
| 147 | 1.6.3.1 | Sprint 5 · Piloto operativo y supervisado: primer tramo (EP-06) |  | 1d? | 2027-01-11 | 2027-01-11 | 21, 144 | 23d |  |  |  |  |  | 1.4.3.1 | EP-06 |  |
| 148 | 1.6.4 | **Sprint 6 · 25/01–05/02/2027** |  | 11d | 2027-01-25 | 2027-02-08 |  | 3d |  |  |  |  |  | 1.4.4 |  |  |
| 149 | 1.6.4.1 | **Piloto operativo finalizado: segundo tramo (EP-06)** |  | 5d | 2027-01-25 | 2027-01-29 |  | 3d |  |  |  |  |  | 1.4.4.1 |  |  |
| 150 | 1.6.4.1.1 | Piloto operativo finalizado: segundo tramo (EP-06) |  | 5d | 2027-01-25 | 2027-01-29 | 24, 147 | 3d | 0d |  |  |  |  | 1.4.4.1.1 | EP-06 |  |

Notes:
- 125: Text10: Seguimiento técnico y evidencias finales del piloto completadas (EP-05)
- 126: Text10: Seguimiento técnico y evidencias finales del piloto completadas (EP-05)
- 127: Text10: Documentación y formación · ENT-04
- 128: Text10: Sprint 3 · Documentación técnica y funcional entregada a Formación (EP-07)
- 131: Text10: Sprint 3 · Documentación técnica y funcional entregada a Formación (EP-07)
- 132: Text10: Sprint 3 · Acceso a preproducción habilitado para Formación (EP-07)
- 136: Text10: Puesta en producción · ENT-03
- 137: Text10: Sprint 2 · Entorno de preproducción preparado (EP-06)
- 140: Text10: Sprint 2 · Entorno de preproducción preparado (EP-06)
- 142: Text10: Sprint 4 · Despliegue de la plataforma en tres tiendas piloto (EP-06)
- 144: Text10: Sprint 4 · Despliegue de la plataforma en tres tiendas piloto (EP-06)
- 146: Text10: Sprint 5 · Piloto operativo y supervisado: primer tramo (EP-06)
- 147: Text10: Sprint 5 · Piloto operativo y supervisado: primer tramo (EP-06)
- 148: Text10: Sprint 6 · 25/01–05/02/2027
- 149: Text10: Piloto operativo finalizado: segundo tramo (EP-06)
- 150: Text10: Piloto operativo finalizado: segundo tramo (EP-06)

| ID | WBS | Task | Duration | Start | Finish | Predecessors | Total slack | Text11 | Text1 |
| --- | --- | --- | --- | --- | --- | --- | --- | --- | --- |
| 151 | 1.6.4.2 | **Despliegue en producción y apertura de las 32 tiendas (EP-06)** | 6d | 2027-02-01 | 2027-02-08 |  | 3d | 1.4.4.2 |  |
| 152 | 1.6.4.2.1 | Despliegue en producción y apertura de las 32 tiendas (EP-06) | 6d | 2027-02-01 | 2027-02-08 | 150 | 3d | 1.4.4.2.1 | EP-06 |

Notes:
- 151: Text10: Despliegue en producción y apertura de las 32 tiendas (EP-06)
- 152: Text10: Despliegue en producción y apertura de las 32 tiendas (EP-06)
