# Proyecto TSL-2627 TuSuper en Línea

Schedule from MS Project, 2026-10-05 to 2027-02-12, 6 hours a day, costs in €.

## Calendars

- Estándar: Mon-Fri 09:00-15:00; Sat-Sun off. Exceptions (off unless hours are given): 2026-10-12 (Día de la Constitución Española), 2026-12-06 (Día de la Constitución Española), 2026-12-08 (Inmaculada Concepción), 2026-12-24 to 2027-01-01 (Cierre de la consultora (NOR-20)), 2027-01-06 (Epifanía del Señor).

## Resources

| Resource | Rate |
| --- | --- |
| Jefe de proyecto - 2026 | 60 |
| Técncio de sistemas - 2026 | 50 |
| Diseñador UX - 2026 | 40 |
| Técnico de Calidad - 2026 | 37 |
| Desarrollador - 2026 | 35 |
| Desarrollador Junior - 2026 | 22 |
| Jefe de proyecto - 2027 | 61.8 |
| Técncio de sistemas - 2027 | 51.5 |
| Diseñador UX - 2027 | 41.2 |
| Técnico de Calidad - 2027 | 38.11 |
| Desarrollador - 2027 | 36.05 |
| Desarrollador Junior - 2027 | 22.66 |
| Desarrollador - 2026 | 35 |
| Desarrollador - 2027 | 36.05 |
| Diseñador UX - 2026 | 40 |
| Diseñador UX - 2027 | 41.2 |
| Técnico de Calidad - 2026 | 37 |
| Técnico de Calidad - 2027 | 38.11 |

## Schedule

| ID | WBS | Task | Type | Duration | Start | Finish | Predecessors | Total slack | Free slack | Constraint | Resources | Work | Cost | Text11 | Text20 | Text3 |
| --- | --- | --- | --- | --- | --- | --- | --- | --- | --- | --- | --- | --- | --- | --- | --- | --- |
| 1 | 1 | **TSL-2627 TuSuper en Línea** |  | 84d? | 2026-10-05 | 2027-02-12 |  | 0d |  |  |  | 511.5h | 23,181 |  |  |  |
| 2 | 1.1 | **Dirección del Proyecto** |  | 84d | 2026-10-05 | 2027-02-12 |  | 0d |  |  |  | 159h | 9,621 | 1.1 | 1.1 |  |
| 3 | 1.1.1 | **Planificación y gestión de la planificación** |  | 23d | 2026-10-05 | 2026-11-06 |  | 1d |  |  |  | 60h | 3,600 | 1.1.1 | 1.1.1 |  |
| 4 | 1.1.1.1 | Comienzo del Proyecto | milestone | 0d | 2026-10-05 | 2026-10-05 |  | 14d | 0d |  |  |  |  | 1.1.1.1 | 1.1.1.1 |  |
| 5 | 1.1.1.2 | Elaboración del Plan de Dirección del Proyecto, Alcance, EDT y Cronograma |  | 5d | 2026-10-05 | 2026-10-09 | 4 | 14d | 0d |  | Jefe de proyecto - 2026 | 30h | 1,800 | 1.1.1.2 | 1.1.1.2 | APR; SOL |
| 6 | 1.1.1.3 | Tramitación y negociación de la aceptación del calendario y alcance por el cliente |  | 5d | 2026-10-13 | 2026-10-19 | 5 | 14d | 13d |  | Jefe de proyecto - 2026 | 30h | 1,800 | 1.1.1.3 | 1.1.1.3 | ACE-LB |
| 7 | 1.1.1.4 | Aprobación del Plan de Dirección y Líneas Bases | milestone | 0d | 2026-11-06 | 2026-11-06 | 6 | 1d | 0d | start no earlier than 2026-11-06 |  |  |  |  | 1.1.1.4 |  |
| 8 | 1.1.2 | **Dirección y seguimiento del Sprint 1** |  | 10d | 2026-11-09 | 2026-11-20 |  | 0d |  |  |  | 15h | 900 | 1.1.2 | 1.1.2 |  |
| 9 | 1.1.2.1 | Inicio del Sprint 1 | milestone | 0d | 2026-11-09 | 2026-11-09 | 7 | 0d |  | start no earlier than 2026-11-09 |  |  |  | 1.1.2.2 | 1.1.2.2 |  |
| 10 | 1.1.2.2 | Dirección y seguimiento del Sprint 1 |  | 10d | 2026-11-09 | 2026-11-20 | 9 | 0d |  |  | Jefe de proyecto - 2026 [25%] | 15h | 900 | 1.1.2.1 | 1.1.2.1 | SPR; ISV |
| 11 | 1.1.3 | **Dirección y seguimiento del Sprint 2** |  | 10d | 2026-11-23 | 2026-12-04 |  | 0d |  |  |  | 15h | 900 | 1.1.3 | 1.1.3 |  |
| 12 | 1.1.3.1 | Inicio Sprint 2 | milestone | 0d | 2026-11-23 | 2026-11-23 | 10 | 0d |  | start no earlier than 2026-11-23 |  |  |  | 1.1.3.2 | 1.1.3.2 |  |
| 13 | 1.1.3.2 | Dirección y seguimiento del Sprint 2 |  | 10d | 2026-11-23 | 2026-12-04 | 12 | 0d |  |  | Jefe de proyecto - 2026 [25%] | 15h | 900 | 1.1.3.1 | 1.1.3.1 | SPR; ISV |
| 14 | 1.1.4 | **Dirección y seguimiento del Sprint 3** |  | 9d | 2026-12-07 | 2026-12-18 |  | 0d |  |  |  | 13.5h | 810 | 1.1.4 | 1.1.4 |  |
| 15 | 1.1.4.1 | Inicio Sprint 3 | milestone | 0d | 2026-12-07 | 2026-12-07 | 13 | 0d |  | start no earlier than 2026-12-07 |  |  |  | 1.1.4.2 | 1.1.4.2 |  |
| 16 | 1.1.4.2 | Dirección y seguimiento del Sprint 3 |  | 9d | 2026-12-07 | 2026-12-18 | 15 | 0d |  |  | Jefe de proyecto - 2026 [25%] | 13.5h | 810 | 1.1.4.1 | 1.1.4.1 | SPR; ISV |
| 17 | 1.1.5 | **Dirección y seguimiento del Sprint 4** |  | 7d | 2026-12-21 | 2027-01-08 |  | 0d |  |  |  | 21h | 1,278.9 | 1.1.5 | 1.1.5 |  |
| 18 | 1.1.5.1 | Inicio Sprint 4 | milestone | 0d | 2026-12-21 | 2026-12-21 | 16 | 0d |  | start no earlier than 2026-12-21 |  |  |  | 1.1.5.2 | 1.1.5.2 |  |
| 19 | 1.1.5.2 | Dirección y seguimiento del Sprint 4 |  | 7d | 2026-12-21 | 2027-01-08 | 18 | 0d |  |  | Jefe de proyecto - 2026 [25%]; Jefe de proyecto - 2027 [25%] | 21h | 1,278.9 | 1.1.5.1 | 1.1.5.1 | SPR; ISV |
| 20 | 1.1.6 | **Dirección y seguimiento del Sprint 5** |  | 10d | 2027-01-11 | 2027-01-22 |  | 0d |  |  |  | 15h | 927 | 1.1.6 | 1.1.6 |  |
| 21 | 1.1.6.1 | Inicio Sprint 5 | milestone | 0d | 2027-01-11 | 2027-01-11 | 19 | 0d |  | start no earlier than 2027-01-11 |  |  |  | 1.1.6.2 | 1.1.6.2 |  |
| 22 | 1.1.6.2 | Dirección y seguimiento del Sprint 5 |  | 10d | 2027-01-11 | 2027-01-22 | 21 | 1d | 0d |  | Jefe de proyecto - 2027 [25%] | 15h | 927 | 1.1.6.1 | 1.1.6.1 | SPR; ISV |
| 23 | 1.1.7 | **Dirección y seguimiento del Sprint 6** |  | 10d | 2027-01-25 | 2027-02-05 |  | 1d |  |  |  | 15h | 927 | 1.1.7 | 1.1.7 |  |
| 24 | 1.1.7.1 | Inicio Sprint 6 | milestone | 0d | 2027-01-25 | 2027-01-25 | 22 | 1d | 0d | start no earlier than 2027-01-25 |  |  |  | 1.1.7.2 | 1.1.7.2 |  |
| 25 | 1.1.7.2 | Dirección y seguimiento del Sprint 6 |  | 10d | 2027-01-25 | 2027-02-05 | 24 | 1d | 0d |  | Jefe de proyecto - 2027 [25%] | 15h | 927 | 1.1.7.1 | 1.1.7.1 | SPR; ISV |

Notes:
- 1: Text10: TSL-2627 TuSuper en Línea
- 2: Text10: Dirección del Proyecto
- 3: Text10: Planificación y gestión de la planificación
- 4: Text10: Comienzo del Proyecto
- 5: ·Estimación: No encontrado evidencia, luego 1/2 sprint / Text10: Elaboración del Plan de Dirección del Proyecto, Alcance, EDT y Cronograma
- 6: ·Estimación: No encontrado evidencia, luego 1/2 sprint / Text10: Tramitación y negociación de la aceptación del calendario y alcance por el cliente
- 8: Text10: Dirección y seguimiento del Sprint 1
- 9: Text10: Inicio del Sprint 1
- 10: Text10: Dirección y seguimiento del Sprint 1
- 11: Text10: Dirección y seguimiento del Sprint 2
- 12: Text10: Inicio Sprint 2
- 13: Text10: Dirección y seguimiento del Sprint 2
- 14: Text10: Dirección y seguimiento del Sprint 3
- 15: Text10: Inicio Sprint 3
- 16: Text10: Dirección y seguimiento del Sprint 3
- 17: Text10: Dirección y seguimiento del Sprint 4
- 18: Text10: Inicio Sprint 4
- 19: Text10: Dirección y seguimiento del Sprint 4
- 20: Text10: Dirección y seguimiento del Sprint 5
- 21: Text10: Inicio Sprint 5
- 22: Text10: Dirección y seguimiento del Sprint 5
- 23: Text10: Dirección y seguimiento del Sprint 6
- 24: Text10: Inicio Sprint 6
- 25: Text10: Dirección y seguimiento del Sprint 6

| ID | WBS | Task | Type | Duration | Start | Finish | Predecessors | Total slack | Free slack | Constraint | Resources | Work | Cost | Text11 | Text20 | Text3 | Text1 |
| --- | --- | --- | --- | --- | --- | --- | --- | --- | --- | --- | --- | --- | --- | --- | --- | --- | --- |
| 26 | 1.1.8 | **Traspaso al servicio de mantenimiento completado** |  | 1d | 2027-02-08 | 2027-02-08 |  | 1d |  |  |  | 1.5h | 92.7 | 1.1.8 | 1.1.8 |  |  |
| 27 | 1.1.8.1 | Traspaso al servicio de mantenimiento completado |  | 1d | 2027-02-08 | 2027-02-08 | 25 | 1d | 0d |  | Jefe de proyecto - 2027 [25%] | 1.5h | 92.7 | 1.1.8.1 | 1.1.8.1 |  |  |
| 28 | 1.1.9 | **Cierre del proyecto aprobado y completado** |  | 3d | 2027-02-09 | 2027-02-12 |  | 0d |  |  |  | 3h | 185.4 | 1.1.9 | 1.1.9 |  |  |
| 29 | 1.1.9.1 | Elaboración del Informe de Cierre y Lecciones Aprendidas |  | 1d | 2027-02-09 | 2027-02-09 | 25, 27 | 1d | 0d |  | Jefe de proyecto - 2027 [25%] | 1.5h | 92.7 | 1.1.9.1 | 1.1.9.1 | CPR |  |
| 30 | 1.1.9.2 | Cierre del proyecto aprobado y completado |  | 1d | 2027-02-10 | 2027-02-10 | 29 | 1d |  |  | Jefe de proyecto - 2027 [25%] | 1.5h | 92.7 | 1.1.9.2 | 1.1.9.2 | CPR |  |
| 31 | 1.1.9.3 | Cierre del proyecto | milestone | 0d | 2027-02-12 | 2027-02-12 | 30 | 0d |  | start no earlier than 2027-02-12 |  |  |  | 1.1.9.3 | 1.1.9.3 |  |  |
| 32 | 1.2 | **Adquisiciones** |  | 24d? | 2026-11-06 | 2026-12-11 |  | 20d |  |  |  | 6h | 360 | 1.6 | 1.6 |  |  |
| 33 | 1.2.1 | **Contrato del conector con ERP: pedido, seguimiento y aceptación** |  | 8d? | 2026-11-06 | 2026-11-18 |  | 20d |  |  |  | 4.5h | 270 | 1.6.1 | 1.6.1 |  |  |
| 34 | 1.2.1.1 | Pedido del conector ERP | milestone | 0d | 2026-11-06 | 2026-11-06 | 7 | 20d | 0d |  |  |  |  |  | 1.6.1.6 |  |  |
| 35 | 1.2.1.2 | Tramitación del Pedido del conector ERP tramitado |  | 1d | 2026-11-06 | 2026-11-06 | 34 | 20d | 0d |  | Jefe de proyecto - 2026 [25%] | 1.5h | 90 | 1.6.1.1 | 1.6.1.1 | PED |  |
| 36 | 1.2.1.3 | Primer pago (40%) | milestone | 0d | 2026-11-09 | 2026-11-09 | 35 | 20d | 0d | start no earlier than 2026-11-09 |  |  |  | 1.6.1.4 | 1.6.1.4 | CON |  |
| 37 | 1.2.1.4 | Seguimiento del proveedor del conector |  | 1d? | 2026-11-09 | 2026-11-09 | 36 | 20d | 0d |  | Jefe de proyecto - 2026 [25%] | 1.5h | 90 | 1.6.1.2 | 1.6.1.2 | SEG |  |
| 38 | 1.2.1.5 | Conector recibido y aceptado formalmente |  | 1d | 2026-11-10 | 2026-11-10 | 37 | 20d | 5d |  | Jefe de proyecto - 2026 [25%] | 1.5h | 90 | 1.6.1.3 | 1.6.1.3 | ACO |  |
| 39 | 1.2.1.6 | Segundo pago (60%) con Retención 10% | milestone | 0d | 2026-11-18 | 2026-11-18 | 38 | 53d |  | start no earlier than 2026-11-18 |  |  |  |  | 1.6.1.5 |  |  |
| 40 | 1.2.2 | **Encargo de documentación de uso y formación: seguimiento y aceptación** |  | 24d | 2026-11-06 | 2026-12-11 |  | 36d |  |  |  | 1.5h | 90 | 1.6.2 | 1.6.2 |  |  |
| 41 | 1.2.2.1 | Encargo de documentación y formación realizado |  | 1d | 2026-11-06 | 2026-11-06 | 7 | 59d | 0d |  | Jefe de proyecto - 2026 [25%] | 1.5h | 90 | 1.6.2.1 | 1.6.2.1 | EFO |  |
| 42 | 1.2.2.2 | Encargo de documentación | milestone | 0d | 2026-11-06 | 2026-11-06 | 41 | 59d | 23d | start no earlier than 2026-11-06 |  |  |  |  | 1.6.2.3 |  |  |
| 43 | 1.2.2.3 | Documentación entregada y acceso a preproducción habilitado para Formación | milestone | 0d | 2026-12-11 | 2026-12-11 | 42 | 36d | 13d | start no earlier than 2026-12-11 |  |  |  | 1.6.2.2 | 1.6.2.2 | DFO |  |
| 44 | 1.3 | **Integración con ERP · ENT-02** |  | 36d | 2026-11-09 | 2027-01-08 |  | 14d |  |  |  | 346.5h | 13,200 | 1.3 | 1.3 |  |  |
| 45 | 1.3.1 | **Sprint 1 · Especificación de interfaz ERP acordada (EP-04)** |  | 3d | 2026-11-09 | 2026-11-11 |  | 14d |  |  |  | 31.5h | 1,230 | 1.3.1 | 1.3.1 |  |  |
| 46 | 1.3.1.1 | Solcitud de Acceso a los datos del ERP | milestone | 0d | 2026-11-09 | 2026-11-09 | 7 | 14d | 0d | start no earlier than 2026-11-09 |  |  |  |  | 1.3.1.2 |  |  |
| 47 | 1.3.1.2 | Gestión Solcitud de Acceso a los datos del ERP |  | 1d | 2026-11-09 | 2026-11-09 | 46 | 14d | 0d |  | Jefe de proyecto - 2026 [25%] | 1.5h | 90 |  | 1.3.1.3 |  |  |
| 48 | 1.3.1.3 | Sprint 1 · Especificación de interfaz ERP acordada (EP-04) |  | 2d | 2026-11-10 | 2026-11-11 | 9, 46, 47 | 14d | 7d |  | Técncio de sistemas - 2026 [50%]; Desarrollador - 2026 | 30h | 1,140 | 1.3.1.1 | 1.3.1.1 |  | EP-04 |
| 49 | 1.3.2 | **Sprint 2 · Adaptación propia y ensayos con datos simulados (EP-04)** |  | 5d | 2026-11-23 | 2026-11-27 |  | 7d |  |  |  | 75h | 2,850 | 1.3.2 | 1.3.2 |  |  |
| 50 | 1.3.2.1 | Sprint 2 · Adaptación propia y ensayos con datos simulados (EP-04) |  | 5d | 2026-11-23 | 2026-11-27 | 12, 48 | 7d | 5d |  | Técncio de sistemas - 2026 [50%]; Desarrollador - 2026 | 75h | 2,850 | 1.3.2.1 | 1.3.2.1 |  | EP-04 |

Notes:
- 26: Text10: Traspaso al servicio de mantenimiento completado
- 27: Text10: Traspaso al servicio de mantenimiento completado
- 28: Text10: Cierre del proyecto aprobado y completado
- 29: Text10: Elaboración del Informe de Cierre y Lecciones Aprendidas
- 30: Text10: Cierre del proyecto aprobado y completado
- 31: Text10: Cierre del proyecto
- 32: Text10: Adquisiciones
- 33: Text10: Contrato del conector con ERP: pedido, seguimiento y aceptación
- 35: Text10: Pedido del conector ERP tramitado
- 36: Text10: Pago del control del conector HITO (TDB)
- 37: Text10: Seguimiento del proveedor del conector
- 38: Text10: Conector recibido y aceptado formalmente
- 40: Text10: Encargo de documentación de uso y formación: seguimiento y aceptación
- 41: Text10: Encargo de documentación y formación realizado
- 43: Text10: Documentación entregada y acceso a preproducción habilitado para Formación
- 44: Text10: Integración con ERP · ENT-02
- 45: Text10: Sprint 1 · Especificación de interfaz ERP acordada (EP-04)
- 48: Text10: Sprint 1 · Especificación de interfaz ERP acordada (EP-04)
- 49: Text10: Sprint 2 · Adaptación propia y ensayos con datos simulados (EP-04)
- 50: Text10: Sprint 2 · Adaptación propia y ensayos con datos simulados (EP-04)

| ID | WBS | Task | Type | Duration | Start | Finish | Predecessors | Total slack | Free slack | Constraint | Resources | Work | Cost | Text11 | Text20 | Text1 | Text3 |
| --- | --- | --- | --- | --- | --- | --- | --- | --- | --- | --- | --- | --- | --- | --- | --- | --- | --- |
| 51 | 1.3.3 | **Sprint 3 · Conector integrado, carga inicial y pruebas reales completadas (EP-04)** |  | 10d | 2026-12-07 | 2026-12-21 |  | 2d |  |  |  | 150h | 5,700 | 1.3.3 | 1.3.3 |  |  |
| 52 | 1.3.3.1 | Sprint 3 · Conector integrado, carga inicial y pruebas reales completadas (EP-04) |  | 5d | 2026-12-07 | 2026-12-14 | 15, 50, 38 | 2d | 0d |  | Técncio de sistemas - 2026 [50%]; Desarrollador - 2026 | 75h | 2,850 | 1.3.3.1 | 1.3.3.1 | EP-04 |  |
| 53 | 1.3.3.2 | Catálogo, precios y existencias del ERP, cargados y existencias del ERP, cargados y sincronizados (EP-04), con el conector y ERP funcionando |  | 5d | 2026-12-15 | 2026-12-21 | 52, 38 | 6.75d | 0d |  | Técncio de sistemas - 2026 [50%]; Desarrollador - 2026 | 75h | 2,850 |  | 1.3.3.3 | EP-04 |  |
| 54 | 1.3.3.3 | Aceptación del Conector | milestone | 0d | 2026-12-21 | 2026-12-21 | 52, 38, 53 | 24d | 0d | start no earlier than 2026-12-18 |  |  |  |  | 1.3.3.2 | EP-04 | ACO |
| 55 | 1.3.4 | **Sprint 4 · Sincronización comprobada y carga productiva de 32 tiendas (EP-04)** |  | 6d | 2026-12-22 | 2027-01-08 |  | 24d |  |  |  | 90h | 3,420 | 1.3.4 | 1.3.4 |  |  |
| 56 | 1.3.4.1 | Sprint 4 · Sincronización comprobada y carga productiva de 32 tiendas (EP-04) |  | 6d | 2026-12-22 | 2027-01-08 | 18, 54 | 24d |  |  | Técncio de sistemas - 2026 [50%]; Desarrollador - 2026 | 90h | 3,420 | 1.3.4.1 | 1.3.4.1 | EP-04 |  |
| 57 | 1.4 | **Plataforma de compra en línea · ENT-01** |  | 78d | 2026-10-05 | 2027-02-03 |  | 6d |  |  |  |  |  | 1.2 | 1.2 |  |  |
| 58 | 1.4.1 | **Planificación** |  | 32d | 2026-10-05 | 2026-11-18 |  | 42d |  |  |  |  |  | 1.2.1 | 1.2.1 |  |  |
| 59 | 1.4.1.1 | **Especificación funcional común y criterios de aceptación acordados (EP-01)** |  | 27d | 2026-10-05 | 2026-11-11 |  | 20.25d | 0d |  |  |  |  | 1.2.1.1 | 1.2.1.1 |  |  |
| 60 | 1.4.1.1.1 | Se Solicitó a TuSuper el alta en la pasarela de pago | milestone | 0d | 2026-10-05 | 2026-10-05 | 4 | 44.25d | 24d |  |  |  |  |  | 1.2.1.1.2 | EP-01 |  |
| 61 | 1.4.1.1.2 | Solicitud de Franjas de Entrega, zonas de reparto y repartidores y acceso a Datos ERP | milestone | 0d | 2026-11-09 | 2026-11-09 | 7 | 22.75d | 0d | start no earlier than 2026-11-09 |  |  |  |  | 1.2.1.1.3 | EP-03 |  |
| 62 | 1.4.1.1.3 | Gestión de la Solicitud de Franjas de Entrega, zonas de reparto y repartidores y acceso a Datos ERP |  | 0.5d | 2026-11-09 | 2026-11-09 | 61 | 22.75d | 0d |  |  |  |  |  | 1.2.1.1.6 | EP-03 |  |
| 63 | 1.4.1.1.4 | Solicitud de contrato a Jurídico sobre Taracera como encargada de procesamiento de datos de TuSuper | milestone | 0d | 2026-11-06 | 2026-11-06 | 7 | 23.25d | 0d | start no earlier than 2026-10-28 |  |  |  |  | 1.2.1.1.4 |  |  |
| 64 | 1.4.1.1.5 | Gestión de la Solicitud de contrato a Jurídico sobre Taracera como encargada de procesamiento de datos de TuSuper |  | 1d | 2026-11-06 | 2026-11-06 | 63 | 23.25d |  |  |  |  |  |  | 1.2.1.1.5 |  |  |
| 65 | 1.4.1.1.6 | Datos de franjas, capacidad, zonas de reparto y repartidores facilitados por TuSuper | milestone | 0d | 2026-11-09 | 2026-11-09 | 62 | 22.75d |  |  |  |  |  |  |  |  |  |
| 66 | 1.4.1.1.7 | Especificación funcional común y criterios de aceptación acordados (EP-01) |  | 3d | 2026-11-09 | 2026-11-11 | 9, 60 | 20.25d | 0d |  |  |  |  | 1.2.1.1.1 | 1.2.1.1.1 | EP-01 |  |
| 67 | 1.4.1.2 | **Sistema de diseño e interfaz común preparados (EP-02)** |  | 3d | 2026-11-12 | 2026-11-16 |  | 42d |  |  |  |  |  | 1.2.1.2 | 1.2.1.2 |  |  |
| 68 | 1.4.1.2.1 | Sistema de diseño e interfaz común preparados (EP-02) |  | 3d | 2026-11-12 | 2026-11-16 | 66 | 42d | 0d |  |  |  |  | 1.2.1.2.1 | 1.2.1.2.1 | EP-02 |  |
| 69 | 1.4.1.3 | **Arquitectura técnica de la plataforma diseñada (EP-03)** |  | 2d | 2026-11-17 | 2026-11-18 |  | 42d | 0d |  |  |  |  | 1.2.1.3 | 1.2.1.3 |  |  |
| 70 | 1.4.1.3.1 | Arquitectura técnica de la plataforma diseñada (EP-03) |  | 2d | 2026-11-17 | 2026-11-18 | 68 | 42d |  |  |  |  |  | 1.2.1.3.1 | 1.2.1.3.1 | EP-03 |  |
| 71 | 1.4.2 | **Sprint 1** |  | 19d | 2026-11-06 | 2026-12-02 |  | 24.25d |  |  |  |  |  | 1.2.2 | 1.2.2 |  |  |
| 72 | 1.4.2.1 | **RF-01 y RF-03 especificados y diseñados (E)** |  | 2.75d | 2026-11-12 | 2026-11-16 |  | 36.5d |  |  |  |  |  | 1.2.2.1 | 1.2.2.1 |  |  |
| 73 | 1.4.2.1.1 | RF-01 y RF-03 especificados y diseñados |  | 2.75d | 2026-11-12 | 2026-11-16 | 66, 9 | 36.5d | 4.25d |  |  |  |  | 1.2.2.1.1 | 1.2.2.1.1 | RF-01;RF-03 |  |
| 74 | 1.4.2.2 | **RF-06 especificado y diseñado (E)** |  | 7.75d | 2026-11-06 | 2026-11-17 |  | 24.25d |  |  |  |  |  | 1.2.2.2 | 1.2.2.2 |  |  |
| 75 | 1.4.2.2.1 | Equipos y conexión de las tiendas disponibles para usar el panel | milestone | 0d | 2026-11-06 | 2026-11-06 | 7 | 61d |  |  |  |  |  |  |  |  |  |
| 76 | 1.4.2.2.2 | RF-06 especificado y diseñado |  | 3.75d | 2026-11-12 | 2026-11-17 | 59 | 20.25d | 18.25d |  |  |  |  | 1.2.2.2.1 | 1.2.2.2.1 | RF-06 |  |

Notes:
- 51: Text10: Sprint 3 · Conector integrado, carga inicial y pruebas reales completadas (EP-04)
- 52: Text10: Sprint 3 · Conector integrado, carga inicial y pruebas reales completadas (EP-04)
- 55: Text10: Sprint 4 · Sincronización comprobada y carga productiva de 32 tiendas (EP-04)
- 56: Text10: Sprint 4 · Sincronización comprobada y carga productiva de 32 tiendas (EP-04)
- 57: Text10: Plataforma de compra en línea · ENT-01
- 58: Text10: Planificación
- 59: Text10: Especificación funcional común y criterios de aceptación acordados (EP-01)
- 66: Text10: Especificación funcional común y criterios de aceptación acordados (EP-01)
- 67: Text10: Sistema de diseño e interfaz común preparados (EP-02)
- 68: Text10: Sistema de diseño e interfaz común preparados (EP-02)
- 69: Text10: Arquitectura técnica de la plataforma diseñada (EP-03)
- 70: Text10: Arquitectura técnica de la plataforma diseñada (EP-03)
- 71: Text10: Sprint 1 · 09-20/11/2026
- 72: Text10: RF-01 y RF-03 especificados y diseñados (E)
- 73: ·Estimación (RF-01(min) + RF-03(min))/2 / Text10: RF-01 y RF-03 especificados y diseñados
- 74: Text10: RF-06 especificado y diseñado (E)
- 76: Text10: RF-06 especificado y diseñado

| ID | WBS | Task | Type | Duration | Start | Finish | Predecessors | Total slack | Free slack | Constraint | Text10 | Text11 | Text20 | Text1 |
| --- | --- | --- | --- | --- | --- | --- | --- | --- | --- | --- | --- | --- | --- | --- |
| 77 | 1.4.2.3 | **Entornos de desarrollo y CI/CD operativos (EP-03)** |  | 10d | 2026-11-19 | 2026-12-02 |  | 42d |  |  | Entornos de desarrollo y CI/CD operativos (EP-03) | 1.2.2.3 | 1.2.2.3 |  |
| 78 | 1.4.2.3.1 | Entornos de desarrollo y CI/CD operativos (EP-03) |  | 10d | 2026-11-19 | 2026-12-02 | 69 | 42d |  |  | Entornos de desarrollo y CI/CD operativos (EP-03) | 1.2.2.3.1 | 1.2.2.3.1 | EP-03 |
| 79 | 1.4.3 | **Sprint 2** |  | 24.75d | 2026-11-23 | 2027-01-07 |  | 13.25d |  |  | Sprint 2 · 23/11-04/12/2026 | 1.2.3 | 1.2.3 |  |
| 80 | 1.4.3.1 | **RF-01 y RF-03 construidos e integrados (C)** |  | 10d | 2026-11-23 | 2026-12-04 |  | 32.25d |  |  | RF-01 y RF-03 construidos e integrados (C) | 1.2.3.1 | 1.2.3.1 |  |
| 81 | 1.4.3.1.1 | RF-01 y RF-03 construidos e integrados |  | 10d | 2026-11-23 | 2026-12-04 | 73, 12 | 32.25d | 0d |  | RF-01 y RF-03 construidos e integrados | 1.2.3.1.1 | 1.2.3.1.1 | RF-01;RF-03 |
| 82 | 1.4.3.2 | **RF-02 y RF-04 especificados y diseñados (E)** |  | 3.66d | 2026-11-23 | 2026-11-26 |  | 24.51d |  |  | RF-02 y RF-04 especificados y diseñados (E) | 1.2.3.2 | 1.2.3.2 |  |
| 83 | 1.4.3.2.1 | RF-02 y RF-04 especificados y diseñados |  | 3.66d | 2026-11-23 | 2026-11-26 | 12 | 24.51d | 6.34d |  | RF-02 y RF-04 especificados y diseñados | 1.2.3.2.1 | 1.2.3.2.1 | RF-02;RF-04 |
| 84 | 1.4.3.3 | **RF-06 construido e integrado (C)** |  | 9.75d | 2026-12-15 | 2027-01-07 |  | 2d |  |  | RF-06 construido e integrado (C) | 1.2.3.3 | 1.2.3.3 |  |
| 85 | 1.4.3.3.1 | RF-06 construido e integrado |  | 9.75d | 2026-12-15 | 2027-01-07 | 76, 12, 52 | 2d | 0d |  | RF-06 construido e integrado | 1.2.3.3.1 | 1.2.3.3.1 | RF-06 |
| 86 | 1.4.3.4 | **RF-05 y RF-07 especificados y diseñados (E)** |  | 3.75d | 2026-11-23 | 2026-11-26 |  | 13.25d |  |  | RF-05 y RF-07 especificados y diseñados (E) | 1.2.3.4 | 1.2.3.4 |  |
| 87 | 1.4.3.4.1 | Recepción de Franjas y Repartidores | milestone | 0d | 2026-11-23 | 2026-11-23 | 62 | 13.25d | 0d | start no earlier than 2026-11-23 |  |  | 1.2.3.4.2 | RF-05 |
| 88 | 1.4.3.4.2 | RF-05 especificados y diseñados |  | 3.75d | 2026-11-23 | 2026-11-26 | 87, 12 | 13.25d | 6.25d |  |  |  | 1.2.3.4.3 | RF-05 |
| 89 | 1.4.3.4.3 | RF-07 especificados y diseñados |  | 1.5d | 2026-11-23 | 2026-11-24 | 12 | 15.5d | 8.5d |  | RF-05 y RF-07 especificados y diseñados | 1.2.3.4.1 | 1.2.3.4.1 | RF-05;RF-07 |
| 90 | 1.4.4 | **Sprint 3** |  | 10d | 2026-12-07 | 2026-12-21 |  | 7d |  |  | Sprint 3 · 07-18/12/2026 | 1.2.4 | 1.2.4 |  |
| 91 | 1.4.4.1 | **RF-01 verificado (V)** |  | 3.25d | 2026-12-07 | 2026-12-11 |  | 32.25d |  |  | RF-01 verificado (V) | 1.2.4.1 | 1.2.4.1 |  |
| 92 | 1.4.4.1.1 | RF-01 verificado (V) |  | 3.25d | 2026-12-07 | 2026-12-11 | 15, 81 | 32.25d | 0d |  | RF-01 verificado (V) | 1.2.4.1.1 | 1.2.4.1.1 | RF-01 |
| 93 | 1.4.4.1.2 | dentificación del comprador (RF-01.2) | milestone | 0d | 2026-12-11 | 2026-12-11 | 92 | 36.75d |  |  |  |  | 1.2.4.1.2 | RF-01 |
| 94 | 1.4.4.2 | **RF-04 construido e integrado (C)** |  | 9.25d | 2026-12-07 | 2026-12-21 |  | 24.25d |  |  | RF-04 construido e integrado (C) | 1.2.4.2 | 1.2.4.2 |  |
| 95 | 1.4.4.2.1 | RF-04 construido e integrado |  | 8.25d | 2026-12-07 | 2026-12-18 | 83, 15 | 24.25d | 0d |  | RF-04 construido e integrado | 1.2.4.2.1 | 1.2.4.2.1 | RF-04 |
| 96 | 1.4.4.2.2 | RF-04 pasarela de pago construida | milestone | 0d | 2026-12-18 | 2026-12-18 | 95 | 30.75d | 0d | start no earlier than 2026-12-17 |  |  | 1.2.4.2.2 | RF-04 |
| 97 | 1.4.4.2.3 | Solicitud de auditoria a TuSuper |  | 1d | 2026-12-18 | 2026-12-21 | 96 | 30.75d |  |  |  |  | 1.2.4.2.3 |  |
| 98 | 1.4.4.3 | **RF-05 construido e integrado (C)** |  | 9.75d | 2026-12-07 | 2026-12-21 |  | 7d |  |  | RF-05 construido e integrado (C) | 1.2.4.3 | 1.2.4.3 |  |
| 99 | 1.4.4.3.1 | RF-05 construido e integrado |  | 9.75d | 2026-12-07 | 2026-12-21 | 89, 15, 88 | 7d | 5d |  | RF-05 construido e integrado | 1.2.4.3.1 | 1.2.4.3.1 | RF-05 |
| 100 | 1.4.4.4 | **RF-08 especificado y diseñado (E)** |  | 3.75d | 2026-12-07 | 2026-12-11 |  | 16.75d |  |  | RF-08 especificado y diseñado (E) | 1.2.4.4 | 1.2.4.4 |  |
| 101 | 1.4.4.4.1 | RF-08 especificado y diseñado |  | 3.75d | 2026-12-07 | 2026-12-11 | 15 | 16.75d | 14.75d |  | RF-08 especificado y diseñado | 1.2.4.4.1 | 1.2.4.4.1 | RF-08 |

Notes:
- 83: ·Estimación: (RF-02(Max) + RF-04(Min)) / 2

| ID | WBS | Task | Type | Duration | Start | Finish | Predecessors | Total slack | Free slack | Constraint | Text11 | Text20 | Text1 |
| --- | --- | --- | --- | --- | --- | --- | --- | --- | --- | --- | --- | --- | --- |
| 102 | 1.4.4.5 | **Plan y escenarios de pruebas de sistema preparados (EP-05)** |  | 10d | 2026-12-07 | 2026-12-21 |  | 10d |  |  | 1.2.4.5 | 1.2.4.5 |  |
| 103 | 1.4.4.5.1 | Entorno de verificación de TuSuper y cargas de datos disponibles | milestone | 0d | 2026-12-21 | 2026-12-21 | 7, 53 | 30d |  |  |  |  |  |
| 104 | 1.4.4.5.2 | Plan y escenarios de pruebas de sistema preparados (EP-05) |  | 6d | 2026-12-07 | 2026-12-15 | 15 | 10d |  |  | 1.2.4.5.1 | 1.2.4.5.1 | EP-05 |
| 105 | 1.4.5 | **Sprint 4** |  | 10d | 2026-12-21 | 2027-01-13 |  | 7.75d |  |  | 1.2.5 | 1.2.5 |  |
| 106 | 1.4.5.1 | **RF-03 verificado (V)** |  | 4.5d | 2026-12-21 | 2027-01-05 |  | 26.5d |  |  | 1.2.5.1 | 1.2.5.1 |  |
| 107 | 1.4.5.1.1 | RF-03 verificado (V) |  | 2.25d | 2026-12-21 | 2026-12-23 | 18, 81, 92 | 26.5d | 0d |  | 1.2.5.1.1 | 1.2.5.1.1 | RF-03 |
| 108 | 1.4.5.1.2 | RF-03.4 Persistencia Sesión verificada (V) |  | 2.25d | 2026-12-23 | 2027-01-05 | 107 | 26.5d |  |  |  | 1.2.5.1.2 | RF-03 |
| 109 | 1.4.5.2 | **RF-02 construido e integrado (C)** |  | 10d | 2026-12-21 | 2027-01-13 |  | 9.17d |  |  | 1.2.5.2 | 1.2.5.2 |  |
| 110 | 1.4.5.2.1 | RF-02 construido e integrado |  | 10d | 2026-12-21 | 2027-01-13 | 83, 18 | 9.17d | 0d |  | 1.2.5.2.1 | 1.2.5.2.1 | RF-02 |
| 111 | 1.4.5.3 | **RF-05 y RF-06 verificados (V)** |  | 3.75d | 2027-01-07 | 2027-01-13 |  | 2d |  |  | 1.2.5.3 | 1.2.5.3 |  |
| 112 | 1.4.5.3.1 | RF-05 y RF-06 verificados |  | 3.75d | 2027-01-07 | 2027-01-13 | 99, 85, 18, 53 | 2d | 0d |  | 1.2.5.3.1 | 1.2.5.3.1 | RF-05;RF-06 |
| 113 | 1.4.6 | **Sprint 5** |  | 15.83d | 2027-01-11 | 2027-02-01 |  | 0d |  |  | 1.2.6 | 1.2.6 |  |
| 114 | 1.4.6.1 | **RF-02 y RF-04 verificados (V)** |  | 13.83d | 2027-01-13 | 2027-02-01 |  | 2.17d |  |  | 1.2.6.1 | 1.2.6.1 |  |
| 115 | 1.4.6.1.1 | RF-02 verificado |  | 5.83d | 2027-01-25 | 2027-02-01 | 98, 20, 53, 110 | 2.17d | 0d |  |  | 1.2.6.1.2 | RF-02 |
| 116 | 1.4.6.1.2 | RF-02.6 Datos de ERP por tienda verificado (V) | milestone | 0d | 2027-02-01 | 2027-02-01 | 115 | 2.17d |  |  |  | 1.2.6.1.4 | RF-02 |
| 117 | 1.4.6.1.3 | RF-04 Recepción de Credenciales de la pasarela | milestone | 0d | 2027-01-13 | 2027-01-13 | 84 | 14.5d | 1d | start no earlier than 2027-01-13 |  | 1.2.6.1.3 | RF-04 |
| 118 | 1.4.6.1.4 | RF-04 verificados |  | 1.5d | 2027-01-14 | 2027-01-15 | 21, 110, 52, 95, 101, 117 | 13.5d |  |  | 1.2.6.1.1 | 1.2.6.1.1 | RF-04 |
| 119 | 1.4.6.2 | **RF-07 y RF-08 construidos e integrados (C)** |  | 9.75d | 2027-01-13 | 2027-01-27 |  | 2d |  |  | 1.2.6.2 | 1.2.6.2 |  |
| 120 | 1.4.6.2.1 | RF-07 y RF-08 construidos e integrados |  | 9.75d | 2027-01-13 | 2027-01-27 | 89, 101, 21, 112 | 2d | 0d |  | 1.2.6.2.1 | 1.2.6.2.1 | RF-07;RF-08 |
| 121 | 1.4.6.3 | **Pruebas de sistema, carga y seguridad ejecutadas (EP-05)** |  | 6d | 2027-01-11 | 2027-01-18 |  | 0d |  |  | 1.2.6.3 | 1.2.6.3 |  |
| 122 | 1.4.6.3.1 | Pruebas de sistema, carga y seguridad ejecutadas (EP-05) |  | 6d | 2027-01-11 | 2027-01-18 | 104, 21 | 0d |  |  | 1.2.6.3.1 | 1.2.6.3.1 | EP-05 |
| 123 | 1.4.6.4 | **Seguimiento técnico del piloto: primer tramo completado (EP-05)** |  | 6d | 2027-01-19 | 2027-01-26 |  | 0d |  |  | 1.2.6.4 | 1.2.6.4 |  |
| 124 | 1.4.6.4.1 | Seguimiento técnico del piloto: primer tramo completado (EP-05) |  | 6d | 2027-01-19 | 2027-01-26 | 122, 21 | 0d |  |  | 1.2.6.4.1 | 1.2.6.4.1 | EP-05 |
| 125 | 1.4.7 | **Sprint 6** |  | 6d | 2027-01-27 | 2027-02-03 |  | 0d |  |  | 1.2.7 | 1.2.7 |  |
| 126 | 1.4.7.1 | **RF-07 y RF-08 verificados (V)** |  | 3.75d | 2027-01-27 | 2027-02-01 |  | 2d |  |  | 1.2.7.1 | 1.2.7.1 |  |
| 127 | 1.4.7.1.1 | RF-07 y RF-08 verificados |  | 3.75d | 2027-01-27 | 2027-02-01 | 24, 112, 53, 120 | 2d |  |  | 1.2.7.1.1 | 1.2.7.1.1 | RF-07;RF-08 |

Notes:
- 102: Text10: Plan y escenarios de pruebas de sistema preparados (EP-05)
- 104: Text10: Plan y escenarios de pruebas de sistema preparados (EP-05)
- 105: Text10: Sprint 4 · 21/12/2026–08/01/2027
- 106: Text10: RF-03 verificado (V)
- 107: Text10: RF-03 verificado (V)
- 109: Text10: RF-02 construido e integrado (C)
- 110: Text10: RF-02 construido e integrado
- 111: Text10: RF-05 y RF-06 verificados (V)
- 112: Text10: RF-05 y RF-06 verificados
- 113: Text10: Sprint 5 · 11–22/01/2027
- 114: Text10: RF-02 y RF-04 verificados (V)
- 118: Text10: RF-02 y RF-04 verificados
- 119: Text10: RF-07 y RF-08 construidos e integrados (C)
- 120: Text10: RF-07 y RF-08 construidos e integrados
- 121: Text10: Pruebas de sistema, carga y seguridad ejecutadas (EP-05)
- 122: Text10: Pruebas de sistema, carga y seguridad ejecutadas (EP-05)
- 123: Text10: Seguimiento técnico del piloto: primer tramocompletado (EP-05)
- 124: Text10: Seguimiento técnico del piloto: primer tramo completado (EP-05)
- 125: Text10: Sprint 6 · 25/01–05/02/2027
- 126: Text10: RF-07 y RF-08 verificados (V)
- 127: Text10: RF-07 y RF-08 verificados

| ID | WBS | Task | Type | Duration | Start | Finish | Predecessors | Total slack | Free slack | Constraint | Text11 | Text20 | Text1 | Text3 |
| --- | --- | --- | --- | --- | --- | --- | --- | --- | --- | --- | --- | --- | --- | --- |
| 128 | 1.4.7.2 | **Seguimiento técnico y evidencias finales del piloto completadas (EP-05)** |  | 6d | 2027-01-27 | 2027-02-03 |  | 0d |  |  | 1.2.7.2 | 1.2.7.2 |  |  |
| 129 | 1.4.7.2.1 | Seguimiento técnico y evidencias finales del piloto completadas (EP-05) |  | 6d | 2027-01-27 | 2027-02-03 | 124, 24 | 0d |  |  | 1.2.7.2.1 | 1.2.7.2.1 | EP-05 |  |
| 130 | 1.5 | **Documentación y formación · ENT-04** |  | 18d? | 2026-12-04 | 2027-01-11 |  | 23d |  |  | 1.5 | 1.5 |  |  |
| 131 | 1.5.1 | **Sprint 3 · Acceso Preproducción y Documentación técnica y funcional entregada a Formación (EP-07)** |  | 6d | 2026-12-04 | 2026-12-14 |  | 35d |  |  | 1.5.1 | 1.5.1 |  |  |
| 132 | 1.5.1.1 | Solicitud de las listas del personal a formar | milestone | 0d | 2026-12-04 | 2026-12-04 | 7 | 40d | 0d | start no earlier than 2026-12-04 |  | 1.5.1.4 |  |  |
| 133 | 1.5.1.2 | Gestión de la Solicitud de las listas del personal a formar |  | 1d | 2026-12-04 | 2026-12-04 | 132 | 40d |  |  |  | 1.5.1.5 |  |  |
| 134 | 1.5.1.3 | Sprint 3 · Documentación técnica y funcional entregada a Formación (EP-07) |  | 5d | 2026-12-07 | 2026-12-14 | 15 | 35d | 0d |  | 1.5.1.1 | 1.5.1.1 | EP-07 |  |
| 135 | 1.5.1.4 | Sprint 3 · Acceso a preproducción habilitado para Formación (EP-07) | milestone | 0d | 2026-12-14 | 2026-12-14 | 134, 15 | 35d |  |  | 1.5.2.1 | 1.5.1.2 | EP-07 |  |
| 136 | 1.5.2 | **Sprint 5 · Formación (EP-07)** |  | 18d? | 2026-12-04 | 2027-01-11 |  | 23d |  |  |  | 1.5.5 |  |  |
| 137 | 1.5.2.1 | Recepción de la lista del personal a formar | milestone | 0d | 2027-01-11 | 2027-01-11 | 21 | 23d | 0d |  |  | 1.5.5.1 |  |  |
| 138 | 1.5.2.2 | Personal de las tiendas piloto puesto a disposición por TuSuper | milestone | 0d | 2026-12-04 | 2026-12-04 | 132 | 41d |  |  |  |  |  |  |
| 139 | 1.5.2.3 | Formación del personal |  | 1d? | 2027-01-11 | 2027-01-11 | 137, 43 | 23d |  |  |  | 1.5.5.2 |  | DFI |
| 140 | 1.6 | **Puesta en producción · ENT-03** |  | 50d? | 2026-11-23 | 2027-02-11 |  | 0d |  |  | 1.4 | 1.4 |  |  |
| 141 | 1.6.1 | **Sprint 2 · Entorno de preproducción preparado (EP-06)** |  | 10d | 2026-11-23 | 2026-12-04 |  | 28d |  |  | 1.4.1 | 1.4.1 |  |  |
| 142 | 1.6.1.1 | Solicitud de cuentas de desarrollo (app móviles) | milestone | 0d | 2026-12-04 | 2026-12-04 | 7 | 24d | 0d | start no earlier than 2026-12-04 |  | 1.4.1.3 |  |  |
| 143 | 1.6.1.2 | Gestión de la Solicitud de cuentas de desarrollo |  | 1d | 2026-12-04 | 2026-12-04 | 12, 142 | 40d |  |  |  | 1.4.1.4 |  |  |
| 144 | 1.6.1.3 | Sprint 2 · Entorno de preproducción preparado (EP-06) |  | 5d | 2026-11-23 | 2026-11-27 | 12 | 28d | 4d |  | 1.4.1.1 | 1.4.1.1 | EP-06 |  |
| 145 | 1.6.1.4 | Entorno de preproducción construido | milestone | 0d | 2026-12-04 | 2026-12-04 | 144 | 41d |  | start no earlier than 2026-12-04 |  | 1.4.1.2 |  |  |
| 146 | 1.6.2 | **Sprint 4 · Despliegue de la plataforma en tres tiendas piloto (EP-06)** |  | 5d | 2026-12-21 | 2027-01-07 |  | 14d |  |  | 1.4.2 | 1.4.2 |  |  |
| 147 | 1.6.2.1 | Cuentas de desarrollo disponibles (app móviles) | milestone | 0d | 2026-12-21 | 2026-12-21 | 15, 142 | 14d | 0d | start no earlier than 2026-12-21 |  | 1.4.2.2 |  |  |
| 148 | 1.6.2.2 | Sprint 4 · Despliegue de la plataforma en tres tiendas piloto (EP-06) |  | 5d | 2026-12-21 | 2027-01-05 | 15, 147, 144 | 14d | 2d |  | 1.4.2.1 | 1.4.2.1 | EP-06 |  |
| 149 | 1.6.2.3 | Publicación de app móviles | milestone | 0d | 2027-01-07 | 2027-01-07 | 142 | 26d |  | start no earlier than 2027-01-07 |  | 1.4.2.3 |  |  |
| 150 | 1.6.3 | **Sprint 5 · Piloto operativo y supervisado: primer tramo (EP-06)** |  | 7d? | 2026-12-21 | 2027-01-11 |  | 18d |  |  | 1.4.3 | 1.4.3 |  |  |
| 151 | 1.6.3.1 | Tiendas piloto designadas y dos ciclos completos de reposición acreditados | milestone | 0d | 2026-12-21 | 2026-12-21 | 7, 53 | 30d |  |  |  |  |  |  |
| 152 | 1.6.3.2 | Sprint 5 · Piloto operativo y supervisado: primer tramo (EP-06) |  | 1d? | 2027-01-11 | 2027-01-11 | 21, 148 | 12d | 9d |  | 1.4.3.1 | 1.4.3.1 | EP-06 |  |

Notes:
- 128: Text10: Seguimiento técnico y evidencias finales del piloto completadas (EP-05)
- 129: Text10: Seguimiento técnico y evidencias finales del piloto completadas (EP-05)
- 130: Text10: Documentación y formación · ENT-04
- 131: Text10: Sprint 3 · Documentación técnica y funcional entregada a Formación (EP-07)
- 134: Text10: Sprint 3 · Documentación técnica y funcional entregada a Formación (EP-07)
- 135: Text10: Sprint 3 · Acceso a preproducción habilitado para Formación (EP-07)
- 140: Text10: Puesta en producción · ENT-03
- 141: Text10: Sprint 2 · Entorno de preproducción preparado (EP-06)
- 144: Text10: Sprint 2 · Entorno de preproducción preparado (EP-06)
- 146: Text10: Sprint 4 · Despliegue de la plataforma en tres tiendas piloto (EP-06)
- 148: Text10: Sprint 4 · Despliegue de la plataforma en tres tiendas piloto (EP-06)
- 150: Text10: Sprint 5 · Piloto operativo y supervisado: primer tramo (EP-06)
- 152: Text10: Sprint 5 · Piloto operativo y supervisado: primer tramo (EP-06)

| ID | WBS | Task | Duration | Start | Finish | Predecessors | Total slack | Text11 | Text20 | Text1 |
| --- | --- | --- | --- | --- | --- | --- | --- | --- | --- | --- |
| 153 | 1.6.4 | **Sprint 6 · 25/01–05/02/2027** | 14d | 2027-01-25 | 2027-02-11 |  | 0d | 1.4.4 | 1.4.4 |  |
| 154 | 1.6.4.1 | **Piloto operativo finalizado: segundo tramo (EP-06)** | 5d | 2027-01-25 | 2027-01-29 |  | 3d | 1.4.4.1 | 1.4.4.1 |  |
| 155 | 1.6.4.1.1 | Piloto operativo finalizado: segundo tramo (EP-06) | 5d | 2027-01-25 | 2027-01-29 | 24, 152 | 3d | 1.4.4.1.1 | 1.4.4.1.1 | EP-06 |
| 156 | 1.6.4.2 | **Despliegue en producción y apertura de las 32 tiendas (EP-06)** | 6d | 2027-02-04 | 2027-02-11 | 54, 116, 118, 127, 129 | 0d | 1.4.4.2 | 1.4.4.2 |  |
| 157 | 1.6.4.2.1 | Despliegue en producción y apertura de las 32 tiendas (EP-06) | 6d | 2027-02-04 | 2027-02-11 | 155 | 0d | 1.4.4.2.1 | 1.4.4.2.1 | EP-06 |

Notes:
- 153: Text10: Sprint 6 · 25/01–05/02/2027
- 154: Text10: Piloto operativo finalizado: segundo tramo (EP-06)
- 155: Text10: Piloto operativo finalizado: segundo tramo (EP-06)
- 156: Text10: Despliegue en producción y apertura de las 32 tiendas (EP-06)
- 157: Text10: Despliegue en producción y apertura de las 32 tiendas (EP-06)
