# Proyecto TSL-2627 TuSuper en Línea

Schedule from MS Project, 2026-10-05 to 2027-02-12, 6 hours a day, costs in €.

## Calendars

- Estándar: Mon-Fri 09:00-15:00; Sat-Sun off. Exceptions (off unless hours are given): 2026-10-12 (Día de la Constitución Española), 2026-12-06 (Día de la Constitución Española), 2026-12-08 (Inmaculada Concepción), 2026-12-24 to 2027-01-01 (Cierre de la consultora (NOR-20)), 2027-01-06 (Epifanía del Señor).

## Resources

| Resource | Rate |
| --- | --- |
| Jefe de proyecto - 2026 | 60 |
| Técncio de sistemas - 2026 | 50 |
| Diseñador UX - 2026 | 40 |
| Técnico de Calidad - 2026 | 37 |
| Desarrollador - 2026 | 35 |
| Desarrollador Junior - 2026 | 22 |
| Jefe de proyecto - 2027 | 61.8 |
| Técncio de sistemas - 2027 | 51.5 |
| Diseñador UX - 2027 | 41.2 |
| Técnico de Calidad - 2027 | 38.11 |
| Desarrollador - 2027 | 36.05 |
| Desarrollador Junior - 2027 | 22.66 |
| Desarrollador - 2026 | 35 |
| Desarrollador - 2027 | 36.05 |
| Diseñador UX - 2026 | 40 |
| Diseñador UX - 2027 | 41.2 |
| Técnico de Calidad - 2026 | 37 |
| Técnico de Calidad - 2027 | 38.11 |

## Schedule

| ID | WBS | Task | Type | Duration | Start | Finish | Predecessors | Total slack | Free slack | Constraint | Resources | Work | Cost | Text11 | Text20 | Text3 |
| --- | --- | --- | --- | --- | --- | --- | --- | --- | --- | --- | --- | --- | --- | --- | --- | --- |
| 1 | 1 | **TSL-2627 TuSuper en Línea** |  | 84d? | 2026-10-05 | 2027-02-12 |  | 0d |  |  |  | 511.5h | 23,181 |  |  |  |
| 2 | 1.1 | **Dirección del Proyecto** |  | 84d | 2026-10-05 | 2027-02-12 |  | 0d |  |  |  | 159h | 9,621 | 1.1 | 1.1 |  |
| 3 | 1.1.1 | **Planificación y gestión de la planificación** |  | 23d | 2026-10-05 | 2026-11-06 |  | 1d |  |  |  | 60h | 3,600 | 1.1.1 | 1.1.1 |  |
| 4 | 1.1.1.1 | Comienzo del Proyecto | milestone | 0d | 2026-10-05 | 2026-10-05 |  | 14d | 0d |  |  |  |  | 1.1.1.1 | 1.1.1.1 |  |
| 5 | 1.1.1.2 | Elaboración del Plan de Dirección del Proyecto, Alcance, EDT y Cronograma |  | 5d | 2026-10-05 | 2026-10-09 | 4 | 14d | 0d |  | Jefe de proyecto - 2026 | 30h | 1,800 | 1.1.1.2 | 1.1.1.2 | APR; SOL |
| 6 | 1.1.1.3 | Tramitación y negociación de la aceptación del calendario y alcance por el cliente |  | 5d | 2026-10-13 | 2026-10-19 | 5 | 14d | 13d |  | Jefe de proyecto - 2026 | 30h | 1,800 | 1.1.1.3 | 1.1.1.3 | ACE-LB |
| 7 | 1.1.1.4 | Aprobación del Plan de Dirección y Líneas Bases | milestone | 0d | 2026-11-06 | 2026-11-06 | 6 | 1d | 0d | start no earlier than 2026-11-06 |  |  |  |  | 1.1.1.4 |  |
| 8 | 1.1.2 | **Dirección y seguimiento del Sprint 1** |  | 10d | 2026-11-09 | 2026-11-20 |  | 0d |  |  |  | 15h | 900 | 1.1.2 | 1.1.2 |  |
| 9 | 1.1.2.1 | Inicio del Sprint 1 | milestone | 0d | 2026-11-09 | 2026-11-09 | 7 | 0d |  | start no earlier than 2026-11-09 |  |  |  | 1.1.2.2 | 1.1.2.2 |  |
| 10 | 1.1.2.2 | Dirección del Sprint 1 |  | 2d | 2026-11-09 | 2026-11-10 | 9 | 0d |  |  | Jefe de proyecto - 2026 [25%] | 3h | 180 | 1.1.2.1 | 1.1.2.1 | SPR; ISV |
| 11 | 1.1.2.3 | Seguimiento del Sprint 1 |  | 8d | 2026-11-11 | 2026-11-20 | 10 | 0d |  |  | Jefe de proyecto - 2026 [25%] | 12h | 720 |  |  | SPR; ISV |
| 12 | 1.1.3 | **Dirección y seguimiento del Sprint 2** |  | 10d | 2026-11-23 | 2026-12-04 |  | 0d |  |  |  | 15h | 900 | 1.1.3 | 1.1.3 |  |
| 13 | 1.1.3.1 | Inicio Sprint 2 | milestone | 0d | 2026-11-23 | 2026-11-23 | 11 | 0d |  | start no earlier than 2026-11-23 |  |  |  | 1.1.3.2 | 1.1.3.2 |  |
| 14 | 1.1.3.2 | Dirección del Sprint 2 |  | 2d | 2026-11-23 | 2026-11-24 | 13 | 0d |  |  | Jefe de proyecto - 2026 [25%] | 3h | 180 | 1.1.3.1 | 1.1.3.1 | SPR; ISV |
| 15 | 1.1.3.3 | Seguimiento del Sprint 2 |  | 8d | 2026-11-25 | 2026-12-04 | 14 | 0d |  |  | Jefe de proyecto - 2026 [25%] | 12h | 720 |  |  | SPR; ISV |
| 16 | 1.1.4 | **Dirección y seguimiento del Sprint 3** |  | 9d | 2026-12-07 | 2026-12-18 |  | 0d |  |  |  | 13.5h | 810 | 1.1.4 | 1.1.4 |  |
| 17 | 1.1.4.1 | Inicio Sprint 3 | milestone | 0d | 2026-12-07 | 2026-12-07 | 15 | 0d |  | start no earlier than 2026-12-07 |  |  |  | 1.1.4.2 | 1.1.4.2 |  |
| 18 | 1.1.4.2 | Dirección del Sprint 3 |  | 2d | 2026-12-07 | 2026-12-09 | 17 | 0d |  |  | Jefe de proyecto - 2026 [25%] | 3h | 180 | 1.1.4.1 | 1.1.4.1 | SPR; ISV |
| 19 | 1.1.4.3 | Seguimiento del Sprint 3 |  | 7d | 2026-12-10 | 2026-12-18 | 18 | 0d |  |  | Jefe de proyecto - 2026 [25%] | 10.5h | 630 |  |  | SPR; ISV |
| 20 | 1.1.5 | **Dirección y seguimiento del Sprint 4** |  | 7d | 2026-12-21 | 2027-01-08 |  | 0d |  |  |  | 21h | 1,278.9 | 1.1.5 | 1.1.5 |  |
| 21 | 1.1.5.1 | Inicio Sprint 4 | milestone | 0d | 2026-12-21 | 2026-12-21 | 19 | 0d |  | start no earlier than 2026-12-21 |  |  |  | 1.1.5.2 | 1.1.5.2 |  |
| 22 | 1.1.5.2 | Dirección del Sprint 4 |  | 2d | 2026-12-21 | 2026-12-22 | 21 | 0d |  |  | Jefe de proyecto - 2026 [25%]; Jefe de proyecto - 2027 [25%] | 6h | 365.4 | 1.1.5.1 | 1.1.5.1 | SPR; ISV |
| 23 | 1.1.5.3 | Seguimiento del Sprint 4 |  | 5d | 2026-12-23 | 2027-01-08 | 22 | 0d |  |  | Jefe de proyecto - 2026 [25%]; Jefe de proyecto - 2027 [25%] | 15h | 913.5 |  |  | SPR; ISV |
| 24 | 1.1.6 | **Dirección y seguimiento del Sprint 5** |  | 10d | 2027-01-11 | 2027-01-22 |  | 0d |  |  |  | 15h | 927 | 1.1.6 | 1.1.6 |  |
| 25 | 1.1.6.1 | Inicio Sprint 5 | milestone | 0d | 2027-01-11 | 2027-01-11 | 23 | 0d |  | start no earlier than 2027-01-11 |  |  |  | 1.1.6.2 | 1.1.6.2 |  |
| 26 | 1.1.6.2 | Dirección del Sprint 5 |  | 2d | 2027-01-11 | 2027-01-12 | 25 | 1d | 0d |  | Jefe de proyecto - 2027 [25%] | 3h | 185.4 | 1.1.6.1 | 1.1.6.1 | SPR; ISV |
| 27 | 1.1.6.3 | Seguimiento del Sprint 5 |  | 8d | 2027-01-13 | 2027-01-22 | 26 | 1d | 0d |  | Jefe de proyecto - 2027 [25%] | 12h | 741.6 |  |  | SPR; ISV |

Notes:
- 1: Text10: TSL-2627 TuSuper en Línea
- 2: Text10: Dirección del Proyecto
- 3: Text10: Planificación y gestión de la planificación
- 4: Text10: Comienzo del Proyecto
- 5: ·Estimación: No encontrado evidencia, luego 1/2 sprint / Text10: Elaboración del Plan de Dirección del Proyecto, Alcance, EDT y Cronograma
- 6: ·Estimación: No encontrado evidencia, luego 1/2 sprint / Text10: Tramitación y negociación de la aceptación del calendario y alcance por el cliente
- 8: Text10: Dirección y seguimiento del Sprint 1
- 9: Text10: Inicio del Sprint 1
- 10: Text10: Dirección y seguimiento del Sprint 1
- 12: Text10: Dirección y seguimiento del Sprint 2
- 13: Text10: Inicio Sprint 2
- 14: Text10: Dirección y seguimiento del Sprint 2
- 16: Text10: Dirección y seguimiento del Sprint 3
- 17: Text10: Inicio Sprint 3
- 18: Text10: Dirección y seguimiento del Sprint 3
- 20: Text10: Dirección y seguimiento del Sprint 4
- 21: Text10: Inicio Sprint 4
- 22: Text10: Dirección y seguimiento del Sprint 4
- 24: Text10: Dirección y seguimiento del Sprint 5
- 25: Text10: Inicio Sprint 5
- 26: Text10: Dirección y seguimiento del Sprint 5

| ID | WBS | Task | Type | Duration | Start | Finish | Predecessors | Total slack | Free slack | Constraint | Resources | Work | Cost | Text11 | Text20 | Text3 |
| --- | --- | --- | --- | --- | --- | --- | --- | --- | --- | --- | --- | --- | --- | --- | --- | --- |
| 28 | 1.1.7 | **Dirección y seguimiento del Sprint 6** |  | 10d | 2027-01-25 | 2027-02-05 |  | 1d |  |  |  | 15h | 927 | 1.1.7 | 1.1.7 |  |
| 29 | 1.1.7.1 | Inicio Sprint 6 | milestone | 0d | 2027-01-25 | 2027-01-25 | 27 | 1d | 0d | start no earlier than 2027-01-25 |  |  |  | 1.1.7.2 | 1.1.7.2 |  |
| 30 | 1.1.7.2 | Dirección del Sprint 6 |  | 2d | 2027-01-25 | 2027-01-26 | 29 | 1d | 0d |  | Jefe de proyecto - 2027 [25%] | 3h | 185.4 | 1.1.7.1 | 1.1.7.1 | SPR; ISV |
| 31 | 1.1.7.3 | Seguimiento del Sprint 6 |  | 8d | 2027-01-27 | 2027-02-05 | 30 | 1d | 0d |  | Jefe de proyecto - 2027 [25%] | 12h | 741.6 |  |  | SPR; ISV |
| 32 | 1.1.8 | **Traspaso al servicio de mantenimiento completado** |  | 1d | 2027-02-08 | 2027-02-08 |  | 1d |  |  |  | 1.5h | 92.7 | 1.1.8 | 1.1.8 |  |
| 33 | 1.1.8.1 | Preparación y coordinación del traspaso al servicio de mantenimiento. |  | 0.8d | 2027-02-08 | 2027-02-08 | 31 | 1d | 0d |  | Jefe de proyecto - 2027 [25%] | 1.2h | 74.16 | 1.1.8.1 | 1.1.8.1 |  |
| 34 | 1.1.8.2 | Entrega y traspaso al servicio de mantenimiento completado. |  | 0.2d | 2027-02-08 | 2027-02-08 | 33 | 1d | 0d |  | Jefe de proyecto - 2027 [25%] | 0.3h | 18.54 |  |  |  |
| 35 | 1.1.9 | **Cierre del proyecto aprobado y completado** |  | 3d | 2027-02-09 | 2027-02-12 |  | 0d |  |  |  | 3h | 185.4 | 1.1.9 | 1.1.9 |  |
| 36 | 1.1.9.1 | Elaboración del Informe de Cierre y Lecciones Aprendidas |  | 1d | 2027-02-09 | 2027-02-09 | 31, 34 | 1d | 0d |  | Jefe de proyecto - 2027 [25%] | 1.5h | 92.7 | 1.1.9.1 | 1.1.9.1 | CPR |
| 37 | 1.1.9.2 | Cierre del proyecto aprobado y completado |  | 1d | 2027-02-10 | 2027-02-10 | 36 | 1d |  |  | Jefe de proyecto - 2027 [25%] | 1.5h | 92.7 | 1.1.9.2 | 1.1.9.2 | CPR |
| 38 | 1.1.9.3 | Cierre del proyecto | milestone | 0d | 2027-02-12 | 2027-02-12 | 37 | 0d |  | start no earlier than 2027-02-12 |  |  |  | 1.1.9.3 | 1.1.9.3 |  |
| 39 | 1.2 | **Adquisiciones** |  | 24d? | 2026-11-06 | 2026-12-11 |  | 20.75d |  |  |  | 6h | 360 | 1.6 | 1.6 |  |
| 40 | 1.2.1 | **Contrato del conector con ERP: pedido, seguimiento y aceptación** |  | 8d? | 2026-11-06 | 2026-11-18 |  | 20.75d |  |  |  | 4.5h | 270 | 1.6.1 | 1.6.1 |  |
| 41 | 1.2.1.1 | Pedido del conector ERP | milestone | 0d | 2026-11-06 | 2026-11-06 | 7 | 20.75d | 0d |  |  |  |  |  | 1.6.1.6 |  |
| 42 | 1.2.1.2 | Tramitación del Pedido del conector ERP tramitado |  | 1d | 2026-11-06 | 2026-11-06 | 41 | 20.75d | 0d |  | Jefe de proyecto - 2026 [25%] | 1.5h | 90 | 1.6.1.1 | 1.6.1.1 | PED |
| 43 | 1.2.1.3 | Primer pago (40%) | milestone | 0d | 2026-11-09 | 2026-11-09 | 42 | 20.75d | 0d | start no earlier than 2026-11-09 |  |  |  | 1.6.1.4 | 1.6.1.4 | CON |
| 44 | 1.2.1.4 | Seguimiento del proveedor del conector |  | 1d? | 2026-11-09 | 2026-11-09 | 43 | 20.75d | 0d |  | Jefe de proyecto - 2026 [25%] | 1.5h | 90 | 1.6.1.2 | 1.6.1.2 | SEG |
| 45 | 1.2.1.5 | Conector recibido y aceptado formalmente |  | 1d | 2026-11-10 | 2026-11-10 | 44 | 20.75d | 5d |  | Jefe de proyecto - 2026 [25%] | 1.5h | 90 | 1.6.1.3 | 1.6.1.3 | ACO |
| 46 | 1.2.1.6 | Segundo pago (60%) con Retención 10% | milestone | 0d | 2026-11-18 | 2026-11-18 | 45 | 53d |  | start no earlier than 2026-11-18 |  |  |  |  | 1.6.1.5 |  |
| 47 | 1.2.2 | **Encargo de documentación de uso y formación: seguimiento y aceptación** |  | 24d | 2026-11-06 | 2026-12-11 |  | 37d |  |  |  | 1.5h | 90 | 1.6.2 | 1.6.2 |  |
| 48 | 1.2.2.1 | Encargo y elaboración de documentación |  | 0.2d | 2026-11-06 | 2026-11-06 | 7 | 59.8d | 0d |  | Jefe de proyecto - 2026 [25%] | 0.3h | 18 | 1.6.2.1 | 1.6.2.1 | EFO |
| 49 | 1.2.2.2 | Encargo de documentación | milestone | 0d | 2026-11-06 | 2026-11-06 | 48 | 59.8d | 23.8d | start no earlier than 2026-11-06 |  |  |  |  | 1.6.2.3 |  |
| 50 | 1.2.2.3 | Documentación entregada y acceso a preproducción habilitado para Formación | milestone | 0d | 2026-12-11 | 2026-12-11 | 49 | 36d | 13d | start no earlier than 2026-12-11 |  |  |  | 1.6.2.2 | 1.6.2.2 | DFO |
| 51 | 1.2.2.4 | Realización de la formación |  | 0.8d | 2026-11-06 | 2026-11-06 | 48 | 60d |  |  | Jefe de proyecto - 2026 [25%] | 1.2h | 72 |  |  | EFO |

Notes:
- 28: Text10: Dirección y seguimiento del Sprint 6
- 29: Text10: Inicio Sprint 6
- 30: Text10: Dirección y seguimiento del Sprint 6
- 32: Text10: Traspaso al servicio de mantenimiento completado
- 33: Text10: Traspaso al servicio de mantenimiento completado
- 35: Text10: Cierre del proyecto aprobado y completado
- 36: Text10: Elaboración del Informe de Cierre y Lecciones Aprendidas
- 37: Text10: Cierre del proyecto aprobado y completado
- 38: Text10: Cierre del proyecto
- 39: Text10: Adquisiciones
- 40: Text10: Contrato del conector con ERP: pedido, seguimiento y aceptación
- 42: Text10: Pedido del conector ERP tramitado
- 43: Text10: Pago del control del conector HITO (TDB)
- 44: Text10: Seguimiento del proveedor del conector
- 45: Text10: Conector recibido y aceptado formalmente
- 47: Text10: Encargo de documentación de uso y formación: seguimiento y aceptación
- 48: Text10: Encargo de documentación y formación realizado
- 50: Text10: Documentación entregada y acceso a preproducción habilitado para Formación

| ID | WBS | Task | Type | Duration | Start | Finish | Predecessors | Total slack | Free slack | Constraint | Resources | Work | Cost | Text11 | Text20 | Text1 | Text3 |
| --- | --- | --- | --- | --- | --- | --- | --- | --- | --- | --- | --- | --- | --- | --- | --- | --- | --- |
| 52 | 1.3 | **Integración con ERP · ENT-02** |  | 36d | 2026-11-09 | 2027-01-08 |  | 14.75d |  |  |  | 346.5h | 13,200 | 1.3 | 1.3 |  |  |
| 53 | 1.3.1 | **Sprint 1 · Especificación de interfaz ERP acordada (EP-04)** |  | 3d | 2026-11-09 | 2026-11-11 |  | 14.75d |  |  |  | 31.5h | 1,230 | 1.3.1 | 1.3.1 |  |  |
| 54 | 1.3.1.1 | Solcitud de Acceso a los datos del ERP | milestone | 0d | 2026-11-09 | 2026-11-09 | 7 | 14.75d | 0d | start no earlier than 2026-11-09 |  |  |  |  | 1.3.1.2 |  |  |
| 55 | 1.3.1.2 | Gestión Solcitud de Acceso a los datos del ERP |  | 1d | 2026-11-09 | 2026-11-09 | 54 | 14.75d | 0d |  | Jefe de proyecto - 2026 [25%] | 1.5h | 90 |  | 1.3.1.3 |  |  |
| 56 | 1.3.1.3 | Sprint 1 · Especificación de interfaz ERP acordada (EP-04) |  | 2d | 2026-11-10 | 2026-11-11 | 9, 54, 55 | 14.75d | 7d |  | Técncio de sistemas - 2026 [50%]; Desarrollador - 2026 | 30h | 1,140 | 1.3.1.1 | 1.3.1.1 | EP-04 |  |
| 57 | 1.3.2 | **Sprint 2 · Adaptación propia y ensayos con datos simulados (EP-04)** |  | 5d | 2026-11-23 | 2026-11-27 |  | 7.75d |  |  |  | 75h | 2,850 | 1.3.2 | 1.3.2 |  |  |
| 58 | 1.3.2.1 | Sprint 2 · Adaptación propia (EP-04) |  | 4d | 2026-11-23 | 2026-11-26 | 13, 56 | 7.75d | 0d |  | Técncio de sistemas - 2026 [50%]; Desarrollador - 2026 | 60h | 2,280 | 1.3.2.1 | 1.3.2.1 | EP-04 |  |
| 59 | 1.3.2.2 | Sprint 2 · Ensayos con datos simulados (EP-04) |  | 1d | 2026-11-27 | 2026-11-27 | 58 | 7.75d | 5d |  | Técncio de sistemas - 2026 [50%]; Desarrollador - 2026 | 15h | 570 |  |  | EP-04 |  |
| 60 | 1.3.3 | **Sprint 3 · Conector integrado, carga inicial y pruebas reales completadas (EP-04)** |  | 10d | 2026-12-07 | 2026-12-21 |  | 2.75d |  |  |  | 150h | 5,700 | 1.3.3 | 1.3.3 |  |  |
| 61 | 1.3.3.1 | Sprint 3 · Conector integrado, carga inicial y pruebas reales completadas (EP-04) |  | 5d | 2026-12-07 | 2026-12-14 | 17, 45, 59 | 2.75d | 0d |  | Técncio de sistemas - 2026 [50%]; Desarrollador - 2026 | 75h | 2,850 | 1.3.3.1 | 1.3.3.1 | EP-04 |  |
| 62 | 1.3.3.2 | Catálogo, precios y existencias del ERP, cargados y existencias del ERP, cargados y sincronizados (EP-04), con el conector y ERP funcionando |  | 5d | 2026-12-15 | 2026-12-21 | 61, 45 | 5.75d | 0d |  | Técncio de sistemas - 2026 [50%]; Desarrollador - 2026 | 75h | 2,850 |  | 1.3.3.3 | EP-04 |  |
| 63 | 1.3.3.3 | Aceptación del Conector | milestone | 0d | 2026-12-21 | 2026-12-21 | 61, 45, 62 | 24d | 0d | start no earlier than 2026-12-18 |  |  |  |  | 1.3.3.2 | EP-04 | ACO |
| 64 | 1.3.4 | **Sprint 4 · Sincronización comprobada y carga productiva de 32 tiendas (EP-04)** |  | 6d | 2026-12-22 | 2027-01-08 |  | 24d |  |  |  | 90h | 3,420 | 1.3.4 | 1.3.4 |  |  |
| 65 | 1.3.4.1 | Sprint 4 · Sincronización comprobada (EP-04) |  | 2d | 2026-12-22 | 2026-12-23 | 21, 63 | 24d | 0d |  | Técncio de sistemas - 2026 [50%]; Desarrollador - 2026 | 30h | 1,140 | 1.3.4.1 | 1.3.4.1 | EP-04 |  |
| 66 | 1.3.4.2 | Sprint 4 · Carga productiva de 32 tiendas (EP-04) |  | 4d | 2027-01-04 | 2027-01-08 | 65 | 24d |  |  | Técncio de sistemas - 2026 [50%]; Desarrollador - 2026 | 60h | 2,280 |  |  | EP-04 |  |
| 67 | 1.4 | **Plataforma de compra en línea · ENT-01** |  | 78d? | 2026-10-05 | 2027-02-03 |  | 6d |  |  |  |  |  | 1.2 | 1.2 |  |  |
| 68 | 1.4.1 | **Planificación** |  | 32d | 2026-10-05 | 2026-11-18 |  | 42d |  |  |  |  |  | 1.2.1 | 1.2.1 |  |  |
| 69 | 1.4.1.1 | **Especificación funcional común y criterios de aceptación acordados (EP-01)** |  | 27d | 2026-10-05 | 2026-11-11 |  | 20d | 0d |  |  |  |  | 1.2.1.1 | 1.2.1.1 |  |  |
| 70 | 1.4.1.1.1 | Se Solicitó a TuSuper el alta en la pasarela de pago | milestone | 0d | 2026-10-05 | 2026-10-05 | 4 | 44d | 24d |  |  |  |  |  | 1.2.1.1.2 | EP-01 |  |
| 71 | 1.4.1.1.2 | Solicitud de Franjas de Entrega, zonas de reparto y repartidores y acceso a Datos ERP | milestone | 0d | 2026-11-09 | 2026-11-09 | 7 | 20.75d | 0d | start no earlier than 2026-11-09 |  |  |  |  | 1.2.1.1.3 | EP-03 |  |
| 72 | 1.4.1.1.3 | Gestión de la Solicitud de Franjas de Entrega, zonas de reparto y repartidores y acceso a Datos ERP |  | 0.5d | 2026-11-09 | 2026-11-09 | 71 | 20.75d | 0d |  |  |  |  |  | 1.2.1.1.6 | EP-03 |  |
| 73 | 1.4.1.1.4 | Solicitud de contrato a Jurídico sobre Taracera como encargada de procesamiento de datos de TuSuper | milestone | 0d | 2026-11-06 | 2026-11-06 | 7 | 23d | 0d | start no earlier than 2026-10-28 |  |  |  |  | 1.2.1.1.4 |  |  |
| 74 | 1.4.1.1.5 | Gestión de la Solicitud de contrato a Jurídico sobre Taracera como encargada de procesamiento de datos de TuSuper |  | 1d | 2026-11-06 | 2026-11-06 | 73 | 23d |  |  |  |  |  |  | 1.2.1.1.5 |  |  |
| 75 | 1.4.1.1.6 | Datos de franjas, capacidad, zonas de reparto y repartidores facilitados por TuSuper | milestone | 0d | 2026-11-09 | 2026-11-09 | 72 | 22.5d |  |  |  |  |  |  |  |  |  |
| 76 | 1.4.1.1.7 | Especificación funcional común y criterios de aceptación acordados (EP-01) |  | 3d | 2026-11-09 | 2026-11-11 | 9, 70 | 20d | 0d |  |  |  |  | 1.2.1.1.1 | 1.2.1.1.1 | EP-01 |  |

Notes:
- 52: Text10: Integración con ERP · ENT-02
- 53: Text10: Sprint 1 · Especificación de interfaz ERP acordada (EP-04)
- 56: Text10: Sprint 1 · Especificación de interfaz ERP acordada (EP-04)
- 57: Text10: Sprint 2 · Adaptación propia y ensayos con datos simulados (EP-04)
- 58: Text10: Sprint 2 · Adaptación propia y ensayos con datos simulados (EP-04)
- 60: Text10: Sprint 3 · Conector integrado, carga inicial y pruebas reales completadas (EP-04)
- 61: Text10: Sprint 3 · Conector integrado, carga inicial y pruebas reales completadas (EP-04)
- 64: Text10: Sprint 4 · Sincronización comprobada y carga productiva de 32 tiendas (EP-04)
- 65: Text10: Sprint 4 · Sincronización comprobada y carga productiva de 32 tiendas (EP-04)
- 67: Text10: Plataforma de compra en línea · ENT-01
- 68: Text10: Planificación
- 69: Text10: Especificación funcional común y criterios de aceptación acordados (EP-01)
- 76: Text10: Especificación funcional común y criterios de aceptación acordados (EP-01)

| ID | WBS | Task | Type | Duration | Start | Finish | Predecessors | Total slack | Free slack | Text10 | Text11 | Text20 | Text1 |
| --- | --- | --- | --- | --- | --- | --- | --- | --- | --- | --- | --- | --- | --- |
| 77 | 1.4.1.2 | **Sistema de diseño e interfaz común preparados (EP-02)** |  | 3d | 2026-11-12 | 2026-11-16 |  | 42d |  | Sistema de diseño e interfaz común preparados (EP-02) | 1.2.1.2 | 1.2.1.2 |  |
| 78 | 1.4.1.2.1 | Sistema de diseño (EP-02) |  | 2d | 2026-11-12 | 2026-11-13 | 76 | 42d | 0d | Sistema de diseño e interfaz común preparados (EP-02) | 1.2.1.2.1 | 1.2.1.2.1 | EP-02 |
| 79 | 1.4.1.2.2 | Interfaz común preparada (EP-02) |  | 1d | 2026-11-16 | 2026-11-16 | 78 | 42d | 0d |  |  |  | EP-02 |
| 80 | 1.4.1.3 | **Arquitectura técnica de la plataforma diseñada (EP-03)** |  | 2d | 2026-11-17 | 2026-11-18 |  | 42d | 0d | Arquitectura técnica de la plataforma diseñada (EP-03) | 1.2.1.3 | 1.2.1.3 |  |
| 81 | 1.4.1.3.1 | Definición y planificación de la arquitectura técnica de la plataforma (EP-03). |  | 1d | 2026-11-17 | 2026-11-17 | 79 | 42d | 0d | Arquitectura técnica de la plataforma diseñada (EP-03) | 1.2.1.3.1 | 1.2.1.3.1 | EP-03 |
| 82 | 1.4.1.3.2 | Diseño y documentación de la arquitectura técnica de la plataforma completados (EP-03). |  | 1d | 2026-11-18 | 2026-11-18 | 81 | 42d |  |  |  |  | EP-03 |
| 83 | 1.4.2 | **Sprint 1** |  | 19d? | 2026-11-06 | 2026-12-02 |  | 24d |  | Sprint 1 · 09-20/11/2026 | 1.2.2 | 1.2.2 |  |
| 84 | 1.4.2.1 | **RF-01 y RF-03 especificados y diseñados (E)** |  | 3.75d? | 2026-11-12 | 2026-11-17 |  | 33.5d |  | RF-01 y RF-03 especificados y diseñados (E) | 1.2.2.1 | 1.2.2.1 |  |
| 85 | 1.4.2.1.1 | RF-01 especificado |  | 2.75d | 2026-11-12 | 2026-11-16 | 76, 9 | 33.5d | 0d | RF-01 y RF-03 especificados y diseñados | 1.2.2.1.1 | 1.2.2.1.1 | RF-01 |
| 86 | 1.4.2.1.2 | RF-01 diseñado |  | 1d? | 2026-11-16 | 2026-11-17 | 85 | 33.5d | 3.25d |  |  |  | RF-01 |
| 87 | 1.4.2.1.3 | RF-03 especificado |  | 1d? | 2026-11-12 | 2026-11-12 | 76, 9 | 44.25d | 0d |  |  |  | RF-03 |
| 88 | 1.4.2.1.4 | RF-03 diseñado |  | 1d? | 2026-11-13 | 2026-11-13 | 87 | 44.25d | 5d |  |  |  | RF-03 |
| 89 | 1.4.2.2 | **RF-06 especificado y diseñado (E)** |  | 8.75d? | 2026-11-06 | 2026-11-18 |  | 24d |  | RF-06 especificado y diseñado (E) | 1.2.2.2 | 1.2.2.2 |  |
| 90 | 1.4.2.2.1 | Equipos y conexión de las tiendas disponibles para usar el panel | milestone | 0d | 2026-11-06 | 2026-11-06 | 7 | 61d |  |  |  |  |  |
| 91 | 1.4.2.2.2 | RF-06 especificado |  | 3.75d | 2026-11-12 | 2026-11-17 | 69 | 20d | 0d | RF-06 especificado y diseñado | 1.2.2.2.1 | 1.2.2.2.1 | RF-06 |
| 92 | 1.4.2.2.3 | RF-06 diseñado |  | 1d? | 2026-11-17 | 2026-11-18 | 91 | 20d | 17.25d |  |  |  | RF-06 |
| 93 | 1.4.2.3 | **Entornos de desarrollo y CI/CD operativos (EP-03)** |  | 10d | 2026-11-19 | 2026-12-02 |  | 42d |  | Entornos de desarrollo y CI/CD operativos (EP-03) | 1.2.2.3 | 1.2.2.3 |  |
| 94 | 1.4.2.3.1 | Entornos de desarrollo operativos (EP-03) |  | 5d | 2026-11-19 | 2026-11-25 | 80 | 42d | 0d | Entornos de desarrollo y CI/CD operativos (EP-03) | 1.2.2.3.1 | 1.2.2.3.1 | EP-03 |
| 95 | 1.4.2.3.2 | CI/CD operativos (EP-03) |  | 5d | 2026-11-26 | 2026-12-02 | 94 | 42d |  |  |  |  | EP-03 |
| 96 | 1.4.3 | **Sprint 2** |  | 25.75d? | 2026-11-23 | 2027-01-08 |  | 11.25d |  | Sprint 2 · 23/11-04/12/2026 | 1.2.3 | 1.2.3 |  |
| 97 | 1.4.3.1 | **RF-01 y RF-03 construidos e integrados (C)** |  | 11d? | 2026-11-23 | 2026-12-07 |  | 30.25d |  | RF-01 y RF-03 construidos e integrados (C) | 1.2.3.1 | 1.2.3.1 |  |
| 98 | 1.4.3.1.1 | RF-01 construido |  | 10d | 2026-11-23 | 2026-12-04 | 13, 86 | 30.25d | 0d | RF-01 y RF-03 construidos e integrados | 1.2.3.1.1 | 1.2.3.1.1 | RF-01 |
| 99 | 1.4.3.1.2 | RF-01 integrado |  | 1d? | 2026-12-07 | 2026-12-07 | 98 | 30.25d | 0d |  |  |  | RF-01 |
| 100 | 1.4.3.1.3 | RF-03 construido |  | 1d? | 2026-11-23 | 2026-11-23 | 13, 88 | 39.25d | 0d |  |  |  | RF-03 |
| 101 | 1.4.3.1.4 | RF-03 integrado |  | 1d? | 2026-11-24 | 2026-11-24 | 100 | 39.25d | 9d |  |  |  | RF-03 |

Notes:
- 85: ·Estimación (RF-01(min) + RF-03(min))/2

| ID | WBS | Task | Type | Duration | Start | Finish | Predecessors | Total slack | Free slack | Constraint | Text10 | Text11 | Text20 | Text1 |
| --- | --- | --- | --- | --- | --- | --- | --- | --- | --- | --- | --- | --- | --- | --- |
| 102 | 1.4.3.2 | **RF-02 y RF-04 especificados y diseñados (E)** |  | 4.66d? | 2026-11-23 | 2026-11-27 |  | 22.51d |  |  | RF-02 y RF-04 especificados y diseñados (E) | 1.2.3.2 | 1.2.3.2 |  |
| 103 | 1.4.3.2.1 | RF-02 especificado |  | 3.66d | 2026-11-23 | 2026-11-26 | 13 | 22.51d | 0d |  | RF-02 y RF-04 especificados y diseñados | 1.2.3.2.1 | 1.2.3.2.1 | RF-02 |
| 104 | 1.4.3.2.2 | RF-02 diseñado |  | 1d? | 2026-11-26 | 2026-11-27 | 103 | 22.51d | 14.34d |  |  |  |  | RF-02 |
| 105 | 1.4.3.2.3 | RF-04 especificado |  | 1d? | 2026-11-23 | 2026-11-23 | 13 | 31.25d | 0d |  |  |  |  | RF-04 |
| 106 | 1.4.3.2.4 | RF-04 diseñado |  | 1d? | 2026-11-24 | 2026-11-24 | 105 | 31.25d | 8d |  |  |  |  | RF-04 |
| 107 | 1.4.3.3 | **RF-06 construido e integrado (C)** |  | 10.75d? | 2026-12-15 | 2027-01-08 |  | 2.75d | 2.25d |  | RF-06 construido e integrado (C) | 1.2.3.3 | 1.2.3.3 |  |
| 108 | 1.4.3.3.1 | RF-06 construido |  | 9.75d | 2026-12-15 | 2027-01-07 | 13, 61, 92 | 2.75d | 0d |  | RF-06 construido e integrado | 1.2.3.3.1 | 1.2.3.3.1 | RF-06 |
| 109 | 1.4.3.3.2 | RF-06 integrado |  | 1d? | 2027-01-07 | 2027-01-08 | 108 | 2.75d | 0d |  |  |  |  | RF-06 |
| 110 | 1.4.3.4 | **RF-05 y RF-07 especificados y diseñados (E)** |  | 3.75d? | 2026-11-23 | 2026-11-26 |  | 11.25d |  |  | RF-05 y RF-07 especificados y diseñados (E) | 1.2.3.4 | 1.2.3.4 |  |
| 111 | 1.4.3.4.1 | Recepción de Franjas y Repartidores | milestone | 0d | 2026-11-23 | 2026-11-23 | 72 | 11.25d | 0d | start no earlier than 2026-11-23 |  |  | 1.2.3.4.2 | RF-05 |
| 112 | 1.4.3.4.2 | RF-05 especificado |  | 3.75d | 2026-11-23 | 2026-11-26 | 111, 13 | 11.25d | 0d |  |  |  | 1.2.3.4.3 | RF-05 |
| 113 | 1.4.3.4.3 | RF-05 diseñado | milestone | 0d | 2026-11-26 | 2026-11-26 | 112 | 11.25d | 6.25d |  | RF-05 y RF-07 especificados y diseñados | 1.2.3.4.1 | 1.2.3.4.1 | RF-05 |
| 114 | 1.4.3.4.4 | RF-07 especificado |  | 1.5d | 2026-11-23 | 2026-11-24 | 13 | 12.5d | 0d |  |  |  |  | RF-07 |
| 115 | 1.4.3.4.5 | RF-07 diseñado |  | 1d? | 2026-11-24 | 2026-11-25 | 114 | 12.5d | 7.5d |  |  |  |  | RF-07 |
| 116 | 1.4.4 | **Sprint 3** |  | 10.75d? | 2026-12-07 | 2026-12-22 |  | 5d |  |  | Sprint 3 · 07-18/12/2026 | 1.2.4 | 1.2.4 |  |
| 117 | 1.4.4.1 | **RF-01 verificado (V)** |  | 4.25d? | 2026-12-09 | 2026-12-15 |  | 30.25d |  |  | RF-01 verificado (V) | 1.2.4.1 | 1.2.4.1 |  |
| 118 | 1.4.4.1.1 | Ejecución de las pruebas de verificación del requisito funcional RF-01 |  | 3.25d | 2026-12-09 | 2026-12-14 | 17, 99, 101 | 30.25d | 0d |  | RF-01 verificado (V) | 1.2.4.1.1 | 1.2.4.1.1 | RF-01 |
| 119 | 1.4.4.1.2 | Verificación del requisito funcional RF-01 completada (V) |  | 1d? | 2026-12-14 | 2026-12-15 | 118 | 30.25d | 0d |  |  |  |  | RF-01 |
| 120 | 1.4.4.1.3 | dentificación del comprador (RF-01.2) | milestone | 0d | 2026-12-15 | 2026-12-15 | 119 | 34.75d |  |  |  |  | 1.2.4.1.2 | RF-01 |
| 121 | 1.4.4.2 | **RF-04 construido e integrado (C)** |  | 10.25d? | 2026-12-07 | 2026-12-22 |  | 23.25d |  |  | RF-04 construido e integrado (C) | 1.2.4.2 | 1.2.4.2 |  |
| 122 | 1.4.4.2.1 | RF-04 construido |  | 8.25d | 2026-12-07 | 2026-12-18 | 17, 106 | 23.25d | 0d |  | RF-04 construido e integrado | 1.2.4.2.1 | 1.2.4.2.1 | RF-04 |
| 123 | 1.4.4.2.2 | RF-04 integrado |  | 1d? | 2026-12-18 | 2026-12-21 | 122 | 23.25d | 0d |  |  |  |  | RF-04 |
| 124 | 1.4.4.2.3 | RF-04 pasarela de pago construida | milestone | 0d | 2026-12-21 | 2026-12-21 | 123 | 29.75d | 0d | start no earlier than 2026-12-17 |  |  | 1.2.4.2.2 | RF-04 |
| 125 | 1.4.4.2.4 | Solicitud de auditoria a TuSuper |  | 1d | 2026-12-21 | 2026-12-22 | 124 | 29.75d |  |  |  |  | 1.2.4.2.3 |  |

Notes:
- 103: ·Estimación: (RF-02(Max) + RF-04(Min)) / 2

| ID | WBS | Task | Type | Duration | Start | Finish | Predecessors | Total slack | Free slack | Constraint | Text10 | Text11 | Text20 | Text1 |
| --- | --- | --- | --- | --- | --- | --- | --- | --- | --- | --- | --- | --- | --- | --- |
| 126 | 1.4.4.3 | **RF-05 construido e integrado (C)** |  | 10.75d? | 2026-12-07 | 2026-12-22 |  | 5d |  |  | RF-05 construido e integrado (C) | 1.2.4.3 | 1.2.4.3 |  |
| 127 | 1.4.4.3.1 | RF-05 construido |  | 9.75d | 2026-12-07 | 2026-12-21 | 113, 17, 115 | 5d | 0d |  | RF-05 construido e integrado | 1.2.4.3.1 | 1.2.4.3.1 | RF-05 |
| 128 | 1.4.4.3.2 | RF-05 integrado |  | 1d? | 2026-12-21 | 2026-12-22 | 127 | 5d | 0d |  |  |  |  | RF-05 |
| 129 | 1.4.4.4 | **RF-08 especificado y diseñado (E)** |  | 4.75d? | 2026-12-07 | 2026-12-14 |  | 26.25d |  |  | RF-08 especificado y diseñado (E) | 1.2.4.4 | 1.2.4.4 |  |
| 130 | 1.4.4.4.1 | RF-08 especificado |  | 3.75d | 2026-12-07 | 2026-12-11 | 17 | 26.25d | 0d |  | RF-08 especificado y diseñado | 1.2.4.4.1 | 1.2.4.4.1 | RF-08 |
| 131 | 1.4.4.4.2 | RF-08 diseñado |  | 1d? | 2026-12-11 | 2026-12-14 | 130 | 26.25d | 12d |  |  |  |  | RF-08 |
| 132 | 1.4.4.5 | **Plan y escenarios de pruebas de sistema preparados (EP-05)** |  | 10d? | 2026-12-07 | 2026-12-21 |  | 9d |  |  | Plan y escenarios de pruebas de sistema preparados (EP-05) | 1.2.4.5 | 1.2.4.5 |  |
| 133 | 1.4.4.5.1 | Entorno de verificación de TuSuper y cargas de datos disponibles | milestone | 0d | 2026-12-21 | 2026-12-21 | 7, 62 | 30d |  |  |  |  |  |  |
| 134 | 1.4.4.5.2 | Plan de pruebas de sistema preparados (EP-05) |  | 6d | 2026-12-07 | 2026-12-15 | 17 | 9d | 0d |  | Plan y escenarios de pruebas de sistema preparados (EP-05) | 1.2.4.5.1 | 1.2.4.5.1 | EP-05 |
| 135 | 1.4.4.5.3 | Escenarios de pruebas de sistema preparados (EP-05) |  | 1d? | 2026-12-16 | 2026-12-16 | 134 | 9d |  |  |  |  |  | EP-05 |
| 136 | 1.4.5 | **Sprint 4** |  | 11d? | 2026-12-21 | 2027-01-14 |  | 6.75d |  |  | Sprint 4 · 21/12/2026–08/01/2027 | 1.2.5 | 1.2.5 |  |
| 137 | 1.4.5.1 | **RF-03 verificado (V)** |  | 4.5d | 2026-12-21 | 2027-01-05 |  | 26.5d |  |  | RF-03 verificado (V) | 1.2.5.1 | 1.2.5.1 |  |
| 138 | 1.4.5.1.1 | RF-03 verificado (V) |  | 2.25d | 2026-12-21 | 2026-12-23 | 21, 101, 119 | 26.5d | 0d |  | RF-03 verificado (V) | 1.2.5.1.1 | 1.2.5.1.1 | RF-03 |
| 139 | 1.4.5.1.2 | RF-03.4 Persistencia Sesión verificada (V) |  | 2.25d | 2026-12-23 | 2027-01-05 | 138 | 26.5d |  |  |  |  | 1.2.5.1.2 | RF-03 |
| 140 | 1.4.5.2 | **RF-02 construido e integrado (C)** |  | 11d? | 2026-12-21 | 2027-01-14 |  | 8.17d |  |  | RF-02 construido e integrado (C) | 1.2.5.2 | 1.2.5.2 |  |
| 141 | 1.4.5.2.1 | RF-02 construido |  | 10d | 2026-12-21 | 2027-01-13 | 21, 104 | 8.17d | 0d |  | RF-02 construido e integrado | 1.2.5.2.1 | 1.2.5.2.1 | RF-02 |
| 142 | 1.4.5.2.2 | RF-02 integrado |  | 1d? | 2027-01-14 | 2027-01-14 | 141 | 8.17d | 0d |  |  |  |  | RF-02 |
| 143 | 1.4.5.3 | **RF-05 y RF-06 verificados (V)** |  | 6d? | 2026-12-22 | 2027-01-11 |  | 2.75d |  |  | RF-05 y RF-06 verificados (V) | 1.2.5.3 | 1.2.5.3 |  |
| 144 | 1.4.5.3.1 | RF-05 verificado |  | 3.75d | 2026-12-22 | 2027-01-07 | 21, 62, 128 | 5d | 2.25d |  | RF-05 y RF-06 verificados | 1.2.5.3.1 | 1.2.5.3.1 | RF-05 |
| 145 | 1.4.5.3.2 | RF-06 verificado |  | 1d? | 2027-01-08 | 2027-01-11 | 21, 62, 109 | 2.75d | 0d |  |  |  |  | RF-06 |
| 146 | 1.4.6 | **Sprint 5** |  | 15.83d? | 2027-01-11 | 2027-02-01 |  | 0d |  |  | Sprint 5 · 11–22/01/2027 | 1.2.6 | 1.2.6 |  |
| 147 | 1.4.6.1 | **RF-02 y RF-04 verificados (V)** |  | 13.83d | 2027-01-13 | 2027-02-01 |  | 2.17d |  |  | RF-02 y RF-04 verificados (V) | 1.2.6.1 | 1.2.6.1 |  |
| 148 | 1.4.6.1.1 | RF-02 verificado |  | 5.83d | 2027-01-25 | 2027-02-01 | 126, 24, 62, 142 | 2.17d | 0d |  |  |  | 1.2.6.1.2 | RF-02 |
| 149 | 1.4.6.1.2 | RF-02.6 Datos de ERP por tienda verificado (V) | milestone | 0d | 2027-02-01 | 2027-02-01 | 148 | 2.17d |  |  |  |  | 1.2.6.1.4 | RF-02 |
| 150 | 1.4.6.1.3 | RF-04 Recepción de Credenciales de la pasarela | milestone | 0d | 2027-01-13 | 2027-01-13 | 107 | 14.5d | 2d | start no earlier than 2027-01-13 |  |  | 1.2.6.1.3 | RF-04 |
| 151 | 1.4.6.1.4 | RF-04 verificado |  | 1.5d | 2027-01-15 | 2027-01-18 | 25, 61, 150, 123, 131, 142 | 12.5d |  |  | RF-02 y RF-04 verificados | 1.2.6.1.1 | 1.2.6.1.1 | RF-04 |

| ID | WBS | Task | Type | Duration | Start | Finish | Predecessors | Total slack | Free slack | Constraint | Text11 | Text20 | Text1 |
| --- | --- | --- | --- | --- | --- | --- | --- | --- | --- | --- | --- | --- | --- |
| 152 | 1.4.6.2 | **RF-07 y RF-08 construidos e integrados (C)** |  | 10.75d? | 2027-01-11 | 2027-01-26 |  | 2.75d |  |  | 1.2.6.2 | 1.2.6.2 |  |
| 153 | 1.4.6.2.1 | RF-07 construido |  | 9.75d | 2027-01-11 | 2027-01-25 | 113, 25, 144, 115, 145 | 2.75d | 0d |  | 1.2.6.2.1 | 1.2.6.2.1 | RF-07 |
| 154 | 1.4.6.2.2 | RF-07 integrado |  | 1d? | 2027-01-25 | 2027-01-26 | 153 | 2.75d | 0d |  |  |  | RF-07 |
| 155 | 1.4.6.2.3 | RF-08 construido |  | 1d? | 2027-01-11 | 2027-01-12 | 113, 25, 144, 131, 145 | 14.25d | 0d |  |  |  | RF-08 |
| 156 | 1.4.6.2.4 | RF-08 integrado |  | 1d? | 2027-01-12 | 2027-01-13 | 155 | 14.25d | 7.25d |  |  |  | RF-08 |
| 157 | 1.4.6.3 | **Pruebas de sistema, carga y seguridad ejecutadas (EP-05)** |  | 6d | 2027-01-11 | 2027-01-18 |  | 0d |  |  | 1.2.6.3 | 1.2.6.3 |  |
| 158 | 1.4.6.3.1 | Pruebas de sistema ejecutadas (EP-05) |  | 3d | 2027-01-11 | 2027-01-13 | 25, 135 | 0d |  |  | 1.2.6.3.1 | 1.2.6.3.1 | EP-05 |
| 159 | 1.4.6.3.2 | Pruebas de carga y seguridad ejecutadas (EP-05) |  | 3d | 2027-01-14 | 2027-01-18 | 25, 158, 135 | 0d |  |  |  |  | EP-05 |
| 160 | 1.4.6.4 | **Seguimiento técnico del piloto: primer tramo completado (EP-05)** |  | 6d | 2027-01-19 | 2027-01-26 |  | 0d |  |  | 1.2.6.4 | 1.2.6.4 |  |
| 161 | 1.4.6.4.1 | Realización del seguimiento técnico del piloto durante el primer tramo (EP-05) |  | 5d | 2027-01-19 | 2027-01-25 | 25, 159 | 0d |  |  | 1.2.6.4.1 | 1.2.6.4.1 | EP-05 |
| 162 | 1.4.6.4.2 | Primer tramo del seguimiento técnico del piloto completado (EP-05) |  | 1d | 2027-01-26 | 2027-01-26 | 25, 161, 159 | 0d |  |  |  |  | EP-05 |
| 163 | 1.4.7 | **Sprint 6** |  | 8d? | 2027-01-25 | 2027-02-03 |  | 0d |  |  | 1.2.7 | 1.2.7 |  |
| 164 | 1.4.7.1 | **RF-07 y RF-08 verificados (V)** |  | 5.25d? | 2027-01-25 | 2027-02-01 |  | 2.75d |  |  | 1.2.7.1 | 1.2.7.1 |  |
| 165 | 1.4.7.1.1 | RF-07 verificado |  | 3.75d | 2027-01-26 | 2027-02-01 | 29, 144, 62, 154, 145 | 2.75d |  |  | 1.2.7.1.1 | 1.2.7.1.1 | RF-07 |
| 166 | 1.4.7.1.2 | RF-08 verificado |  | 1d? | 2027-01-25 | 2027-01-25 | 29, 144, 62, 156, 145 | 7d |  |  |  |  | RF-08 |
| 167 | 1.4.7.2 | **Seguimiento técnico y evidencias finales del piloto completadas (EP-05)** |  | 6d | 2027-01-27 | 2027-02-03 |  | 0d |  |  | 1.2.7.2 | 1.2.7.2 |  |
| 168 | 1.4.7.2.1 | Seguimiento técnico del piloto (EP-05) |  | 5d | 2027-01-27 | 2027-02-02 | 29, 162 | 0d |  |  | 1.2.7.2.1 | 1.2.7.2.1 | EP-05 |
| 169 | 1.4.7.2.2 | Evidencias finales del piloto completadas (EP-05) |  | 1d | 2027-02-03 | 2027-02-03 | 168 | 0d |  |  |  |  | EP-05 |
| 170 | 1.5 | **Documentación y formación · ENT-04** |  | 18d | 2026-12-04 | 2027-01-11 |  | 23d |  |  | 1.5 | 1.5 |  |
| 171 | 1.5.1 | **Sprint 3 · Acceso Preproducción y Documentación técnica y funcional entregada a Formación (EP-07)** |  | 6d | 2026-12-04 | 2026-12-14 |  | 35d |  |  | 1.5.1 | 1.5.1 |  |
| 172 | 1.5.1.1 | Solicitud de las listas del personal a formar | milestone | 0d | 2026-12-04 | 2026-12-04 | 7 | 40d | 0d | start no earlier than 2026-12-04 |  | 1.5.1.4 |  |
| 173 | 1.5.1.2 | Gestión de la Solicitud de las listas del personal a formar |  | 1d | 2026-12-04 | 2026-12-04 | 172 | 40d |  |  |  | 1.5.1.5 |  |
| 174 | 1.5.1.3 | Sprint 3 · Documentación técnica y funcional entregada a Formación (EP-07) |  | 5d | 2026-12-07 | 2026-12-14 | 17 | 35d | 0d |  | 1.5.1.1 | 1.5.1.1 | EP-07 |
| 175 | 1.5.1.4 | Sprint 3 · Acceso a preproducción habilitado para Formación (EP-07) | milestone | 0d | 2026-12-14 | 2026-12-14 | 174, 17 | 35d |  |  | 1.5.2.1 | 1.5.1.2 | EP-07 |

Notes:
- 152: Text10: RF-07 y RF-08 construidos e integrados (C)
- 153: Text10: RF-07 y RF-08 construidos e integrados
- 157: Text10: Pruebas de sistema, carga y seguridad ejecutadas (EP-05)
- 158: Text10: Pruebas de sistema, carga y seguridad ejecutadas (EP-05)
- 160: Text10: Seguimiento técnico del piloto: primer tramocompletado (EP-05)
- 161: Text10: Seguimiento técnico del piloto: primer tramo completado (EP-05)
- 163: Text10: Sprint 6 · 25/01–05/02/2027
- 164: Text10: RF-07 y RF-08 verificados (V)
- 165: Text10: RF-07 y RF-08 verificados
- 167: Text10: Seguimiento técnico y evidencias finales del piloto completadas (EP-05)
- 168: Text10: Seguimiento técnico y evidencias finales del piloto completadas (EP-05)
- 170: Text10: Documentación y formación · ENT-04
- 171: Text10: Sprint 3 · Documentación técnica y funcional entregada a Formación (EP-07)
- 174: Text10: Sprint 3 · Documentación técnica y funcional entregada a Formación (EP-07)
- 175: Text10: Sprint 3 · Acceso a preproducción habilitado para Formación (EP-07)

| ID | WBS | Task | Type | Duration | Start | Finish | Predecessors | Total slack | Free slack | Constraint | Text20 | Text3 | Text11 | Text1 |
| --- | --- | --- | --- | --- | --- | --- | --- | --- | --- | --- | --- | --- | --- | --- |
| 176 | 1.5.2 | **Sprint 5 · Formación (EP-07)** |  | 18d | 2026-12-04 | 2027-01-11 |  | 23d |  |  | 1.5.5 |  |  |  |
| 177 | 1.5.2.1 | Recepción de la lista del personal a formar | milestone | 0d | 2027-01-11 | 2027-01-11 | 25 | 23d | 0d |  | 1.5.5.1 |  |  |  |
| 178 | 1.5.2.2 | Personal de las tiendas piloto puesto a disposición por TuSuper | milestone | 0d | 2026-12-04 | 2026-12-04 | 172 | 41d |  |  |  |  |  |  |
| 179 | 1.5.2.3 | Planificación y preparación de la formación del personal |  | 0.5d | 2027-01-11 | 2027-01-11 | 177, 50 | 23d | 0d |  | 1.5.5.2 | DFI |  |  |
| 180 | 1.5.2.4 | Formación del personal realizada y completada |  | 0.5d | 2027-01-11 | 2027-01-11 | 179 | 23d |  |  |  | DFI |  |  |
| 181 | 1.6 | **Puesta en producción · ENT-03** |  | 50d | 2026-11-23 | 2027-02-11 |  | 0d |  |  | 1.4 |  | 1.4 |  |
| 182 | 1.6.1 | **Sprint 2 · Entorno de preproducción preparado (EP-06)** |  | 10d | 2026-11-23 | 2026-12-04 |  | 28d |  |  | 1.4.1 |  | 1.4.1 |  |
| 183 | 1.6.1.1 | Solicitud de cuentas de desarrollo (app móviles) | milestone | 0d | 2026-12-04 | 2026-12-04 | 7 | 24d | 0d | start no earlier than 2026-12-04 | 1.4.1.3 |  |  |  |
| 184 | 1.6.1.2 | Gestión de la Solicitud de cuentas de desarrollo |  | 1d | 2026-12-04 | 2026-12-04 | 13, 183 | 40d |  |  | 1.4.1.4 |  |  |  |
| 185 | 1.6.1.3 | Sprint 2 · Entorno de preproducción preparado (EP-06) |  | 5d | 2026-11-23 | 2026-11-27 | 13 | 28d | 4d |  | 1.4.1.1 |  | 1.4.1.1 | EP-06 |
| 186 | 1.6.1.4 | Entorno de preproducción construido | milestone | 0d | 2026-12-04 | 2026-12-04 | 185 | 41d |  | start no earlier than 2026-12-04 | 1.4.1.2 |  |  |  |
| 187 | 1.6.2 | **Sprint 4 · Despliegue de la plataforma en tres tiendas piloto (EP-06)** |  | 5d | 2026-12-21 | 2027-01-07 |  | 14d |  |  | 1.4.2 |  | 1.4.2 |  |
| 188 | 1.6.2.1 | Cuentas de desarrollo disponibles (app móviles) | milestone | 0d | 2026-12-21 | 2026-12-21 | 17, 183 | 14d | 0d | start no earlier than 2026-12-21 | 1.4.2.2 |  |  |  |
| 189 | 1.6.2.2 | Sprint 4 · Preparación y planificación del despliegue de la plataforma en las tres tiendas piloto (EP-06) |  | 2d | 2026-12-21 | 2026-12-22 | 17, 188, 185 | 14d | 0d |  | 1.4.2.1 |  | 1.4.2.1 | EP-06 |
| 190 | 1.6.2.3 | Publicación de app móviles | milestone | 0d | 2027-01-07 | 2027-01-07 | 183 | 26d |  | start no earlier than 2027-01-07 | 1.4.2.3 |  |  |  |
| 191 | 1.6.2.4 | Sprint 4 · Despliegue de la plataforma en las tres tiendas piloto completado (EP-06) |  | 3d | 2026-12-23 | 2027-01-05 | 189 | 14d | 2d |  |  |  |  | EP-06 |
| 192 | 1.6.3 | **Sprint 5 · Piloto operativo y supervisado: primer tramo (EP-06)** |  | 7d | 2026-12-21 | 2027-01-11 |  | 18d |  |  | 1.4.3 |  | 1.4.3 |  |
| 193 | 1.6.3.1 | Tiendas piloto designadas y dos ciclos completos de reposición acreditados | milestone | 0d | 2026-12-21 | 2026-12-21 | 7, 62 | 30d |  |  |  |  |  |  |
| 194 | 1.6.3.2 | Sprint 5 · Piloto operativo primer tramo (EP-06) |  | 0.5d | 2027-01-11 | 2027-01-11 | 25, 191 | 12d | 0d |  | 1.4.3.1 |  | 1.4.3.1 | EP-06 |
| 195 | 1.6.3.3 | Sprint 5 · Piloto supervisado: primer tramo (EP-06) |  | 0.5d | 2027-01-11 | 2027-01-11 | 194 | 12d | 9d |  |  |  |  | EP-06 |
| 196 | 1.6.4 | **Sprint 6 · 25/01–05/02/2027** |  | 14d | 2027-01-25 | 2027-02-11 |  | 0d |  |  | 1.4.4 |  | 1.4.4 |  |
| 197 | 1.6.4.1 | **Piloto operativo finalizado: segundo tramo (EP-06)** |  | 5d | 2027-01-25 | 2027-01-29 |  | 3d |  |  | 1.4.4.1 |  | 1.4.4.1 |  |
| 198 | 1.6.4.1.1 | Ejecución del segundo tramo del piloto operativo (EP-06) |  | 4d | 2027-01-25 | 2027-01-28 | 29, 195 | 3d | 0d |  | 1.4.4.1.1 |  | 1.4.4.1.1 | EP-06 |
| 199 | 1.6.4.1.2 | Segundo tramo del piloto operativo finalizado (EP-06) |  | 1d | 2027-01-29 | 2027-01-29 | 198 | 3d |  |  |  |  |  | EP-06 |

Notes:
- 181: Text10: Puesta en producción · ENT-03
- 182: Text10: Sprint 2 · Entorno de preproducción preparado (EP-06)
- 185: Text10: Sprint 2 · Entorno de preproducción preparado (EP-06)
- 187: Text10: Sprint 4 · Despliegue de la plataforma en tres tiendas piloto (EP-06)
- 189: Text10: Sprint 4 · Despliegue de la plataforma en tres tiendas piloto (EP-06)
- 192: Text10: Sprint 5 · Piloto operativo y supervisado: primer tramo (EP-06)
- 194: Text10: Sprint 5 · Piloto operativo y supervisado: primer tramo (EP-06)
- 196: Text10: Sprint 6 · 25/01–05/02/2027
- 197: Text10: Piloto operativo finalizado: segundo tramo (EP-06)
- 198: Text10: Piloto operativo finalizado: segundo tramo (EP-06)

| ID | WBS | Task | Duration | Start | Finish | Predecessors | Total slack | Text11 | Text20 | Text1 |
| --- | --- | --- | --- | --- | --- | --- | --- | --- | --- | --- |
| 200 | 1.6.4.2 | **Despliegue en producción y apertura de las 32 tiendas (EP-06)** | 6d | 2027-02-04 | 2027-02-11 | 63, 149, 151, 165, 166, 169 | 0d | 1.4.4.2 | 1.4.4.2 |  |
| 201 | 1.6.4.2.1 | Despliegue en producción y apertura de las 32 tiendas (EP-06) | 5d | 2027-02-04 | 2027-02-10 | 199 | 0d | 1.4.4.2.1 | 1.4.4.2.1 | EP-06 |
| 202 | 1.6.4.2.2 | Despliegue en producción y apertura de las 32 tiendas completados (EP-06) | 1d | 2027-02-11 | 2027-02-11 | 201 | 0d |  |  | EP-06 |

Notes:
- 200: Text10: Despliegue en producción y apertura de las 32 tiendas (EP-06)
- 201: Text10: Despliegue en producción y apertura de las 32 tiendas (EP-06)
