# Proyecto TSL-2627 TuSuper en Línea

Schedule from MS Project, 2026-10-05 to 2027-02-12, 6 hours a day, costs in €, A marks actual dates.

## Calendars

- Estándar: Mon-Fri 09:00-15:00; Sat-Sun off. Exceptions (off unless hours are given): 2026-10-12 (Día de la Constitución Española), 2026-12-06 (Día de la Constitución Española), 2026-12-08 (Inmaculada Concepción), 2026-12-24 to 2027-01-01 (Cierre de la consultora (NOR-20)), 2027-01-06 (Epifanía del Señor).

## Resources

| Resource | Group | Rate | Notes |
| --- | --- | --- | --- |
| Jefe de proyecto - 2026 | Dirección | 60 |  |
| Técncio de sistemas - 2026 | Equipo 2 | 50 | Línea 2 (RF-05 a RF-08): Responde de EP-03, EP-04, EP-06 y EP-07, NOR-04 + Informe de Requisitos |
| Diseñador UX - 2026 | Equipo 2 | 40 | Línea 2 (RF-05 a RF-08): Responde de EP-03, EP-04, EP-06 y EP-07, NOR-04 + Informe de Requisitos |
| Técnico de Calidad - 2026 | Equipo 1 | 37 | Línea 1 (RF-01 a RF-04): Responde de EP-02 y EP-05, NOR-04 + Informe de Requisitos |
| Desarrollador - 2026 | Equipo 1 | 35 | Línea 1 (RF-01 a RF-04): Responde de EP-02 y EP-05, NOR-04 + Informe de Requisitos |
| Desarrollador Junior - 2026 | Equipo 1 | 22 | Línea 1 (RF-01 a RF-04): Responde de EP-02 y EP-05, NOR-04 + Informe de Requisitos |
| Jefe de proyecto - 2027 | Dirección | 61.8 |  |
| Técncio de sistemas - 2027 | Equipo 2 | 51.5 | Línea 2 (RF-05 a RF-08): Responde de EP-03, EP-04, EP-06 y EP-07, NOR-04 + Informe de Requisitos |
| Diseñador UX - 2027 | Equipo 2 | 41.2 | Línea 2 (RF-05 a RF-08): Responde de EP-03, EP-04, EP-06 y EP-07, NOR-04 + Informe de Requisitos |
| Técnico de Calidad - 2027 | Equipo 1 | 38.11 | Línea 1 (RF-01 a RF-04): Responde de EP-02 y EP-05, NOR-04 + Informe de Requisitos |
| Desarrollador - 2027 | Equipo 1 | 36.05 | Línea 1 (RF-01 a RF-04): Responde de EP-02 y EP-05, NOR-04 + Informe de Requisitos |
| Desarrollador Junior - 2027 | Equipo 1 | 22.66 | Línea 1 (RF-01 a RF-04): Responde de EP-02 y EP-05, NOR-04 + Informe de Requisitos |
| Desarrollador - 2026 | Equipo 2 | 35 | Línea 2 (RF-05 a RF-08): Responde de EP-03, EP-04, EP-06 y EP-07, NOR-04 + Informe de Requisitos |
| Desarrollador - 2027 | Equipo 2 | 36.05 | Línea 2 (RF-05 a RF-08): Responde de EP-03, EP-04, EP-06 y EP-07, NOR-04 + Informe de Requisitos |
| Diseñador UX - 2026 | Equipo 1 | 40 | Línea 1 (RF-01 a RF-04): Responde de EP-02 y EP-05, NOR-04 + Informe de Requisitos |
| Diseñador UX - 2027 | Equipo 1 | 41.2 | Línea 1 (RF-01 a RF-04): Responde de EP-02 y EP-05, NOR-04 + Informe de Requisitos |
| Técnico de Calidad - 2026 | Equipo 2 | 37 | Línea 2 (RF-05 a RF-08): Responde de EP-03, EP-04, EP-06 y EP-07, NOR-04 + Informe de Requisitos |
| Técnico de Calidad - 2027 | Equipo 2 | 38.11 | Línea 2 (RF-05 a RF-08): Responde de EP-03, EP-04, EP-06 y EP-07, NOR-04 + Informe de Requisitos |
| Desarrollador Junior - 2027 | Equipo 1 | 22.66 | Línea 1 (RF-01 a RF-04): Responde de EP-02 y EP-05, NOR-04 + Informe de Requisitos |
| Desarrollador Junior - 2026 | Equipo 1 | 22 | Línea 1 (RF-01 a RF-04): Responde de EP-02 y EP-05, NOR-04 + Informe de Requisitos |
| Desarrollador Junior - 2026 | Equipo 2 | 22 | Línea 2 (RF-05 a RF-08): Responde de EP-03, EP-04, EP-06 y EP-07, NOR-04 + Informe de Requisitos |
| Arquitecto de software-2026 | Equipo de Expertos | 55 | El Plan de Gestión del Cronograma (TC-OP-CRO, apartado 3, paso 6) y el Plan de Gestión de los Recursos (TC-OP-REC, apartado 5) establecen obligatoriamente que las filas del equipo de expertos deben escribirse desde el principio en la Hoja de Recursos de MS Project |
| Técnico de sistemas | Equipo de Expertos | 50 | El Plan de Gestión del Cronograma (TC-OP-CRO, apartado 3, paso 6) y el Plan de Gestión de los Recursos (TC-OP-REC, apartado 5) establecen obligatoriamente que las filas del equipo de expertos deben escribirse desde el principio en la Hoja de Recursos de M |
| Analista funcional | Equipo de Expertos | 45 | El Plan de Gestión del Cronograma (TC-OP-CRO, apartado 3, paso 6) y el Plan de Gestión de los Recursos (TC-OP-REC, apartado 5) establecen obligatoriamente que las filas del equipo de expertos deben escribirse desde el principio en la Hoja de Recursos de M |
| Ténico de calidad | Equipo de Expertos | 37 | El Plan de Gestión del Cronograma (TC-OP-CRO, apartado 3, paso 6) y el Plan de Gestión de los Recursos (TC-OP-REC, apartado 5) establecen obligatoriamente que las filas del equipo de expertos deben escribirse desde el principio en la Hoja de Recursos de M |
| Diseñador UX | Equipo de Expertos | 40 | El Plan de Gestión del Cronograma (TC-OP-CRO, apartado 3, paso 6) y el Plan de Gestión de los Recursos (TC-OP-REC, apartado 5) establecen obligatoriamente que las filas del equipo de expertos deben escribirse desde el principio en la Hoja de Recursos de M |
| Desarrollador | Equipo de Expertos | 35 | El Plan de Gestión del Cronograma (TC-OP-CRO, apartado 3, paso 6) y el Plan de Gestión de los Recursos (TC-OP-REC, apartado 5) establecen obligatoriamente que las filas del equipo de expertos deben escribirse desde el principio en la Hoja de Recursos de M |

## Schedule

| ID | WBS | Task | Type | Duration | Start | Finish | Predecessors | Remaining | Total slack | Free slack | Constraint | Resources | Work | Actual work | Cost | Actual cost | Text11 | Text20 | Text3 |
| --- | --- | --- | --- | --- | --- | --- | --- | --- | --- | --- | --- | --- | --- | --- | --- | --- | --- | --- | --- |
| 1 | 1 | **TSL-2627 TuSuper en Línea** |  | 84d | 2026-10-05 A | 2027-02-12 |  | 83.75d | 0d |  |  |  | 2106.15h | 1.5h | 103,394.25 | 90 |  |  |  |
| 2 | 1.1 | **Dirección del Proyecto** |  | 84d | 2026-10-05 | 2027-02-12 |  |  | 0d |  |  |  | 256.2h |  | 17,744.05 |  | 1.1 | 1.1 |  |
| 3 | 1.1.1 | **Planificación y gestión de la planificación** |  | 23d | 2026-10-05 | 2026-11-06 |  |  | 13.2d |  |  |  | 156.75h |  | 8,461.5 |  | 1.1.1 | 1.1.1 |  |
| 4 | 1.1.1.1 | Comienzo del Proyecto |  | 0.5d | 2026-10-05 | 2026-10-05 |  |  | 13.2d | 0d |  | Jefe de proyecto - 2026 [25%]; Analista funcional [25%]; Arquitecto de software-2026 [25%]; Desarrollador [25%]; Diseñador UX [25%]; Ténico de calidad [25%]; Técnico de sistemas [25%] | 5.25h |  | 241.5 |  | 1.1.1.1 | 1.1.1.1 |  |
| 5 | 1.1.1.2 | Elaboración del Plan de Dirección del Proyecto, Alcance, EDT y Cronograma |  | 5d | 2026-10-05 | 2026-10-13 | 4 |  | 13.2d | 0d |  | Jefe de proyecto - 2026; Analista funcional [25%]; Arquitecto de software-2026 [25%]; Desarrollador [25%]; Diseñador UX [25%]; Ténico de calidad [25%]; Técnico de sistemas [25%] | 75h |  | 3,765 |  | 1.1.1.2 | 1.1.1.2 | APR; SOL |
| 6 | 1.1.1.3 | Tramitación y negociación de la aceptación del calendario y alcance por el cliente |  | 5d | 2026-10-13 | 2026-10-20 | 5 |  | 13.2d | 0d |  | Jefe de proyecto - 2026; Analista funcional [25%]; Arquitecto de software-2026 [25%]; Desarrollador [25%]; Diseñador UX [25%]; Ténico de calidad [25%]; Técnico de sistemas [25%] | 75h |  | 3,765 |  | 1.1.1.3 | 1.1.1.3 |  |
| 7 | 1.1.1.4 | Solicitud de Informe Jurídico |  | 1d | 2026-10-20 | 2026-10-21 | 6 |  | 13.2d | 9.5d |  | Jefe de proyecto - 2026 [25%] | 1.5h |  | 90 |  |  |  |  |
| 8 | 1.1.1.5 | Aceptación del calendario y alcance | milestone | 0d | 2026-11-06 | 2026-11-06 | 7 |  | 61d |  | start no earlier than 2026-11-06 |  |  |  |  |  |  |  | ACE-LB |
| 9 | 1.1.1.6 | Recepción sobre el informe Jurídico TSL-2627-JUR-01 | milestone | 0d | 2026-11-04 | 2026-11-04 | 7 |  | 3.7d | 2d | start no earlier than 2026-11-04 |  |  |  | 600 |  |  |  |  |
| 10 | 1.1.1.7 | Aprobación del Plan de Dirección y Líneas Bases | milestone | 0d | 2026-11-06 | 2026-11-06 | 9 |  | 1.7d | 0d | start no earlier than 2026-11-06 |  |  |  |  |  |  | 1.1.1.4 |  |
| 11 | 1.1.1.8 | CIE-01 · Reunión de cierre de planificación | milestone | 0d | 2026-11-06 | 2026-11-06 |  |  | 61d |  | start no earlier than 2026-11-06 |  |  |  |  |  |  |  |  |
| 12 | 1.1.2 | **Dirección y seguimiento del Sprint 1** |  | 10d | 2026-11-09 | 2026-11-20 |  |  | 0.7d | 0d |  |  | 15h |  | 900 |  | 1.1.2 | 1.1.2 |  |
| 13 | 1.1.2.1 | Inicio del Sprint 1 | milestone | 0d | 2026-11-09 | 2026-11-09 | 10 |  | 0.7d | 0d | start no earlier than 2026-11-09 |  |  |  |  |  | 1.1.2.2 | 1.1.2.2 |  |
| 14 | 1.1.2.2 | Dirección del Sprint 1 |  | 2d | 2026-11-09 | 2026-11-10 | 13 |  | 0.7d | 0d |  | Jefe de proyecto - 2026 [25%] | 3h |  | 180 |  | 1.1.2.1 | 1.1.2.1 | SPR; ISV |
| 15 | 1.1.2.3 | Seguimiento del Sprint 1 |  | 8d | 2026-11-11 | 2026-11-20 | 14 |  | 0.7d | 0d |  | Jefe de proyecto - 2026 [25%] | 12h |  | 720 |  |  |  | SPR; ISV |
| 16 | 1.1.3 | **Dirección y seguimiento del Sprint 2** |  | 10d | 2026-11-23 | 2026-12-04 |  |  | 0.7d |  |  |  | 15h |  | 900 |  | 1.1.3 | 1.1.3 |  |
| 17 | 1.1.3.1 | Inicio Sprint 2 | milestone | 0d | 2026-11-23 | 2026-11-23 | 15 |  | 0.7d | 0d | start no earlier than 2026-11-23 |  |  |  |  |  | 1.1.3.2 | 1.1.3.2 |  |
| 18 | 1.1.3.2 | Dirección del Sprint 2 |  | 2d | 2026-11-23 | 2026-11-24 | 17 |  | 0.7d | 0d |  | Jefe de proyecto - 2026 [25%] | 3h |  | 180 |  | 1.1.3.1 | 1.1.3.1 | SPR; ISV |
| 19 | 1.1.3.3 | Seguimiento del Sprint 2 |  | 8d | 2026-11-25 | 2026-12-04 | 18 |  | 0.7d | 0d |  | Jefe de proyecto - 2026 [25%] | 12h |  | 720 |  |  |  | SPR; ISV |
| 20 | 1.1.3.4 | CIE-02 · Reunión de cierre de diciembre | milestone | 0d | 2026-12-04 | 2026-12-04 |  |  | 41d |  | start no earlier than 2026-12-04 |  |  |  |  |  |  |  |  |
| 21 | 1.1.4 | **Dirección y seguimiento del Sprint 3** |  | 9d | 2026-12-07 | 2026-12-18 |  |  | 0.7d |  |  |  | 13.5h |  | 810 |  | 1.1.4 | 1.1.4 |  |
| 22 | 1.1.4.1 | Inicio Sprint 3 | milestone | 0d | 2026-12-07 | 2026-12-07 | 19 |  | 0.7d | 0d | start no earlier than 2026-12-07 |  |  |  |  |  | 1.1.4.2 | 1.1.4.2 |  |
| 23 | 1.1.4.2 | Dirección del Sprint 3 |  | 2d | 2026-12-07 | 2026-12-09 | 22 |  | 0.7d | 0d |  | Jefe de proyecto - 2026 [25%] | 3h |  | 180 |  | 1.1.4.1 | 1.1.4.1 | SPR; ISV |
| 24 | 1.1.4.3 | Seguimiento del Sprint 3 |  | 7d | 2026-12-10 | 2026-12-18 | 23 |  | 0.7d | 0d |  | Jefe de proyecto - 2026 [25%] | 10.5h |  | 630 |  |  |  | SPR; ISV |

Notes:
- 1: Text10: TSL-2627 TuSuper en Línea
- 2: Text10: Dirección del Proyecto
- 3: Text10: Planificación y gestión de la planificación
- 4: Text10: Comienzo del Proyecto
- 5: ·Estimación: No encontrado evidencia, luego 1/2 sprint / Text10: Elaboración del Plan de Dirección del Proyecto, Alcance, EDT y Cronograma
- 6: ·Estimación: No encontrado evidencia, luego 1/2 sprint / Text10: Tramitación y negociación de la aceptación del calendario y alcance por el cliente
- 12: Text10: Dirección y seguimiento del Sprint 1
- 13: Text10: Inicio del Sprint 1
- 14: Text10: Dirección y seguimiento del Sprint 1
- 16: Text10: Dirección y seguimiento del Sprint 2
- 17: Text10: Inicio Sprint 2
- 18: Text10: Dirección y seguimiento del Sprint 2
- 21: Text10: Dirección y seguimiento del Sprint 3
- 22: Text10: Inicio Sprint 3
- 23: Text10: Dirección y seguimiento del Sprint 3

| ID | WBS | Task | Type | Duration | Start | Finish | Predecessors | Total slack | Free slack | Constraint | Resources | Work | Cost | Text11 | Text20 | Text3 | Text1 |
| --- | --- | --- | --- | --- | --- | --- | --- | --- | --- | --- | --- | --- | --- | --- | --- | --- | --- |
| 25 | 1.1.5 | **Dirección y seguimiento del Sprint 4** |  | 7d | 2026-12-21 | 2027-01-08 |  | 0.7d |  |  |  | 21h | 1,278.9 | 1.1.5 | 1.1.5 |  |  |
| 26 | 1.1.5.1 | Inicio Sprint 4 | milestone | 0d | 2026-12-21 | 2026-12-21 | 24 | 0.7d | 0d | start no earlier than 2026-12-21 |  |  |  | 1.1.5.2 | 1.1.5.2 |  |  |
| 27 | 1.1.5.2 | Dirección del Sprint 4 |  | 2d | 2026-12-21 | 2026-12-22 | 26 | 0.7d | 0d |  | Jefe de proyecto - 2026 [25%]; Jefe de proyecto - 2027 [25%] | 6h | 365.4 | 1.1.5.1 | 1.1.5.1 | SPR; ISV |  |
| 28 | 1.1.5.3 | Seguimiento del Sprint 4 |  | 5d | 2026-12-23 | 2027-01-08 | 27 | 0.7d | 0d |  | Jefe de proyecto - 2026 [25%]; Jefe de proyecto - 2027 [25%] | 15h | 913.5 |  |  | SPR; ISV |  |
| 29 | 1.1.5.4 | CIE-03 · Reunión de cierre de Fase 2 | milestone | 0d | 2027-01-08 | 2027-01-08 |  | 24d |  | finish no earlier than 2027-01-08 |  |  |  |  |  |  |  |
| 30 | 1.1.6 | **Dirección y seguimiento del Sprint 5** |  | 10d | 2027-01-11 | 2027-01-22 |  | 0.7d |  |  |  | 15h | 927 | 1.1.6 | 1.1.6 |  |  |
| 31 | 1.1.6.1 | Inicio Sprint 5 | milestone | 0d | 2027-01-11 | 2027-01-11 | 28 | 0.7d | 0d | start no earlier than 2027-01-11 |  |  |  | 1.1.6.2 | 1.1.6.2 |  |  |
| 32 | 1.1.6.2 | Dirección del Sprint 5 |  | 2d | 2027-01-11 | 2027-01-12 | 31 | 0.7d | 0d |  | Jefe de proyecto - 2027 [25%] | 3h | 185.4 | 1.1.6.1 | 1.1.6.1 | SPR; ISV |  |
| 33 | 1.1.6.3 | Seguimiento del Sprint 5 |  | 8d | 2027-01-13 | 2027-01-22 | 32 | 0.7d | 0d |  | Jefe de proyecto - 2027 [25%] | 12h | 741.6 |  |  | SPR; ISV |  |
| 34 | 1.1.7 | **Dirección y seguimiento del Sprint 6** |  | 10d | 2027-01-25 | 2027-02-05 |  | 0.7d |  |  |  | 15h | 927 | 1.1.7 | 1.1.7 |  |  |
| 35 | 1.1.7.1 | Inicio Sprint 6 | milestone | 0d | 2027-01-25 | 2027-01-25 | 33 | 0.7d | 0d | start no earlier than 2027-01-25 |  |  |  | 1.1.7.2 | 1.1.7.2 |  |  |
| 36 | 1.1.7.2 | Dirección del Sprint 6 |  | 2d | 2027-01-25 | 2027-01-26 | 35 | 0.7d | 0d |  | Jefe de proyecto - 2027 [25%] | 3h | 185.4 | 1.1.7.1 | 1.1.7.1 | SPR; ISV |  |
| 37 | 1.1.7.3 | Seguimiento del Sprint 6 |  | 8d | 2027-01-27 | 2027-02-05 | 36 | 0.7d | 0d |  | Jefe de proyecto - 2027 [25%] | 12h | 741.6 |  |  | SPR; ISV |  |
| 38 | 1.1.7.4 | CIE-04 · Reunión de cierre de Fase 3 y piloto | milestone | 0d | 2027-02-05 | 2027-02-05 |  | 5d |  | start no earlier than 2027-02-05 |  |  |  |  |  |  |  |
| 39 | 1.1.8 | **Traspaso al servicio de mantenimiento completado** |  | 1.3d | 2027-02-05 | 2027-02-09 |  | 0.7d |  |  |  | 1.95h | 120.51 | 1.1.8 | 1.1.8 |  |  |
| 40 | 1.1.8.1 | Entrada en Explotación | milestone | 0d | 2027-02-05 | 2027-02-05 | 37 | 0.7d | 0d |  |  |  |  |  |  | EXP |  |
| 41 | 1.1.8.2 | Preparación y coordinación del traspaso al servicio de mantenimiento. |  | 0.8d | 2027-02-08 | 2027-02-08 | 40 | 0.7d | 0d |  | Jefe de proyecto - 2027 [25%] | 1.2h | 74.16 | 1.1.8.1 | 1.1.8.1 |  |  |
| 42 | 1.1.8.3 | Entrega y traspaso al servicio de mantenimiento completado. |  | 0.5d | 2027-02-08 | 2027-02-09 | 41 | 0.7d | 0d |  | Jefe de proyecto - 2027 [25%] | 0.75h | 46.35 |  |  |  |  |
| 43 | 1.1.9 | **Cierre del proyecto aprobado y completado** |  | 2.7d | 2027-02-09 | 2027-02-12 |  | 0d |  |  |  | 3h | 3,419.14 | 1.1.9 | 1.1.9 |  |  |
| 44 | 1.1.9.1 | Elaboración del Informe de Cierre y Lecciones Aprendidas |  | 1d | 2027-02-09 | 2027-02-10 | 37, 42 | 0.7d | 0d |  | Jefe de proyecto - 2027 [25%] | 1.5h | 92.7 | 1.1.9.1 | 1.1.9.1 |  |  |
| 45 | 1.1.9.2 | Cierre del proyecto aprobado y completado |  | 1d | 2027-02-10 | 2027-02-11 | 44 | 0.7d |  |  | Jefe de proyecto - 2027 [25%] | 1.5h | 92.7 | 1.1.9.2 | 1.1.9.2 |  |  |
| 46 | 1.1.9.3 | Cierre del proyecto | milestone | 0d | 2027-02-12 | 2027-02-12 | 45 | 0d |  | start no earlier than 2027-02-12 |  |  | 3,233.74 | 1.1.9.3 | 1.1.9.3 | CPR |  |
| 47 | 1.2 | **Plataforma de compra en línea · ENT-01** |  | 79.5d | 2026-10-05 | 2027-02-05 |  | 4d |  |  |  | 1549.95h | 50,705 | 1.2 | 1.2 |  |  |
| 48 | 1.2.1 | **Planificación** |  | 31.5d | 2026-10-05 | 2026-11-18 |  | 46.75d |  |  |  | 36.75h | 1,455 | 1.2.1 | 1.2.1 |  |  |
| 49 | 1.2.1.1 | **Especificación funcional común y criterios de aceptación acordados (EP-01)** |  | 26.5d | 2026-10-05 | 2026-11-11 |  | 23.25d | 0d |  |  | 6.75h | 405 | 1.2.1.1 | 1.2.1.1 |  |  |
| 50 | 1.2.1.1.1 | Se Solicitó a TuSuper el alta en la pasarela de pago | milestone | 0d | 2026-10-05 | 2026-10-05 | 4 | 46.75d | 23.5d |  |  |  |  |  | 1.2.1.1.2 |  | EP-01 |
| 51 | 1.2.1.1.2 | Solicitud de Franjas de Entrega, zonas de reparto y repartidores y acceso a Datos ERP | milestone | 0d | 2026-11-09 | 2026-11-09 | 10 | 24.74d | 0d | start no earlier than 2026-11-09 |  |  |  |  | 1.2.1.1.3 |  | EP-03 |
| 52 | 1.2.1.1.3 | Gestión de la Solicitud de Franjas de Entrega, zonas de reparto y repartidores y acceso a Datos ERP |  | 0.5d | 2026-11-09 | 2026-11-09 | 51 | 24.74d | 0d |  | Jefe de proyecto - 2026 [25%] | 0.75h | 45 |  | 1.2.1.1.6 |  | EP-03 |
| 53 | 1.2.1.1.4 | Solicitud de contrato a Jurídico sobre Taracera como encargada de procesamiento de datos de TuSuper | milestone | 0d | 2026-11-06 | 2026-11-06 | 10 | 26.25d | 0d | start no earlier than 2026-10-28 |  |  |  |  | 1.2.1.1.4 |  |  |
| 54 | 1.2.1.1.5 | Gestión de la Solicitud de contrato a Jurídico sobre Taracera como encargada de procesamiento de datos de TuSuper |  | 1d | 2026-11-06 | 2026-11-06 | 53 | 26.25d |  |  | Jefe de proyecto - 2026 [25%] | 1.5h | 90 |  | 1.2.1.1.5 |  |  |
| 55 | 1.2.1.1.6 | Datos de franjas, capacidad, zonas de reparto y repartidores facilitados por TuSuper | milestone | 0d | 2026-11-09 | 2026-11-09 | 52 | 25.75d |  |  |  |  |  |  |  |  |  |
| 56 | 1.2.1.1.7 | Especificación funcional común y criterios de aceptación acordados (EP-01) |  | 3d | 2026-11-09 | 2026-11-11 | 13, 50 | 23.25d | 0d |  | Jefe de proyecto - 2026 [25%] | 4.5h | 270 | 1.2.1.1.1 | 1.2.1.1.1 |  | EP-01 |

Notes:
- 25: Text10: Dirección y seguimiento del Sprint 4
- 26: Text10: Inicio Sprint 4
- 27: Text10: Dirección y seguimiento del Sprint 4
- 30: Text10: Dirección y seguimiento del Sprint 5
- 31: Text10: Inicio Sprint 5
- 32: Text10: Dirección y seguimiento del Sprint 5
- 34: Text10: Dirección y seguimiento del Sprint 6
- 35: Text10: Inicio Sprint 6
- 36: Text10: Dirección y seguimiento del Sprint 6
- 39: Text10: Traspaso al servicio de mantenimiento completado
- 40: Entrada en explotación (EXP): Viernes 5 de febrero de 2027
- 41: Text10: Traspaso al servicio de mantenimiento completado
- 43: Text10: Cierre del proyecto aprobado y completado
- 44: Text10: Elaboración del Informe de Cierre y Lecciones Aprendidas
- 45: Text10: Cierre del proyecto aprobado y completado
- 46: Fase de traspaso y cierre (CPR): Se ejecuta durante la semana del lunes 8 al viernes 12 de febrero de 2027, quedando el cierre aprobado el 12 de febrero de 2027 / La Acumulación de costos fijos se establece al Fin de la tarea -> Configurar como Fin / Text10: Cierre del proyecto
- 47: Text10: Plataforma de compra en línea · ENT-01
- 48: Text10: Planificación
- 49: Text10: Especificación funcional común y criterios de aceptación acordados (EP-01)
- 56: Text10: Especificación funcional común y criterios de aceptación acordados (EP-01)

| ID | WBS | Task | Type | Duration | Start | Finish | Predecessors | Total slack | Free slack | Resources | Work | Cost | Text10 | Text11 | Text20 | Text1 | Text3 |
| --- | --- | --- | --- | --- | --- | --- | --- | --- | --- | --- | --- | --- | --- | --- | --- | --- | --- |
| 57 | 1.2.1.2 | **Sistema de diseño e interfaz común preparados (EP-02)** |  | 3d | 2026-11-12 | 2026-11-16 |  | 50d |  |  | 18h | 630 | Sistema de diseño e interfaz común preparados (EP-02) | 1.2.1.2 | 1.2.1.2 |  |  |
| 58 | 1.2.1.2.1 | Sistema de diseño (EP-02) |  | 2d | 2026-11-12 | 2026-11-13 | 56 | 50d | 0d | Desarrollador - 2026 | 12h | 420 | Sistema de diseño e interfaz común preparados (EP-02) | 1.2.1.2.1 | 1.2.1.2.1 | EP-02 |  |
| 59 | 1.2.1.2.2 | Interfaz común preparada (EP-02) |  | 1d | 2026-11-16 | 2026-11-16 | 58 | 50d | 0d | Desarrollador - 2026 | 6h | 210 |  |  |  | EP-02 |  |
| 60 | 1.2.1.3 | **Arquitectura técnica de la plataforma diseñada (EP-03)** |  | 2d | 2026-11-17 | 2026-11-18 |  | 50d | 0d |  | 12h | 420 | Arquitectura técnica de la plataforma diseñada (EP-03) | 1.2.1.3 | 1.2.1.3 |  |  |
| 61 | 1.2.1.3.1 | Definición y planificación de la arquitectura técnica de la plataforma (EP-03). |  | 1d | 2026-11-17 | 2026-11-17 | 59 | 50d | 0d | Desarrollador - 2026 | 6h | 210 | Arquitectura técnica de la plataforma diseñada (EP-03) | 1.2.1.3.1 | 1.2.1.3.1 | EP-03 |  |
| 62 | 1.2.1.3.2 | Diseño y documentación de la arquitectura técnica de la plataforma completados (EP-03). |  | 1d | 2026-11-18 | 2026-11-18 | 61 | 50d |  | Desarrollador - 2026 | 6h | 210 |  |  |  | EP-03 |  |
| 63 | 1.2.2 | **Sprint 1** |  | 10d | 2026-11-09 | 2026-11-20 |  | 26.25d |  |  | 170.62h | 5,366.62 | Sprint 1 · 09-20/11/2026 | 1.2.2 | 1.2.2 |  |  |
| 64 | 1.2.2.1 | **RF-01 y RF-03 especificados y diseñados (E)** |  | 7d | 2026-11-12 | 2026-11-20 |  | 33.25d |  |  | 118.12h | 3,529.12 | RF-01 y RF-03 especificados y diseñados (E) | 1.2.2.1 | 1.2.2.1 |  |  |
| 65 | 1.2.2.1.1 | RF-01 especificado |  | 3.25d | 2026-11-12 | 2026-11-17 | 56, 13 | 33.25d | 0d | Desarrollador - 2026; Desarrollador Junior - 2026; Técnico de Calidad - 2026 [75%] | 53.62h | 1,652.62 | RF-01 y RF-03 especificados y diseñados | 1.2.2.1.1 | 1.2.2.1.1 | RF-01 |  |
| 66 | 1.2.2.1.2 | RF-01 diseñado |  | 1d | 2026-11-17 | 2026-11-18 | 65 | 33.25d | 2.75d | Desarrollador - 2026; Desarrollador Junior - 2026; Técnico de Calidad - 2026 [75%] | 16.5h | 508.5 |  |  |  | RF-01 |  |
| 67 | 1.2.2.1.3 | RF-03 especificado |  | 3d | 2026-11-12 | 2026-11-16 | 56, 13 | 33.5d | 0d | Desarrollador - 2026; Desarrollador Junior - 2026 | 36h | 1,026 |  |  |  | RF-03 |  |
| 68 | 1.2.2.1.4 | RF-03 diseñado |  | 1d | 2026-11-17 | 2026-11-17 | 67 | 33.5d | 0d | Desarrollador - 2026; Desarrollador Junior - 2026 | 12h | 342 |  |  |  | RF-03 |  |
| 69 | 1.2.2.1.5 | [Tarea Colchón] Reserva de cronograma sin Recursos - RF-01 y RF-03 |  | 3d | 2026-11-18 | 2026-11-20 | 68 | 50d |  |  |  |  |  |  |  |  | RES |
| 70 | 1.2.2.2 | **RF-06 especificado y diseñado (E)** |  | 9.75d | 2026-11-09 | 2026-11-20 |  | 26.25d |  |  | 28.5h | 997.5 | RF-06 especificado y diseñado (E) | 1.2.2.2 | 1.2.2.2 |  |  |
| 71 | 1.2.2.2.1 | Equipos y conexión de las tiendas disponibles para usar el panel | milestone | 0d | 2026-11-09 | 2026-11-09 | 13 | 60d |  |  |  |  |  |  |  |  |  |
| 72 | 1.2.2.2.2 | RF-06 especificado |  | 3.75d | 2026-11-12 | 2026-11-17 | 49 | 23.25d | 0d | Desarrollador - 2026 | 22.5h | 787.5 | RF-06 especificado y diseñado | 1.2.2.2.1 | 1.2.2.2.1 | RF-06 |  |
| 73 | 1.2.2.2.3 | RF-06 diseñado |  | 1d | 2026-11-17 | 2026-11-18 | 72 | 23.25d | 0d | Desarrollador - 2026 | 6h | 210 |  |  |  | RF-06 |  |
| 74 | 1.2.2.2.4 | [Tarea Colchón] Reserva de cronograma sin Recursos - RF-06 |  | 2d | 2026-11-18 | 2026-11-20 | 73 | 50.25d |  |  |  |  |  |  |  |  | RES |
| 75 | 1.2.2.3 | **Entornos de desarrollo y CI/CD operativos (EP-03)** |  | 2d | 2026-11-19 | 2026-11-20 |  | 50d |  |  | 24h | 840 | Entornos de desarrollo y CI/CD operativos (EP-03) | 1.2.2.3 | 1.2.2.3 |  |  |
| 76 | 1.2.2.3.1 | Entornos de desarrollo operativos (EP-03) |  | 2d | 2026-11-19 | 2026-11-20 | 60 | 50d |  | Desarrollador - 2026 | 12h | 420 | Entornos de desarrollo y CI/CD operativos (EP-03) | 1.2.2.3.1 | 1.2.2.3.1 | EP-03 |  |
| 77 | 1.2.2.3.2 | CI/CD operativos (EP-03) |  | 2d | 2026-11-19 | 2026-11-20 | 60 | 50d |  | Desarrollador - 2026 | 12h | 420 |  |  |  | EP-03 |  |
| 78 | 1.2.3 | **Sprint 2** |  | 10d | 2026-11-23 | 2026-12-04 |  | 14.25d |  |  | 523.75h | 16,396.46 | Sprint 2 · 23/11-04/12/2026 | 1.2.3 | 1.2.3 |  |  |
| 79 | 1.2.3.1 | **RF-01 y RF-03 construidos e integrados (C)** |  | 10d | 2026-11-23 | 2026-12-04 |  | 30.5d |  |  | 285h | 8,505 | RF-01 y RF-03 construidos e integrados (C) | 1.2.3.1 | 1.2.3.1 |  |  |
| 80 | 1.2.3.1.1 | RF-01 construido |  | 9d | 2026-11-23 | 2026-12-03 | 17, 66 | 30.5d | 0d | Desarrollador - 2026; Desarrollador Junior - 2026; Técnico de Calidad - 2026 [75%] | 148.5h | 4,576.5 | RF-01 y RF-03 construidos e integrados | 1.2.3.1.1 | 1.2.3.1.1 | RF-01 |  |
| 81 | 1.2.3.1.2 | RF-01 integrado |  | 1d | 2026-12-04 | 2026-12-04 | 80 | 30.5d | 0d | Desarrollador - 2026; Desarrollador Junior - 2026; Técnico de Calidad - 2026 [75%] | 16.5h | 508.5 |  |  |  | RF-01 |  |
| 82 | 1.2.3.1.3 | RF-03 construido |  | 9d | 2026-11-23 | 2026-12-03 | 17, 68 | 30.5d | 0d | Desarrollador - 2026; Desarrollador Junior - 2026 | 108h | 3,078 |  |  |  | RF-03 |  |
| 83 | 1.2.3.1.4 | RF-03 integrado |  | 1d | 2026-12-04 | 2026-12-04 | 82 | 30.5d | 0d | Desarrollador - 2026; Desarrollador Junior - 2026 | 12h | 342 |  |  |  | RF-03 |  |

Notes:
- 65: ·Estimación (RF-01(min) + RF-03(min))/2

| ID | WBS | Task | Type | Duration | Start | Finish | Predecessors | Total slack | Free slack | Constraint | Resources | Work | Cost | Text10 | Text11 | Text20 | Text1 |
| --- | --- | --- | --- | --- | --- | --- | --- | --- | --- | --- | --- | --- | --- | --- | --- | --- | --- |
| 84 | 1.2.3.2 | **RF-02 y RF-04 especificados y diseñados (E)** |  | 6.83d | 2026-11-23 | 2026-12-01 |  | 24.34d |  |  |  | 127.69h | 3,998.05 | RF-02 y RF-04 especificados y diseñados (E) | 1.2.3.2 | 1.2.3.2 |  |
| 85 | 1.2.3.2.1 | RF-02 especificado |  | 5.83d | 2026-11-23 | 2026-11-30 | 17 | 24.34d | 0d |  | Desarrollador - 2026; Desarrollador Junior - 2026; Técnico de Calidad - 2026 [75%] | 96.19h | 2,964.55 | RF-02 y RF-04 especificados y diseñados | 1.2.3.2.1 | 1.2.3.2.1 | RF-02 |
| 86 | 1.2.3.2.2 | RF-02 diseñado |  | 1d | 2026-11-30 | 2026-12-01 | 85 | 24.34d | 12.17d |  | Desarrollador - 2026; Desarrollador Junior - 2026; Técnico de Calidad - 2026 [75%] | 16.5h | 508.5 |  |  |  | RF-02 |
| 87 | 1.2.3.2.3 | RF-04 especificado |  | 1.5d | 2026-11-23 | 2026-11-24 | 17 | 33.5d | 0d |  | Desarrollador - 2026 | 9h | 315 |  |  |  | RF-04 |
| 88 | 1.2.3.2.4 | RF-04 diseñado |  | 1d | 2026-11-24 | 2026-11-25 | 87 | 33.5d | 7.5d |  | Desarrollador - 2026 | 6h | 210 |  |  |  | RF-04 |
| 89 | 1.2.3.3 | **RF-06 construido e integrado (C)** |  | 10d | 2026-11-23 | 2026-12-04 |  | 21d |  |  |  | 60h | 2,106.3 | RF-06 construido e integrado (C) | 1.2.3.3 | 1.2.3.3 |  |
| 90 | 1.2.3.3.1 | RF-06 construido |  | 9d | 2026-11-23 | 2026-12-03 | 73, 12 | 21d | 0d |  | Desarrollador - 2026 | 54h | 1,890 | RF-06 construido e integrado | 1.2.3.3.1 | 1.2.3.3.1 | RF-06 |
| 91 | 1.2.3.3.2 | RF-06 integrado |  | 1d | 2026-12-04 | 2026-12-04 | 90 | 21d | 10d |  | Desarrollador - 2027 | 6h | 216.3 |  |  |  | RF-06 |
| 92 | 1.2.3.4 | **RF-05 y RF-07 especificados y diseñados (E)** |  | 4.75d | 2026-11-23 | 2026-11-27 |  | 14.25d |  |  |  | 51.06h | 1,787.1 | RF-05 y RF-07 especificados y diseñados (E) | 1.2.3.4 | 1.2.3.4 |  |
| 93 | 1.2.3.4.1 | Recepción de Franjas y Repartidores | milestone | 0d | 2026-11-23 | 2026-11-23 | 52 | 15.24d | 0d | start no earlier than 2026-11-23 |  |  |  |  |  | 1.2.3.4.2 | RF-05 |
| 94 | 1.2.3.4.2 | RF-05 especificado |  | 1.88d | 2026-11-23 | 2026-11-24 | 93, 17 | 15.24d | 0d |  | Desarrollador - 2026 | 11.28h | 394.8 |  |  | 1.2.3.4.3 | RF-05 |
| 95 | 1.2.3.4.3 | RF-05 diseñado |  | 1.88d | 2026-11-24 | 2026-11-26 | 94 | 15.24d | 6.24d |  | Desarrollador - 2026 | 11.28h | 394.8 | RF-05 y RF-07 especificados y diseñados | 1.2.3.4.1 | 1.2.3.4.1 | RF-05 |
| 96 | 1.2.3.4.4 | RF-07 especificado |  | 3.75d | 2026-11-23 | 2026-11-26 | 17 | 14.25d | 0d |  | Desarrollador - 2026 | 22.5h | 787.5 |  |  |  | RF-07 |
| 97 | 1.2.3.4.5 | RF-07 diseñado |  | 1d | 2026-11-26 | 2026-11-27 | 96 | 14.25d | 5.25d |  | Desarrollador - 2026 | 6h | 210 |  |  |  | RF-07 |
| 98 | 1.2.4 | **Sprint 3** |  | 16d | 2026-12-07 | 2027-01-08 |  | 9d |  |  |  | 244.12h | 8,288.62 | Sprint 3 · 07-18/12/2026 | 1.2.4 | 1.2.4 |  |
| 99 | 1.2.4.1 | **RF-01 verificado (V)** |  | 16d | 2026-12-07 | 2027-01-08 |  | 24d |  |  |  | 70.12h | 2,161.12 | RF-01 verificado (V) | 1.2.4.1 | 1.2.4.1 |  |
| 100 | 1.2.4.1.1 | Ejecución de las pruebas de verificación del requisito funcional RF-01 |  | 3.25d | 2026-12-07 | 2026-12-11 | 22, 81, 83 | 30.5d | 0d |  | Desarrollador - 2026; Desarrollador Junior - 2026; Técnico de Calidad - 2026 [75%] | 53.62h | 1,652.62 | RF-01 verificado (V) | 1.2.4.1.1 | 1.2.4.1.1 | RF-01 |
| 101 | 1.2.4.1.2 | Verificación del requisito funcional RF-01 completada (V) |  | 1d | 2026-12-11 | 2026-12-14 | 100 | 30.5d | 0d |  | Desarrollador - 2026; Desarrollador Junior - 2026; Técnico de Calidad - 2026 [75%] | 16.5h | 508.5 |  |  |  | RF-01 |
| 102 | 1.2.4.1.3 | dentificación del comprador (RF-01.2) | milestone | 0d | 2026-12-14 | 2026-12-14 | 101 | 35.75d |  |  |  |  |  |  |  | 1.2.4.1.2 | RF-01 |
| 103 | 1.2.4.1.4 | ACE-RF-01 · Aceptación formal de RF-01 | milestone | 0d | 2027-01-08 | 2027-01-08 |  | 24d |  | finish no earlier than 2027-01-08 |  |  |  |  |  |  |  |
| 104 | 1.2.4.2 | **RF-04 construido e integrado (C)** |  | 9d | 2026-12-07 | 2026-12-18 |  | 26d |  |  |  | 49.5h | 1,770 | RF-04 construido e integrado (C) | 1.2.4.2 | 1.2.4.2 |  |
| 105 | 1.2.4.2.1 | RF-04 construido |  | 7d | 2026-12-07 | 2026-12-16 | 22, 88 | 26d | 0d |  | Desarrollador - 2026 | 42h | 1,470 | RF-04 construido e integrado | 1.2.4.2.1 | 1.2.4.2.1 | RF-04 |
| 106 | 1.2.4.2.2 | RF-04 integrado |  | 1d | 2026-12-17 | 2026-12-17 | 105 | 26d | 0d |  | Desarrollador - 2026 | 6h | 210 |  |  |  | RF-04 |
| 107 | 1.2.4.2.3 | RF-04 pasarela de pago construida | milestone | 0d | 2026-12-17 | 2026-12-17 | 106 | 31d | 0d | start no earlier than 2026-12-17 |  |  |  |  |  | 1.2.4.2.2 | RF-04 |
| 108 | 1.2.4.2.4 | Solicitud de auditoria a TuSuper |  | 1d | 2026-12-18 | 2026-12-18 | 107 | 31d |  |  | Jefe de proyecto - 2026 [25%] | 1.5h | 90 |  |  | 1.2.4.2.3 |  |

Notes:
- 85: ·Estimación: (RF-02(Max) + RF-04(Min)) / 2

| ID | WBS | Task | Type | Duration | Start | Finish | Predecessors | Total slack | Free slack | Constraint | Resources | Work | Cost | Text10 | Text11 | Text20 | Text1 |
| --- | --- | --- | --- | --- | --- | --- | --- | --- | --- | --- | --- | --- | --- | --- | --- | --- | --- |
| 109 | 1.2.4.3 | **RF-05 construido e integrado (C)** |  | 9d | 2026-12-07 | 2026-12-18 |  | 9d |  |  |  | 54h | 1,890 | RF-05 construido e integrado (C) | 1.2.4.3 | 1.2.4.3 |  |
| 110 | 1.2.4.3.1 | RF-05 construido |  | 8d | 2026-12-07 | 2026-12-17 | 95, 22, 97 | 9d | 0d |  | Desarrollador - 2026 | 48h | 1,680 | RF-05 construido e integrado | 1.2.4.3.1 | 1.2.4.3.1 | RF-05 |
| 111 | 1.2.4.3.2 | RF-05 integrado |  | 1d | 2026-12-18 | 2026-12-18 | 110 | 9d | 1d |  | Desarrollador - 2026 | 6h | 210 |  |  |  | RF-05 |
| 112 | 1.2.4.4 | **RF-08 especificado y diseñado (E)** |  | 4.75d | 2026-12-07 | 2026-12-14 |  | 17.25d |  |  |  | 28.5h | 997.5 | RF-08 especificado y diseñado (E) | 1.2.4.4 | 1.2.4.4 |  |
| 113 | 1.2.4.4.1 | RF-08 especificado |  | 3.75d | 2026-12-07 | 2026-12-11 | 22 | 17.25d | 0d |  | Desarrollador - 2026 | 22.5h | 787.5 | RF-08 especificado y diseñado | 1.2.4.4.1 | 1.2.4.4.1 | RF-08 |
| 114 | 1.2.4.4.2 | RF-08 diseñado |  | 1d | 2026-12-11 | 2026-12-14 | 113 | 17.25d | 11.25d |  | Desarrollador - 2026 | 6h | 210 |  |  |  | RF-08 |
| 115 | 1.2.4.5 | **Plan y escenarios de pruebas de sistema preparados (EP-05)** |  | 10d | 2026-12-07 | 2026-12-21 |  | 13d |  |  |  | 42h | 1,470 | Plan y escenarios de pruebas de sistema preparados (EP-05) | 1.2.4.5 | 1.2.4.5 |  |
| 116 | 1.2.4.5.1 | Entorno de verificación de TuSuper y cargas de datos disponibles | milestone | 0d | 2026-12-21 | 2026-12-21 | 10, 170 | 30d |  |  |  |  |  |  |  |  |  |
| 117 | 1.2.4.5.2 | Plan de pruebas de sistema preparados (EP-05) |  | 6d | 2026-12-07 | 2026-12-15 | 22 | 13d | 0d |  | Desarrollador - 2026 | 36h | 1,260 | Plan y escenarios de pruebas de sistema preparados (EP-05) | 1.2.4.5.1 | 1.2.4.5.1 | EP-05 |
| 118 | 1.2.4.5.3 | Escenarios de pruebas de sistema preparados (EP-05) |  | 1d | 2026-12-16 | 2026-12-16 | 117 | 13d | 9d |  | Desarrollador - 2026 | 6h | 210 |  |  |  | EP-05 |
| 119 | 1.2.5 | **Sprint 4** |  | 7d | 2026-12-21 | 2027-01-08 |  | 9d |  |  |  | 208.5h | 6,411.3 | Sprint 4 · 21/12/2026–08/01/2027 | 1.2.5 | 1.2.5 |  |
| 120 | 1.2.5.1 | **RF-03 verificado (V)** |  | 7d | 2026-12-21 | 2027-01-08 |  | 24d |  |  |  | 63h | 1,795.5 | RF-03 verificado (V) | 1.2.5.1 | 1.2.5.1 |  |
| 121 | 1.2.5.1.1 | RF-03 verificado (V) |  | 2.25d | 2026-12-21 | 2026-12-23 | 26, 83, 101 | 25.75d | 0d |  | Desarrollador - 2026; Desarrollador Junior - 2026 | 27h | 769.5 | RF-03 verificado (V) | 1.2.5.1.1 | 1.2.5.1.1 | RF-03 |
| 122 | 1.2.5.1.2 | RF-03.4 Persistencia Sesión verificada (V) |  | 3d | 2026-12-23 | 2027-01-07 | 121 | 25.75d |  |  | Desarrollador - 2026; Desarrollador Junior - 2026 | 36h | 1,026 |  |  | 1.2.5.1.2 | RF-03 |
| 123 | 1.2.5.1.3 | ACE-RF-03 · Aceptación formal de RF-03 | milestone | 0d | 2027-01-08 | 2027-01-08 |  | 24d |  | finish no earlier than 2027-01-08 |  |  |  |  |  |  |  |
| 124 | 1.2.5.2 | **RF-02 construido e integrado (C)** |  | 7d | 2026-12-21 | 2027-01-08 |  | 12.17d |  |  |  | 115.5h | 3,559.5 | RF-02 construido e integrado (C) | 1.2.5.2 | 1.2.5.2 |  |
| 125 | 1.2.5.2.1 | RF-02 construido |  | 6d | 2026-12-21 | 2027-01-07 | 26, 86 | 12.17d | 0d |  | Desarrollador - 2026; Desarrollador Junior - 2026; Técnico de Calidad - 2026 [75%] | 99h | 3,051 | RF-02 construido e integrado | 1.2.5.2.1 | 1.2.5.2.1 | RF-02 |
| 126 | 1.2.5.2.2 | RF-02 integrado |  | 1d | 2027-01-08 | 2027-01-08 | 125 | 12.17d | 0d |  | Desarrollador - 2026; Desarrollador Junior - 2026; Técnico de Calidad - 2026 [75%] | 16.5h | 508.5 |  |  |  | RF-02 |
| 127 | 1.2.5.3 | **RF-05 y RF-06 verificados (V)** |  | 6d | 2026-12-22 | 2027-01-08 |  | 8d |  |  |  | 30h | 1,056.3 | RF-05 y RF-06 verificados (V) | 1.2.5.3 | 1.2.5.3 |  |
| 128 | 1.2.5.3.1 | RF-05 verificado |  | 4d | 2026-12-22 | 2027-01-05 | 26, 170, 111 | 8d | 2d |  | Desarrollador - 2026 | 24h | 840 | RF-05 y RF-06 verificados | 1.2.5.3.1 | 1.2.5.3.1 | RF-05 |
| 129 | 1.2.5.3.2 | RF-06 verificado |  | 1d | 2026-12-22 | 2026-12-22 | 26, 170, 91 | 11d | 5d |  | Desarrollador - 2027 | 6h | 216.3 |  |  |  | RF-06 |
| 130 | 1.2.5.3.3 | ACE-RF-05 · Aceptación formal de RF-05 | milestone | 0d | 2027-01-08 | 2027-01-08 |  | 24d |  | finish no earlier than 2027-01-08 |  |  |  |  |  |  |  |
| 131 | 1.2.5.3.4 | ACE-RF-06 · Aceptación formal de RF-06 | milestone | 0d | 2027-01-08 | 2027-01-08 |  | 25d |  | start no earlier than 2027-01-08 |  |  |  |  |  |  |  |
| 132 | 1.2.6 | **Sprint 5** |  | 19d | 2027-01-11 | 2027-02-05 |  | 4d |  |  |  | 282.19h | 9,758.79 | Sprint 5 · 11–22/01/2027 | 1.2.6 | 1.2.6 |  |
| 133 | 1.2.6.1 | **RF-02 y RF-04 verificados (V)** |  | 19d | 2027-01-11 | 2027-02-05 |  | 5d |  |  |  | 108.19h | 3,486.09 | RF-02 y RF-04 verificados (V) | 1.2.6.1 | 1.2.6.1 |  |
| 134 | 1.2.6.1.1 | RF-02 verificado |  | 5.83d | 2027-01-11 | 2027-01-18 | 126 | 12.17d | 0d |  | Desarrollador - 2027; Desarrollador Junior - 2027; Técnico de Calidad - 2027 [75%] | 96.19h | 3,053.49 |  |  | 1.2.6.1.2 | RF-02 |
| 135 | 1.2.6.1.2 | RF-02.6 Datos de ERP por tienda verificado (V) | milestone | 0d | 2027-01-18 | 2027-01-18 | 134 | 12.17d | 0d |  |  |  |  |  |  | 1.2.6.1.4 | RF-02 |
| 136 | 1.2.6.1.3 | RF-04 Recepción de Credenciales de la pasarela | milestone | 0d | 2027-01-18 | 2027-01-18 | 89, 135 | 12.17d | 0d | start no earlier than 2027-01-13 |  |  |  |  |  | 1.2.6.1.3 | RF-04 |
| 137 | 1.2.6.1.4 | RF-04 verificado |  | 2d | 2027-01-18 | 2027-01-20 | 31, 169, 136, 106, 114, 126 | 12.17d | 8.17d |  | Desarrollador - 2027 | 12h | 432.6 | RF-02 y RF-04 verificados | 1.2.6.1.1 | 1.2.6.1.1 | RF-04 |
| 138 | 1.2.6.1.5 | ACE-RF-02 · Aceptación formal de RF-02 | milestone | 0d | 2027-02-05 | 2027-02-05 |  | 5d |  | start no earlier than 2027-02-05 |  |  |  |  |  |  |  |
| 139 | 1.2.6.1.6 | ACE-RF-04 · Aceptación formal de RF-04 | milestone | 0d | 2027-02-05 | 2027-02-05 |  | 5d |  | start no earlier than 2027-02-05 |  |  |  |  |  |  |  |

| ID | WBS | Task | Type | Duration | Start | Finish | Predecessors | Total slack | Free slack | Constraint | Resources | Work | Cost | Text11 | Text20 | Text1 |
| --- | --- | --- | --- | --- | --- | --- | --- | --- | --- | --- | --- | --- | --- | --- | --- | --- |
| 140 | 1.2.6.2 | **RF-07 y RF-08 construidos e integrados (C)** |  | 10d | 2027-01-11 | 2027-01-22 |  | 6d |  |  |  | 114h | 4,109.7 | 1.2.6.2 | 1.2.6.2 |  |
| 141 | 1.2.6.2.1 | RF-07 construido |  | 8d | 2027-01-11 | 2027-01-20 | 95, 31, 128, 97, 129 | 7d | 0d |  | Desarrollador - 2027 | 48h | 1,730.4 | 1.2.6.2.1 | 1.2.6.2.1 | RF-07 |
| 142 | 1.2.6.2.2 | RF-07 integrado |  | 1d | 2027-01-21 | 2027-01-21 | 141 | 7d | 1d |  | Desarrollador - 2027 | 6h | 216.3 |  |  | RF-07 |
| 143 | 1.2.6.2.3 | RF-08 construido |  | 9d | 2027-01-11 | 2027-01-21 | 95, 31, 128, 114, 129 | 6d | 0d |  | Desarrollador - 2027 | 54h | 1,946.7 |  |  | RF-08 |
| 144 | 1.2.6.2.4 | RF-08 integrado |  | 1d | 2027-01-22 | 2027-01-22 | 143 | 6d | 0d |  | Desarrollador - 2027 | 6h | 216.3 |  |  | RF-08 |
| 145 | 1.2.6.3 | **Pruebas de sistema, carga y seguridad ejecutadas (EP-05)** |  | 6d | 2027-01-11 | 2027-01-18 |  | 4d |  |  |  | 36h | 1,297.8 | 1.2.6.3 | 1.2.6.3 |  |
| 146 | 1.2.6.3.1 | Pruebas de sistema ejecutadas (EP-05) |  | 3d | 2027-01-11 | 2027-01-13 | 31, 118 | 4d | 0d |  | Desarrollador - 2027 | 18h | 648.9 | 1.2.6.3.1 | 1.2.6.3.1 | EP-05 |
| 147 | 1.2.6.3.2 | Pruebas de carga y seguridad ejecutadas (EP-05) |  | 3d | 2027-01-14 | 2027-01-18 | 31, 146, 118 | 4d | 0d |  | Desarrollador - 2027 | 18h | 648.9 |  |  | EP-05 |
| 148 | 1.2.6.4 | **Seguimiento técnico del piloto: primer tramo completado (EP-05)** |  | 4d | 2027-01-19 | 2027-01-22 |  | 4d |  |  |  | 24h | 865.2 | 1.2.6.4 | 1.2.6.4 |  |
| 149 | 1.2.6.4.1 | Realización del seguimiento técnico del piloto durante el primer tramo (EP-05) |  | 3d | 2027-01-19 | 2027-01-21 | 31, 147 | 4d | 0d |  | Desarrollador - 2027 | 18h | 648.9 | 1.2.6.4.1 | 1.2.6.4.1 | EP-05 |
| 150 | 1.2.6.4.2 | Primer tramo del seguimiento técnico del piloto completado (EP-05) |  | 1d | 2027-01-22 | 2027-01-22 | 31, 149, 147 | 4d | 0d |  | Desarrollador - 2027 | 6h | 216.3 |  |  | EP-05 |
| 151 | 1.2.7 | **Sprint 6** |  | 10d | 2027-01-25 | 2027-02-05 |  | 4d |  |  |  | 84h | 3,028.2 | 1.2.7 | 1.2.7 |  |
| 152 | 1.2.7.1 | **RF-07 y RF-08 verificados (V)** |  | 10d | 2027-01-25 | 2027-02-05 |  | 4d |  |  |  | 48h | 1,730.4 | 1.2.7.1 | 1.2.7.1 |  |
| 153 | 1.2.7.1.1 | RF-07 verificado |  | 4d | 2027-01-25 | 2027-01-28 | 35, 128, 170, 142, 129 | 6d | 2d |  | Desarrollador - 2027 | 24h | 865.2 | 1.2.7.1.1 | 1.2.7.1.1 | RF-07 |
| 154 | 1.2.7.1.2 | RF-08 verificado |  | 4d | 2027-01-25 | 2027-01-28 | 35, 128, 170, 144, 129 | 6d | 2d |  | Desarrollador - 2027 | 24h | 865.2 |  |  | RF-08 |
| 155 | 1.2.7.1.3 | ACE-RF-07 · Aceptación formal de RF-07 | milestone | 0d | 2027-02-05 | 2027-02-05 |  | 4d |  | finish no earlier than 2027-02-05 |  |  |  |  |  |  |
| 156 | 1.2.7.1.4 | ACE-RF-08 · Aceptación formal de RF-08 | milestone | 0d | 2027-02-05 | 2027-02-05 |  | 5d |  | start no earlier than 2027-02-05 |  |  |  |  |  |  |
| 157 | 1.2.7.2 | **Seguimiento técnico y evidencias finales del piloto completadas (EP-05)** |  | 6d | 2027-01-25 | 2027-02-01 |  | 4d |  |  |  | 36h | 1,297.8 | 1.2.7.2 | 1.2.7.2 |  |
| 158 | 1.2.7.2.1 | Seguimiento técnico del piloto (EP-05) |  | 5d | 2027-01-25 | 2027-01-29 | 35, 150 | 4d | 0d |  | Desarrollador - 2027 | 30h | 1,081.5 | 1.2.7.2.1 | 1.2.7.2.1 | EP-05 |
| 159 | 1.2.7.2.2 | Evidencias finales del piloto completadas (EP-05) |  | 1d | 2027-02-01 | 2027-02-01 | 158 | 4d | 0d |  | Desarrollador - 2027 | 6h | 216.3 |  |  | EP-05 |
| 160 | 1.3 | **Integración con ERP · ENT-02** |  | 37d | 2026-11-09 | 2027-01-11 |  | 21d |  |  |  | 139.5h | 4,920 | 1.3 | 1.3 |  |
| 161 | 1.3.1 | **Sprint 1 · Especificación de interfaz ERP acordada (EP-04)** |  | 3d | 2026-11-09 | 2026-11-11 |  | 21d |  |  |  | 13.5h | 510 | 1.3.1 | 1.3.1 |  |
| 162 | 1.3.1.1 | Solcitud de Acceso a los datos del ERP | milestone | 0d | 2026-11-09 | 2026-11-09 | 10 | 21d | 0d | start no earlier than 2026-11-09 |  |  |  |  | 1.3.1.2 |  |
| 163 | 1.3.1.2 | Gestión Solcitud de Acceso a los datos del ERP |  | 1d | 2026-11-09 | 2026-11-09 | 162 | 21d | 0d |  | Jefe de proyecto - 2026 [25%] | 1.5h | 90 |  | 1.3.1.3 |  |
| 164 | 1.3.1.3 | Sprint 1 · Especificación de interfaz ERP acordada (EP-04) |  | 2d | 2026-11-10 | 2026-11-11 | 13, 162, 163 | 21d | 7d |  | Desarrollador - 2026 | 12h | 420 | 1.3.1.1 | 1.3.1.1 | EP-04 |

Notes:
- 140: Text10: RF-07 y RF-08 construidos e integrados (C)
- 141: Text10: RF-07 y RF-08 construidos e integrados
- 145: Text10: Pruebas de sistema, carga y seguridad ejecutadas (EP-05)
- 146: Text10: Pruebas de sistema, carga y seguridad ejecutadas (EP-05)
- 148: Text10: Seguimiento técnico del piloto: primer tramocompletado (EP-05)
- 149: Text10: Seguimiento técnico del piloto: primer tramo completado (EP-05)
- 151: Text10: Sprint 6 · 25/01–05/02/2027
- 152: Text10: RF-07 y RF-08 verificados (V)
- 153: Text10: RF-07 y RF-08 verificados
- 157: Text10: Seguimiento técnico y evidencias finales del piloto completadas (EP-05)
- 158: Text10: Seguimiento técnico y evidencias finales del piloto completadas (EP-05)
- 160: Text10: Integración con ERP · ENT-02
- 161: Text10: Sprint 1 · Especificación de interfaz ERP acordada (EP-04)
- 164: Text10: Sprint 1 · Especificación de interfaz ERP acordada (EP-04)

| ID | WBS | Task | Type | Duration | Start | Finish | Predecessors | Total slack | Free slack | Constraint | Resources | Work | Cost | Text11 | Text20 | Text1 | Text3 |
| --- | --- | --- | --- | --- | --- | --- | --- | --- | --- | --- | --- | --- | --- | --- | --- | --- | --- |
| 165 | 1.3.2 | **Sprint 2 · Adaptación propia y ensayos con datos simulados (EP-04)** |  | 5d | 2026-11-23 | 2026-11-27 |  | 14d |  |  |  | 30h | 1,050 | 1.3.2 | 1.3.2 |  |  |
| 166 | 1.3.2.1 | Sprint 2 · Adaptación propia (EP-04) |  | 4d | 2026-11-23 | 2026-11-26 | 17, 164 | 14d | 0d |  | Desarrollador - 2026 | 24h | 840 | 1.3.2.1 | 1.3.2.1 | EP-04 |  |
| 167 | 1.3.2.2 | Sprint 2 · Ensayos con datos simulados (EP-04) |  | 1d | 2026-11-27 | 2026-11-27 | 166 | 14d | 6d |  | Desarrollador - 2026 | 6h | 210 |  |  | EP-04 |  |
| 168 | 1.3.3 | **Sprint 3 · Conector integrado, carga inicial y pruebas reales completadas (EP-04)** |  | 9d | 2026-12-09 | 2026-12-21 |  | 8d |  |  |  | 54h | 1,890 | 1.3.3 | 1.3.3 |  |  |
| 169 | 1.3.3.1 | Sprint 3 · Conector integrado, carga inicial y pruebas reales completadas (EP-04) |  | 5d | 2026-12-09 | 2026-12-15 | 22, 219, 167 | 8d | 0d |  | Desarrollador - 2026 | 30h | 1,050 | 1.3.3.1 | 1.3.3.1 | EP-04 |  |
| 170 | 1.3.3.2 | Catálogo, precios y existencias del ERP, cargados y existencias del ERP, cargados y sincronizados (EP-04), con el conector y ERP funcionando |  | 4d | 2026-12-16 | 2026-12-21 | 169, 219 | 8d | 0d |  | Desarrollador - 2026 | 24h | 840 |  | 1.3.3.3 | EP-04 |  |
| 171 | 1.3.3.3 | Aceptación del Conector | milestone | 0d | 2026-12-21 | 2026-12-21 | 169, 219, 170 | 23d | 0d | start no earlier than 2026-12-18 |  |  |  |  | 1.3.3.2 | EP-04 | ACO |
| 172 | 1.3.4 | **Sprint 4 · Sincronización comprobada y carga productiva de 32 tiendas (EP-04)** |  | 7d | 2026-12-22 | 2027-01-11 |  | 23d |  |  |  | 42h | 1,470 | 1.3.4 | 1.3.4 |  |  |
| 173 | 1.3.4.1 | Sprint 4 · Sincronización comprobada (EP-04) |  | 2d | 2026-12-22 | 2026-12-23 | 26, 171 | 23d | 0d |  | Desarrollador - 2026 | 12h | 420 | 1.3.4.1 | 1.3.4.1 | EP-04 |  |
| 174 | 1.3.4.2 | Sprint 4 · Carga productiva de 32 tiendas (EP-04) |  | 5d | 2027-01-04 | 2027-01-11 | 173 | 23d |  |  | Desarrollador - 2026 | 30h | 1,050 |  |  | EP-04 |  |
| 175 | 1.4 | **Puesta en producción · ENT-03** |  | 46d | 2026-11-23 | 2027-02-05 |  | 4d |  |  |  | 118.5h | 4,251.15 | 1.4 | 1.4 |  |  |
| 176 | 1.4.1 | **Sprint 2 · Entorno de preproducción preparado (EP-06)** |  | 10d | 2026-11-23 | 2026-12-04 |  | 37.5d |  |  |  | 31.5h | 1,140 | 1.4.1 | 1.4.1 |  |  |
| 177 | 1.4.1.1 | Solicitud de cuentas de desarrollo (app móviles) | milestone | 0d | 2026-12-04 | 2026-12-04 | 10 | 28.5d | 0d | start no earlier than 2026-12-04 |  |  |  |  | 1.4.1.3 |  |  |
| 178 | 1.4.1.2 | Gestión de la Solicitud de cuentas de desarrollo |  | 1d | 2026-12-04 | 2026-12-04 | 17, 177 | 40d |  |  | Jefe de proyecto - 2026 [25%] | 1.5h | 90 |  | 1.4.1.4 |  |  |
| 179 | 1.4.1.3 | Sprint 2 · Entorno de preproducción preparado (EP-06) |  | 5d | 2026-11-23 | 2026-11-27 | 17 | 43d | 4d |  | Desarrollador - 2026 | 30h | 1,050 | 1.4.1.1 | 1.4.1.1 | EP-06 |  |
| 180 | 1.4.1.4 | Entorno de preproducción construido | milestone | 0d | 2026-12-04 | 2026-12-04 | 179 | 41d |  | start no earlier than 2026-12-04 |  |  |  |  | 1.4.1.2 |  |  |
| 181 | 1.4.2 | **Sprint 4 · Despliegue de la plataforma en tres tiendas piloto (EP-06)** |  | 7d | 2026-12-21 | 2027-01-08 |  | 18.5d |  |  |  | 24h | 840 | 1.4.2 | 1.4.2 |  |  |
| 182 | 1.4.2.1 | Sprint 4 · Preparación y planificación del despliegue de la plataforma en las tres tiendas piloto (EP-06) |  | 2d | 2026-12-21 | 2026-12-22 | 22, 183, 179 | 29d |  |  | Desarrollador - 2026 | 12h | 420 | 1.4.2.1 | 1.4.2.1 | EP-06 |  |
| 183 | 1.4.2.2 | Cuentas de desarrollo disponibles (app móviles) | milestone | 0d | 2026-12-21 | 2026-12-21 | 22, 177 | 18.5d | 0d | start no earlier than 2026-12-21 |  |  |  |  | 1.4.2.2 |  |  |
| 184 | 1.4.2.3 | Publicación de app móviles | milestone | 0d | 2027-01-07 | 2027-01-07 | 177, 183 | 13.5d | 0d | start no earlier than 2027-01-07 |  |  |  |  | 1.4.2.3 |  |  |
| 185 | 1.4.2.4 | Sprint 4 · Despliegue de la plataforma en las tres tiendas piloto completado (EP-06) |  | 2d | 2027-01-07 | 2027-01-08 | 184 | 13.5d | 0d |  | Desarrollador - 2026 | 12h | 420 |  |  | EP-06 |  |
| 186 | 1.4.3 | **Sprint 5 · Piloto operativo y supervisado: primer tramo (EP-06)** |  | 9.5d | 2027-01-11 | 2027-01-22 |  | 13.5d |  |  |  | 9h | 324.45 | 1.4.3 | 1.4.3 |  |  |
| 187 | 1.4.3.1 | Sprint 5 · Piloto operativo primer tramo (EP-06) |  | 0.5d | 2027-01-11 | 2027-01-11 | 31, 185 | 13.5d | 0d |  | Desarrollador - 2027 | 3h | 108.15 | 1.4.3.1 | 1.4.3.1 | EP-06 |  |
| 188 | 1.4.3.2 | Sprint 5 · Piloto supervisado: primer tramo (EP-06) |  | 1d | 2027-01-11 | 2027-01-12 | 187 | 13.5d | 0d |  | Desarrollador - 2027 | 6h | 216.3 |  |  | EP-06 |  |
| 189 | 1.4.3.3 | [Tarea Colchón] Reserva de cronograma sin Recursos - EP-06 |  | 8d | 2027-01-12 | 2027-01-22 | 188 | 14.5d |  |  |  |  |  |  |  |  | RES |

Notes:
- 165: Text10: Sprint 2 · Adaptación propia y ensayos con datos simulados (EP-04)
- 166: Text10: Sprint 2 · Adaptación propia y ensayos con datos simulados (EP-04)
- 168: Text10: Sprint 3 · Conector integrado, carga inicial y pruebas reales completadas (EP-04)
- 169: Text10: Sprint 3 · Conector integrado, carga inicial y pruebas reales completadas (EP-04)
- 172: Text10: Sprint 4 · Sincronización comprobada y carga productiva de 32 tiendas (EP-04)
- 173: Text10: Sprint 4 · Sincronización comprobada y carga productiva de 32 tiendas (EP-04)
- 175: Text10: Puesta en producción · ENT-03
- 176: Text10: Sprint 2 · Entorno de preproducción preparado (EP-06)
- 179: Text10: Sprint 2 · Entorno de preproducción preparado (EP-06)
- 181: Text10: Sprint 4 · Despliegue de la plataforma en tres tiendas piloto (EP-06)
- 182: Text10: Sprint 4 · Despliegue de la plataforma en tres tiendas piloto (EP-06)
- 186: Text10: Sprint 5 · Piloto operativo y supervisado: primer tramo (EP-06)
- 187: Text10: Sprint 5 · Piloto operativo y supervisado: primer tramo (EP-06)

| ID | WBS | Task | Type | Duration | Start | Finish | Predecessors | Complete | Remaining | Total slack | Free slack | Constraint | Resources | Work | Actual work | Cost | Actual cost | Text11 | Text20 | Text1 | Text3 |
| --- | --- | --- | --- | --- | --- | --- | --- | --- | --- | --- | --- | --- | --- | --- | --- | --- | --- | --- | --- | --- | --- |
| 190 | 1.4.4 | **Sprint 6 · 25/01–05/02/2027** |  | 10d | 2027-01-25 | 2027-02-05 |  |  |  | 4d |  |  |  | 54h |  | 1,946.7 |  | 1.4.4 | 1.4.4 |  |  |
| 191 | 1.4.4.1 | **Piloto operativo finalizado: segundo tramo (EP-06)** |  | 9d | 2027-01-25 | 2027-02-05 |  |  |  | 5d |  |  |  | 30h |  | 1,081.5 |  | 1.4.4.1 | 1.4.4.1 |  |  |
| 192 | 1.4.4.1.1 | Ejecución del segundo tramo del piloto operativo (EP-06) |  | 4d | 2027-01-25 | 2027-01-28 | 35, 188 |  |  | 5d | 0d |  | Desarrollador - 2027 | 24h |  | 865.2 |  | 1.4.4.1.1 | 1.4.4.1.1 | EP-06 |  |
| 193 | 1.4.4.1.2 | Segundo tramo del piloto operativo finalizado (EP-06) |  | 1d | 2027-01-29 | 2027-01-29 | 192 |  |  | 5d | 1d |  | Desarrollador - 2027 | 6h |  | 216.3 |  |  |  | EP-06 |  |
| 194 | 1.4.4.1.3 | ACE-PILOTO · Aceptación del piloto comercial (CA-03) | milestone | 0d | 2027-02-05 | 2027-02-05 |  |  |  | 5d |  | start no earlier than 2027-02-05 |  |  |  |  |  |  |  |  |  |
| 195 | 1.4.4.2 | **Despliegue en producción y apertura de las 32 tiendas (EP-06)** |  | 4d | 2027-02-02 | 2027-02-05 | 171, 135, 137, 153, 154, 159 |  |  | 4d |  |  |  | 24h |  | 865.2 |  | 1.4.4.2 | 1.4.4.2 |  |  |
| 196 | 1.4.4.2.1 | Despliegue en producción y apertura de las 32 tiendas (EP-06) |  | 3d | 2027-02-02 | 2027-02-04 | 193 |  |  | 4d | 0d |  | Desarrollador - 2027 | 18h |  | 648.9 |  | 1.4.4.2.1 | 1.4.4.2.1 | EP-06 |  |
| 197 | 1.4.4.2.2 | Despliegue en producción y apertura de las 32 tiendas completados (EP-06) |  | 1d | 2027-02-05 | 2027-02-05 | 196 |  |  | 4d |  |  | Desarrollador - 2027 | 6h |  | 216.3 |  |  |  | EP-06 |  |
| 198 | 1.5 | **Documentación y formación · ENT-04** |  | 25.5d | 2026-12-04 | 2027-01-22 |  |  |  | 14.5d |  |  |  | 35.25h |  | 7,369.05 |  | 1.5 | 1.5 |  |  |
| 199 | 1.5.1 | **Sprint 3 · Acceso Preproducción y Documentación técnica y funcional entregada a Formación (EP-07)** |  | 9d | 2026-12-07 | 2026-12-18 |  |  |  | 25.5d |  |  |  | 33h |  | 4,230 |  | 1.5.1 | 1.5.1 |  |  |
| 200 | 1.5.1.1 | Solicitud de las listas del personal a formar |  | 0.5d | 2026-12-07 | 2026-12-07 | 22 |  |  | 38d | 0d | start no earlier than 2026-12-04 | Jefe de proyecto - 2026 [25%] | 0.75h |  | 45 |  |  | 1.5.1.4 |  |  |
| 201 | 1.5.1.2 | Gestión de la Solicitud de formación TSL-2627-DF-OFE-01 |  | 0.5d | 2026-12-07 | 2026-12-07 | 200 |  |  | 38d | 0d |  | Jefe de proyecto - 2026 [25%] | 0.75h |  | 3,045 |  |  |  |  |  |
| 202 | 1.5.1.3 | Gestión de la Solicitud de las listas del personal a formar |  | 1d | 2026-12-09 | 2026-12-09 | 201 |  |  | 38d |  |  | Jefe de proyecto - 2026 [25%] | 1.5h |  | 90 |  |  | 1.5.1.5 |  |  |
| 203 | 1.5.1.4 | Sprint 3 · Documentación técnica y funcional entregada a Formación (EP-07) |  | 5d | 2026-12-07 | 2026-12-14 | 22 |  |  | 25.5d | 0d |  | Desarrollador - 2026 | 30h |  | 1,050 |  | 1.5.1.1 | 1.5.1.1 | EP-07 |  |
| 204 | 1.5.1.5 | Sprint 3 · Acceso a preproducción habilitado para Formación (EP-07) | milestone | 0d | 2026-12-14 | 2026-12-14 | 203, 22 |  |  | 25.5d | 0d |  |  |  |  |  |  | 1.5.2.1 | 1.5.1.2 | EP-07 |  |
| 205 | 1.5.1.6 | [Tarea Colchón] Reserva de cronograma sin Recursos - EP-07 |  | 4d | 2026-12-15 | 2026-12-18 | 204 |  |  | 31d |  |  |  |  |  |  |  |  |  |  | RES |
| 206 | 1.5.2 | **Sprint 5 · Formación (EP-07)** |  | 25.5d | 2026-12-04 | 2027-01-22 |  |  |  | 14.5d |  |  |  | 2.25h |  | 3,139.05 |  |  | 1.5.5 |  |  |
| 207 | 1.5.2.1 | Recepción de la lista del personal a formar | milestone | 0d | 2027-01-11 | 2027-01-11 | 31, 204 |  |  | 14.5d | 0d |  |  |  |  |  |  |  | 1.5.5.1 |  |  |
| 208 | 1.5.2.2 | Personal de las tiendas piloto puesto a disposición por TuSuper | milestone | 0d | 2027-01-11 | 2027-01-11 | 207 |  |  | 24d |  |  |  |  |  |  |  |  |  |  |  |
| 209 | 1.5.2.3 | Planificación y preparación de la formación del personal |  | 0.5d | 2027-01-11 | 2027-01-11 | 207, 224 |  |  | 14.5d | 0d |  | Jefe de proyecto - 2027 [25%] | 0.75h |  | 46.35 |  |  | 1.5.5.2 |  | DFI |
| 210 | 1.5.2.4 | Formación del personal realizada y completada |  | 1d | 2027-01-11 | 2027-01-12 | 209 |  |  | 14.5d | 0d |  | Jefe de proyecto - 2027 [25%] | 1.5h |  | 3,092.7 |  |  |  |  | FPI |
| 211 | 1.5.2.5 | [Tarea Colchón] Reserva de cronograma sin Recursos - EP-07 |  | 8d | 2027-01-12 | 2027-01-22 | 210 |  |  | 14.5d |  |  |  |  |  |  |  |  |  |  | RES |
| 212 | 1.5.2.6 | Solicitud de las listas del personal a formar | milestone | 0d | 2026-12-04 | 2026-12-04 |  |  |  | 40d |  | finish no earlier than 2026-12-04 |  |  |  |  |  |  |  |  |  |
| 213 | 1.6 | **Adquisiciones** |  | 24d | 2026-11-06 A | 2026-12-11 |  | 22% | 18.67d | 37d |  |  |  | 6.75h | 1.5h | 18,405 | 90 | 1.6 | 1.6 |  |  |
| 214 | 1.6.1 | **Contrato del conector con ERP: pedido, seguimiento y aceptación** |  | 22d | 2026-11-06 A | 2026-12-07 |  | 33% | 14.67d | 39d |  |  |  | 4.5h | 1.5h | 18,270 | 90 | 1.6.1 | 1.6.1 |  |  |
| 215 | 1.6.1.1 | Pedido del conector ERP | milestone | 0d | 2026-11-06 | 2026-11-06 | 10 |  |  | 59d | 0d |  |  |  |  |  |  |  | 1.6.1.6 |  |  |
| 216 | 1.6.1.2 | Tramitación del Pedido del conector ERP tramitado |  | 1d | 2026-11-06 | 2026-11-06 | 215 |  |  | 59d | 0d |  | Jefe de proyecto - 2026 [25%] | 1.5h |  | 90 |  | 1.6.1.1 | 1.6.1.1 |  | PED |
| 217 | 1.6.1.3 | Primer pago (40%) ERP | milestone | 0d | 2026-11-09 | 2026-11-09 | 216 |  |  | 59d | 0d | start no earlier than 2026-11-09 |  |  |  | 7,200 |  | 1.6.1.4 | 1.6.1.4 |  | CON |
| 218 | 1.6.1.4 | Seguimiento del proveedor del conector |  | 1d | 2026-11-09 | 2026-11-09 | 217 |  |  | 59d |  |  | Jefe de proyecto - 2026 [25%] | 1.5h |  | 90 |  | 1.6.1.2 | 1.6.1.2 |  | SEG |
| 219 | 1.6.1.5 | Conector recibido y aceptado formalmente |  | 1d | 2026-12-07 A | 2026-12-07 A | 218 | 100% |  |  |  |  | Jefe de proyecto - 2026 [25%] | 1.5h | 1.5h | 90 | 90 | 1.6.1.3 | 1.6.1.3 |  | ACO |
| 220 | 1.6.1.6 | Segundo pago (60%) con Retención 10% ERP | milestone | 0d | 2026-12-07 | 2026-12-07 | 219 |  |  | 39d |  | start no earlier than 2026-11-18 |  |  |  | 10,800 |  |  | 1.6.1.5 |  |  |

Notes:
- 190: Text10: Sprint 6 · 25/01–05/02/2027
- 191: Text10: Piloto operativo finalizado: segundo tramo (EP-06)
- 192: Text10: Piloto operativo finalizado: segundo tramo (EP-06)
- 195: Text10: Despliegue en producción y apertura de las 32 tiendas (EP-06)
- 196: Text10: Despliegue en producción y apertura de las 32 tiendas (EP-06)
- 198: Text10: Documentación y formación · ENT-04
- 199: Text10: Sprint 3 · Documentación técnica y funcional entregada a Formación (EP-07)
- 203: Text10: Sprint 3 · Documentación técnica y funcional entregada a Formación (EP-07)
- 204: Text10: Sprint 3 · Acceso a preproducción habilitado para Formación (EP-07)
- 213: Text10: Adquisiciones
- 214: Text10: Contrato del conector con ERP: pedido, seguimiento y aceptación
- 216: Text10: Pedido del conector ERP tramitado
- 217: Text10: Pago del control del conector HITO (TDB)
- 218: Text10: Seguimiento del proveedor del conector
- 219: Text10: Conector recibido y aceptado formalmente

| ID | WBS | Task | Type | Duration | Start | Finish | Predecessors | Total slack | Free slack | Constraint | Resources | Work | Cost | Text11 | Text20 | Text3 |
| --- | --- | --- | --- | --- | --- | --- | --- | --- | --- | --- | --- | --- | --- | --- | --- | --- |
| 221 | 1.6.2 | **Encargo de documentación de uso y formación: seguimiento y aceptación** |  | 24d | 2026-11-06 | 2026-12-11 |  | 37d |  |  |  | 2.25h | 135 | 1.6.2 | 1.6.2 |  |
| 222 | 1.6.2.1 | Encargo y elaboración de documentación |  | 0.5d | 2026-11-06 | 2026-11-06 | 10 | 51d | 0d |  | Jefe de proyecto - 2026 [25%] | 0.75h | 45 | 1.6.2.1 | 1.6.2.1 | EFO |
| 223 | 1.6.2.2 | Encargo de documentación | milestone | 0d | 2026-11-06 | 2026-11-06 | 222 | 51d | 23.5d | start no earlier than 2026-11-06 |  |  |  |  | 1.6.2.3 |  |
| 224 | 1.6.2.3 | Documentación entregada y acceso a preproducción habilitado para Formación | milestone | 0d | 2026-12-11 | 2026-12-11 | 223 | 27.5d | 13d | start no earlier than 2026-12-11 |  |  |  | 1.6.2.2 | 1.6.2.2 | DFO |
| 225 | 1.6.2.4 | Realización de la formación |  | 1d | 2026-11-06 | 2026-11-09 | 222 | 59.5d |  |  | Jefe de proyecto - 2026 [25%] | 1.5h | 90 |  |  | EFO |

Notes:
- 221: Text10: Encargo de documentación de uso y formación: seguimiento y aceptación
- 222: Text10: Encargo de documentación y formación realizado
- 224: Text10: Documentación entregada y acceso a preproducción habilitado para Formación
