ID,Unique_ID,WBS,Task_Name,Duration,Start_Date,Free_Slack,Total_Slack,Milestone,Summary,Text1,Text2,Text3
4,350,1.1.1.1,Comienzo del Proyecto,0 days,Mon 05/10/26,0 days,14 days,No,No,,,
5,173,1.1.1.2,"Elaboración del Plan de Dirección del Proyecto, Alcance, EDT y Cronograma",5 days,Mon 05/10/26,0 days,14 days,No,No,,,APR; SOL
6,174,1.1.1.3,Tramitación y negociación de la aceptación del calendario y alcance por el cliente,5 days,Tue 13/10/26,13 days,14 days,No,No,,,ACE-LB
10,175,1.1.2.2,Dirección del Sprint 1,2 days,Mon 09/11/26,0 days,0 days,No,No,,,SPR; ISV
11,454,1.1.2.3,Seguimiento del Sprint 1,8 days,Wed 11/11/26,0 days,0 days,No,No,,,SPR; ISV
14,176,1.1.3.2,Dirección del Sprint 2,2 days,Mon 23/11/26,0 days,0 days,No,No,,,SPR; ISV
15,455,1.1.3.3,Seguimiento del Sprint 2,8 days,Wed 25/11/26,0 days,0 days,No,No,,,SPR; ISV
18,177,1.1.4.2,Dirección del Sprint 3,2 days,Mon 07/12/26,0 days,0 days,No,No,,,SPR; ISV
19,456,1.1.4.3,Seguimiento del Sprint 3,7 days,Thu 10/12/26,0 days,0 days,No,No,,,SPR; ISV
22,178,1.1.5.2,Dirección del Sprint 4,2 days,Mon 21/12/26,0 days,0 days,No,No,,,SPR; ISV
23,457,1.1.5.3,Seguimiento del Sprint 4,5 days,Wed 23/12/26,0 days,0 days,No,No,,,SPR; ISV
26,179,1.1.6.2,Dirección del Sprint 5,2 days,Mon 11/01/27,0 days,1 day,No,No,,,SPR; ISV
27,458,1.1.6.3,Seguimiento del Sprint 5,8 days,Wed 13/01/27,0 days,1 day,No,No,,,SPR; ISV
30,180,1.1.7.2,Dirección del Sprint 6,2 days,Mon 25/01/27,0 days,1 day,No,No,,,SPR; ISV
31,459,1.1.7.3,Seguimiento del Sprint 6,8 days,Wed 27/01/27,0 days,1 day,No,No,,,SPR; ISV
33,183,1.1.8.1,Preparación y coordinación del traspaso al servicio de mantenimiento.,0.8 days,Mon 08/02/27,0 days,1 day,No,No,,,
34,461,1.1.8.2,Entrega y traspaso al servicio de mantenimiento completado.,0.2 days,Mon 08/02/27,0 days,1 day,No,No,,,
36,184,1.1.9.1,Elaboración del Informe de Cierre y Lecciones Aprendidas,1 day,Tue 09/02/27,0 days,1 day,No,No,,,CPR
37,353,1.1.9.2,Cierre del proyecto aprobado y completado,1 day,Wed 10/02/27,1 day,1 day,No,No,,,CPR
42,398,1.2.1.2,Tramitación del Pedido del conector ERP tramitado,1 day,Fri 06/11/26,0 days,20.75 days,No,No,,,PED
44,399,1.2.1.4,Seguimiento del proveedor del conector,1 day?,Mon 09/11/26,0 days?,20.75 days?,No,No,,,SEG
45,400,1.2.1.5,Conector recibido y aceptado formalmente,1 day,Tue 10/11/26,5 days,20.75 days,No,No,,,ACO
48,402,1.2.2.1,Encargo y elaboración de documentación,0.2 days,Fri 06/11/26,0 days,59.8 days,No,No,,,EFO
51,464,1.2.2.4,Realización de la formación,0.8 days,Fri 06/11/26,60 days,60 days,No,No,,,EFO
55,417,1.3.1.2,Gestión Solcitud de Acceso a los datos del ERP,1 day,Mon 09/11/26,0 days,14.75 days,No,No,,,
56,381,1.3.1.3,Sprint 1 · Especificación de interfaz ERP acordada (EP-04),2 days,Tue 10/11/26,7 days,14.75 days,No,No,EP-04,,
58,382,1.3.2.1,Sprint 2 · Adaptación propia (EP-04),4 days,Mon 23/11/26,0 days,7.75 days,No,No,EP-04,C,
59,465,1.3.2.2,Sprint 2 · Ensayos con datos simulados (EP-04),1 day,Fri 27/11/26,5 days,7.75 days,No,No,EP-04,C,
61,383,1.3.3.1,"Sprint 3 · Conector integrado, carga inicial y pruebas reales completadas (EP-04)",5 days,Mon 07/12/26,0 days,2.75 days,No,No,EP-04,C,
62,439,1.3.3.2," Catálogo, precios y existencias del ERP, cargados y existencias del ERP, cargados y sincronizados (EP-04), con el conector y ERP funcionando",5 days,Tue 15/12/26,0 days,5.75 days,No,No,EP-04,C,
65,385,1.3.4.1,Sprint 4 · Sincronización comprobada (EP-04),2 days,Tue 22/12/26,0 days,24 days,No,No,EP-04,V,
66,466,1.3.4.2,Sprint 4 · Carga productiva de 32 tiendas (EP-04),4 days,Mon 04/01/27,24 days,24 days,No,No,EP-04,V,
72,415,1.4.1.1.3,"Gestión de la Solicitud de Franjas de Entrega, zonas de reparto y repartidores y acceso a Datos ERP",0.5 days,Mon 09/11/26,0 days,20.75 days,No,No,EP-03,E,
74,430,1.4.1.1.5,Gestión de la Solicitud de contrato a Jurídico sobre Taracera como encargada de procesamiento de datos de TuSuper,1 day,Fri 06/11/26,23 days,23 days,No,No,,,
76,356,1.4.1.1.7,Especificación funcional común y criterios de aceptación acordados (EP-01),3 days,Mon 09/11/26,0 days,20 days,No,No,EP-01,E,
78,357,1.4.1.2.1,Sistema de diseño (EP-02),2 days,Thu 12/11/26,0 days,42 days,No,No,EP-02,E,
79,467,1.4.1.2.2,Interfaz común preparada (EP-02),1 day,Mon 16/11/26,0 days,42 days,No,No,EP-02,E,
81,358,1.4.1.3.1,Definición y planificación de la arquitectura técnica de la plataforma (EP-03).,1 day,Tue 17/11/26,0 days,42 days,No,No,EP-03,E,
82,468,1.4.1.3.2,Diseño y documentación de la arquitectura técnica de la plataforma completados (EP-03).,1 day,Wed 18/11/26,42 days,42 days,No,No,EP-03,E,
85,359,1.4.2.1.1,RF-01 especificado,2.75 days,Thu 12/11/26,0 days,33.5 days,No,No,RF-01,E,
86,471,1.4.2.1.2,RF-01 diseñado,1 day?,Mon 16/11/26,3.25 days?,33.5 days?,No,No,RF-01,E,
87,470,1.4.2.1.3,RF-03 especificado,1 day?,Thu 12/11/26,0 days?,44.25 days?,No,No,RF-03,E,
88,469,1.4.2.1.4,RF-03 diseñado,1 day?,Fri 13/11/26,5 days?,44.25 days?,No,No,RF-03,E,
91,360,1.4.2.2.2,RF-06 especificado,3.75 days,Thu 12/11/26,0 days,20 days,No,No,RF-06,E,
92,472,1.4.2.2.3,RF-06 diseñado,1 day?,Tue 17/11/26,17.25 days?,20 days?,No,No,RF-06,E,
94,361,1.4.2.3.1,Entornos de desarrollo operativos (EP-03),5 days,Thu 19/11/26,0 days,42 days,No,No,EP-03,C,
95,473,1.4.2.3.2,CI/CD operativos (EP-03),5 days,Thu 26/11/26,42 days,42 days,No,No,EP-03,C,
98,362,1.4.3.1.1,RF-01 construido,10 days,Mon 23/11/26,0 days,30.25 days,No,No,RF-01,C,
99,476,1.4.3.1.2,RF-01 integrado,1 day?,Mon 07/12/26,0 days?,30.25 days?,No,No,RF-01,C,
100,475,1.4.3.1.3,RF-03 construido,1 day?,Mon 23/11/26,0 days?,39.25 days?,No,No,RF-03,C,
101,474,1.4.3.1.4,RF-03 integrado,1 day?,Tue 24/11/26,9 days?,39.25 days?,No,No,RF-03,C,
103,363,1.4.3.2.1,RF-02 especificado,3.66 days,Mon 23/11/26,0 days,22.51 days,No,No,RF-02,E,
104,479,1.4.3.2.2,RF-02 diseñado,1 day?,Thu 26/11/26,14.34 days?,22.51 days?,No,No,RF-02,E,
105,478,1.4.3.2.3,RF-04 especificado,1 day?,Mon 23/11/26,0 days?,31.25 days?,No,No,RF-04,E,
106,477,1.4.3.2.4,RF-04 diseñado,1 day?,Tue 24/11/26,8 days?,31.25 days?,No,No,RF-04,E,
108,364,1.4.3.3.1,RF-06 construido,9.75 days,Tue 15/12/26,0 days,2.75 days,No,No,RF-06,C,
109,480,1.4.3.3.2,RF-06 integrado,1 day?,Thu 07/01/27,0 days?,2.75 days?,No,No,RF-06,C,
112,414,1.4.3.4.2,RF-05 especificado,3.75 days,Mon 23/11/26,0 days,11.25 days,No,No,RF-05,E,
114,482,1.4.3.4.4,RF-07 especificado,1.5 days,Mon 23/11/26,0 days,12.5 days,No,No,RF-07,E,
115,481,1.4.3.4.5,RF-07 diseñado,1 day?,Tue 24/11/26,7.5 days?,12.5 days?,No,No,RF-07,E,
118,366,1.4.4.1.1,Ejecución de las pruebas de verificación del requisito funcional RF-01,3.25 days,Wed 09/12/26,0 days,30.25 days,No,No,RF-01,V,
119,483,1.4.4.1.2,Verificación del requisito funcional RF-01 completada (V),1 day?,Mon 14/12/26,0 days?,30.25 days?,No,No,RF-01,V,
122,367,1.4.4.2.1,RF-04 construido,8.25 days,Mon 07/12/26,0 days,23.25 days,No,No,RF-04,C,
123,484,1.4.4.2.2,RF-04 integrado,1 day?,Fri 18/12/26,0 days?,23.25 days?,No,No,RF-04,C,
125,409,1.4.4.2.4,Solicitud de auditoria a TuSuper,1 day,Mon 21/12/26,29.75 days,29.75 days,No,No,,,
127,368,1.4.4.3.1,RF-05 construido,9.75 days,Mon 07/12/26,0 days,5 days,No,No,RF-05,C,
128,485,1.4.4.3.2,RF-05 integrado,1 day?,Mon 21/12/26,0 days?,5 days?,No,No,RF-05,C,
130,369,1.4.4.4.1,RF-08 especificado,3.75 days,Mon 07/12/26,0 days,26.25 days,No,No,RF-08,E,
131,486,1.4.4.4.2,RF-08 diseñado,1 day?,Fri 11/12/26,12 days?,26.25 days?,No,No,RF-08,E,
134,370,1.4.4.5.2,Plan de pruebas de sistema preparados (EP-05),6 days,Mon 07/12/26,0 days,9 days,No,No,EP-05,E,
135,487,1.4.4.5.3,Escenarios de pruebas de sistema preparados (EP-05),1 day?,Wed 16/12/26,9 days?,9 days?,No,No,EP-05,E,
138,371,1.4.5.1.1,RF-03 verificado (V),2.25 days,Mon 21/12/26,0 days,26.5 days,No,No,RF-03,V,
139,437,1.4.5.1.2,RF-03.4 Persistencia Sesión verificada (V),2.25 days,Wed 23/12/26,26.5 days,26.5 days,No,No,RF-03,V,
141,372,1.4.5.2.1,RF-02 construido,10 days,Mon 21/12/26,0 days,8.17 days,No,No,RF-02,C,
142,488,1.4.5.2.2,RF-02 integrado,1 day?,Thu 14/01/27,0 days?,8.17 days?,No,No,RF-02,C,
144,373,1.4.5.3.1,RF-05 verificado,3.75 days,Tue 22/12/26,2.25 days,5 days,No,No,RF-05,V,
145,489,1.4.5.3.2,RF-06 verificado,1 day?,Fri 08/01/27,0 days?,2.75 days?,No,No,RF-06,V,
148,410,1.4.6.1.1,RF-02 verificado,5.83 days,Mon 25/01/27,0 days,2.17 days,No,No,RF-02,V,
151,374,1.4.6.1.4,RF-04 verificado,1.5 days,Fri 15/01/27,12.5 days,12.5 days,No,No,RF-04,V,
153,375,1.4.6.2.1,RF-07 construido,9.75 days,Mon 11/01/27,0 days,2.75 days,No,No,RF-07,C,
154,492,1.4.6.2.2,RF-07 integrado,1 day?,Mon 25/01/27,0 days?,2.75 days?,No,No,RF-07,C,
155,491,1.4.6.2.3,RF-08 construido,1 day?,Mon 11/01/27,0 days?,14.25 days?,No,No,RF-08,C,
156,490,1.4.6.2.4,RF-08 integrado,1 day?,Tue 12/01/27,7.25 days?,14.25 days?,No,No,RF-08,C,
158,376,1.4.6.3.1,Pruebas de sistema ejecutadas (EP-05),3 days,Mon 11/01/27,0 days,0 days,No,No,EP-05,V,
159,493,1.4.6.3.2,Pruebas de carga y seguridad ejecutadas (EP-05),3 days,Thu 14/01/27,0 days,0 days,No,No,EP-05,V,
161,377,1.4.6.4.1,Realización del seguimiento técnico del piloto durante el primer tramo (EP-05),5 days,Tue 19/01/27,0 days,0 days,No,No,EP-05,V,
162,494,1.4.6.4.2,Primer tramo del seguimiento técnico del piloto completado (EP-05),1 day,Tue 26/01/27,0 days,0 days,No,No,EP-05,V,
165,378,1.4.7.1.1,RF-07 verificado,3.75 days,Tue 26/01/27,2.75 days,2.75 days,No,No,RF-07,V,
166,495,1.4.7.1.2,RF-08 verificado,1 day?,Mon 25/01/27,7 days?,7 days?,No,No,RF-08,V,
168,379,1.4.7.2.1,Seguimiento técnico del piloto (EP-05),5 days,Wed 27/01/27,0 days,0 days,No,No,EP-05,V,
169,496,1.4.7.2.2,Evidencias finales del piloto completadas (EP-05),1 day,Wed 03/02/27,0 days,0 days,No,No,EP-05,V,
173,427,1.5.1.2,Gestión de la Solicitud de las listas del personal a formar,1 day,Fri 04/12/26,40 days,40 days,No,No,,,
174,396,1.5.1.3,Sprint 3 · Documentación técnica y funcional entregada a Formación (EP-07),5 days,Mon 07/12/26,0 days,35 days,No,No,EP-07,,
179,425,1.5.2.3,Planificación y preparación de la formación del personal,0.5 days,Mon 11/01/27,0 days,23 days,No,No,,,DFI
180,497,1.5.2.4,Formación del personal realizada y completada,0.5 days,Mon 11/01/27,23 days,23 days,No,No,,,DFI
184,419,1.6.1.2,Gestión de la Solicitud de cuentas de desarrollo,1 day,Fri 04/12/26,40 days,40 days,No,No,,,
185,386,1.6.1.3,Sprint 2 · Entorno de preproducción preparado (EP-06),5 days,Mon 23/11/26,4 days,28 days,No,No,EP-06,,
189,392,1.6.2.2,Sprint 4 · Preparación y planificación del despliegue de la plataforma en las tres tiendas piloto (EP-06),2 days,Mon 21/12/26,0 days,14 days,No,No,EP-06,,
191,498,1.6.2.4,Sprint 4 · Despliegue de la plataforma en las tres tiendas piloto completado (EP-06),3 days,Wed 23/12/26,2 days,14 days,No,No,EP-06,,
194,393,1.6.3.2,Sprint 5 · Piloto operativo primer tramo (EP-06),0.5 days,Mon 11/01/27,0 days,12 days,No,No,EP-06,,
195,499,1.6.3.3,Sprint 5 · Piloto supervisado: primer tramo (EP-06),0.5 days,Mon 11/01/27,9 days,12 days,No,No,EP-06,,
198,394,1.6.4.1.1,Ejecución del segundo tramo del piloto operativo (EP-06),4 days,Mon 25/01/27,0 days,3 days,No,No,EP-06,,
199,500,1.6.4.1.2,Segundo tramo del piloto operativo finalizado (EP-06),1 day,Fri 29/01/27,3 days,3 days,No,No,EP-06,,
201,395,1.6.4.2.1,Despliegue en producción y apertura de las 32 tiendas (EP-06),5 days,Thu 04/02/27,0 days,0 days,No,No,EP-06,,
202,502,1.6.4.2.2,Despliegue en producción y apertura de las 32 tiendas completados (EP-06),1 day,Thu 11/02/27,0 days,0 days,No,No,EP-06,,
